# Yanbal PhoneGap - Web

Schedule from MS Project, 2015-04-14 to 2015-07-21, status date 2008-01-09, costs in $, A marks actual dates.
Avantica Technologies

## Calendars

- Standard: Mon-Fri 08:00-12:00, 13:00-17:00; Sat-Sun off. Exceptions (off unless hours are given): 2015-05-01 (Dia del Trabajo), 2015-06-29 (Día de San Pedro y San Pablo).

## Resources

| Resource | Rate |
| --- | --- |
| QAII - 1 | 1 |
| QAI - 1 | 1 |
| PM | 1 |
| UX | 1 |
| SEII - Mobile | 1 |
| Cliente | 1 |
| SEII - Web | 1 |
| QAI - 2 | 1 |
| QAI - 3 | 1 |
| QAI- 4 | 1 |
| QAI - 5 | 1 |
| QAI - 6 | 1 |

## Schedule

| ID | WBS | Task | Duration | Start | Finish | Predecessors | Complete | Remaining | Baseline start | Baseline finish | Baseline duration | Total slack | Free slack | Resources | Work | Actual work | Cost | Baseline cost | Actual cost |
| --- | --- | --- | --- | --- | --- | --- | --- | --- | --- | --- | --- | --- | --- | --- | --- | --- | --- | --- | --- |
| 1 | 1 | Gestión del Proyecto | 69d | 2015-04-14 A | 2015-07-21 |  | 4% | 66d | 2015-04-14 | 2015-07-21 | 69d | 0d |  | PM [25%] | 138h | 6h | 138 | 138 | 6 |
| 2 | 2 | Sesión de Inicio de Proyecto (KickOff) | 4h | 2015-04-14 A | 2015-04-14 A |  | 100% |  | 2015-04-14 | 2015-04-14 | 4h |  |  | SEII - Mobile; SEII - Web | 8h | 8h | 8 | 8 | 8 |
| 3 | 3 | **Análisis** | 6.75d | 2015-04-14 A | 2015-04-23 | 2 | 37% | 4.25d | 2015-04-14 | 2015-04-23 | 6.75d | 0.25d | 0d |  | 108h | 40h | 108 | 108 | 40 |
| 4 | 3.1 | Reuniones | 2d | 2015-04-14 A | 2015-04-16 |  | 75% | 0.5d | 2015-04-14 | 2015-04-16 | 2d | 1.38d | 0d | SEII - Mobile; SEII - Web | 32h | 24h | 32 | 32 | 24 |
| 5 | 3.2 | Especificación de requerimientos funcionales | 0.5d | 2015-04-16 A | 2015-04-16 | 4 | 50% | 0.25d | 2015-04-16 | 2015-04-16 | 0.5d | 1.12d | 0d | SEII - Mobile; SEII - Web | 8h | 4h | 8 | 8 | 4 |
| 6 | 3.3 | Creación de Wireframes | 2d | 2015-04-17 A | 2015-04-20 | 5 | 31% | 1.38d | 2015-04-17 | 2015-04-20 | 2d | 0.5d | 0d | SEII - Mobile; SEII - Web | 32h | 10h | 32 | 32 | 10 |
| 7 | 3.4 | Especificación de casos de uso | 2d | 2015-04-21 A | 2015-04-22 | 6 | 6% | 1.88d | 2015-04-21 | 2015-04-22 | 2d | 0.25d | 0d | SEII - Mobile; SEII - Web | 32h | 2h | 32 | 32 | 2 |
| 8 | 3.5 | Matriz de trazabilidad: requerimientos / casos de uso | 0.25d | 2015-04-23 | 2015-04-23 | 7 |  |  | 2015-04-23 | 2015-04-23 | 0.25d | 0.25d |  | SEII - Mobile; SEII - Web | 4h |  | 4 | 4 |  |
| 9 | 4 | **Diseño Técnico** | 8d | 2015-04-23 | 2015-05-06 | 3 |  |  | 2015-04-23 | 2015-05-06 | 8d | 0.25d | 0d |  | 128h |  | 128 | 128 |  |
| 10 | 4.1 | Reuniones | 1d | 2015-04-23 | 2015-04-24 |  |  |  | 2015-04-23 | 2015-04-24 | 1d | 0.25d | 0d | SEII - Mobile; SEII - Web | 16h |  | 16 | 16 |  |
| 11 | 4.2 | Definir estándares de desarrollo | 0.5d | 2015-04-24 | 2015-04-24 | 10 |  |  | 2015-04-24 | 2015-04-24 | 0.5d | 0.25d | 0d | SEII - Mobile; SEII - Web | 8h |  | 8 | 8 |  |
| 12 | 4.3 | Requerimientos no funcionales | 0.5d | 2015-04-24 | 2015-04-27 | 11 |  |  | 2015-04-24 | 2015-04-27 | 0.5d | 0.25d | 0d | SEII - Mobile; SEII - Web | 8h |  | 8 | 8 |  |
| 13 | 4.4 | Diagrama de Componentes | 0.25d | 2015-04-27 | 2015-04-27 | 12 |  |  | 2015-04-27 | 2015-04-27 | 0.25d | 0.25d | 0d | SEII - Mobile; SEII - Web | 4h |  | 4 | 4 |  |
| 14 | 4.5 | Diagrama de Paquetes | 0.5d | 2015-04-27 | 2015-04-27 | 13 |  |  | 2015-04-27 | 2015-04-27 | 0.5d | 0.25d | 0d | SEII - Mobile; SEII - Web | 8h |  | 8 | 8 |  |
| 15 | 4.6 | Diagrama de Despliegue | 0.25d | 2015-04-28 | 2015-04-28 | 14 |  |  | 2015-04-28 | 2015-04-28 | 0.25d | 0.25d | 0d | SEII - Mobile; SEII - Web | 4h |  | 4 | 4 |  |
| 16 | 4.7 | Diagrama de Clases | 2d | 2015-04-28 | 2015-04-30 | 15 |  |  | 2015-04-28 | 2015-04-30 | 2d | 0.25d | 0d | SEII - Mobile; SEII - Web | 32h |  | 32 | 32 |  |
| 17 | 4.8 | Diseño de base de datos | 1d | 2015-04-30 | 2015-05-04 | 16 |  |  | 2015-04-30 | 2015-05-04 | 1d | 0.25d | 0d | SEII - Mobile; SEII - Web | 16h |  | 16 | 16 |  |
| 18 | 4.9 | Catalogo de servicios web a crear / consumir | 2d | 2015-05-04 | 2015-05-06 | 17 |  |  | 2015-05-04 | 2015-05-06 | 2d | 0.25d |  | SEII - Mobile; SEII - Web | 32h |  | 32 | 32 |  |
| 19 | 5 | **Diseño Gráfico** | 18.25d | 2015-04-21 | 2015-05-18 | 6 |  |  | 2015-04-21 | 2015-05-18 | 18.25d | 18.75d |  |  | 146h |  | 146 | 146 |  |
| 20 | 5.1 | **Preparación de propuesta** | 7.25d | 2015-04-21 | 2015-04-30 |  |  |  | 2015-04-21 | 2015-04-30 | 7.25d | 18.75d | 0d |  | 58h |  | 58 | 58 |  |
| 21 | 5.1.1 | Reuniones con el cliente (información inicial) | 0.75d | 2015-04-21 | 2015-04-21 |  |  |  | 2015-04-21 | 2015-04-21 | 0.75d | 18.75d | 0d | UX | 6h |  | 6 | 6 |  |
| 22 | 5.1.2 | Elaboración de propuesta grafica (2 Pág. Maestras) Móvil | 2.5d | 2015-04-21 | 2015-04-24 | 21 |  |  | 2015-04-21 | 2015-04-24 | 2.5d | 18.75d | 0d | UX | 20h |  | 20 | 20 |  |
| 23 | 5.1.3 | Elaboración de propuesta grafica (2 Pág. Maestras) Web | 2.25d | 2015-04-24 | 2015-04-28 | 22 |  |  | 2015-04-24 | 2015-04-28 | 2.25d | 18.75d | 0d | UX | 18h |  | 18 | 18 |  |
| 24 | 5.1.4 | Elaboración de assets y cortes de imágenes | 1.75d | 2015-04-28 | 2015-04-30 | 23 |  |  | 2015-04-28 | 2015-04-30 | 1.75d | 18.75d |  | UX | 14h |  | 14 | 14 |  |

| ID | WBS | Task | Duration | Start | Finish | Predecessors | Baseline start | Baseline finish | Baseline duration | Total slack | Free slack | Resources | Work | Cost | Baseline cost |
| --- | --- | --- | --- | --- | --- | --- | --- | --- | --- | --- | --- | --- | --- | --- | --- |
| 25 | 5.2 | **Preparación de maquetas y assets** | 11d | 2015-04-30 | 2015-05-18 | 20 | 2015-04-30 | 2015-05-18 | 11d | 45.75d |  |  | 88h | 88 | 88 |
| 26 | 5.2.1 | **BackOffice Administrador (Web)** | 8d | 2015-04-30 | 2015-05-13 |  | 2015-04-30 | 2015-05-13 | 8d | 45.75d | 0d |  | 64h | 64 | 64 |
| 27 | 5.2.1.1 | UI Login | 1d | 2015-04-30 | 2015-05-04 |  | 2015-04-30 | 2015-05-04 | 1d | 45.75d | 0d | UX | 8h | 8 | 8 |
| 28 | 5.2.1.2 | UI - Mantenimiento de usuarios | 1d | 2015-05-04 | 2015-05-05 | 27 | 2015-05-04 | 2015-05-05 | 1d | 45.75d | 0d | UX | 8h | 8 | 8 |
| 29 | 5.2.1.3 | UI - Mantenimiento de roles | 1d | 2015-05-05 | 2015-05-06 | 28 | 2015-05-05 | 2015-05-06 | 1d | 45.75d | 0d | UX | 8h | 8 | 8 |
| 30 | 5.2.1.4 | Crear grupos de usuarios | 1d | 2015-05-06 | 2015-05-07 | 29 | 2015-05-06 | 2015-05-07 | 1d | 45.75d | 0d | UX | 8h | 8 | 8 |
| 31 | 5.2.1.5 | Asociar grupos a perfiles | 1d | 2015-05-07 | 2015-05-08 | 30 | 2015-05-07 | 2015-05-08 | 1d | 45.75d | 0d | UX | 8h | 8 | 8 |
| 32 | 5.2.1.6 | Administración de Colecciones | 0.75d | 2015-05-08 | 2015-05-08 | 31 | 2015-05-08 | 2015-05-08 | 0.75d | 45.75d | 0d | UX | 6h | 6 | 6 |
| 33 | 5.2.1.7 | Administraciòn de documentos | 0.75d | 2015-05-11 | 2015-05-11 | 32 | 2015-05-11 | 2015-05-11 | 0.75d | 45.75d | 0d | UX | 6h | 6 | 6 |
| 34 | 5.2.1.8 | Administrar contenido por perfil | 0.75d | 2015-05-11 | 2015-05-12 | 33 | 2015-05-11 | 2015-05-12 | 0.75d | 45.75d | 0d | UX | 6h | 6 | 6 |
| 35 | 5.2.1.9 | Publicar contenido por perfil | 0.75d | 2015-05-12 | 2015-05-13 | 34 | 2015-05-12 | 2015-05-13 | 0.75d | 45.75d |  | UX | 6h | 6 | 6 |
| 36 | 5.2.2 | **Frontoffice (App Mobile)** | 3d | 2015-05-13 | 2015-05-18 | 26 | 2015-05-13 | 2015-05-18 | 3d | 45.75d |  |  | 24h | 24 | 24 |
| 37 | 5.2.2.1 | Login | 0.75d | 2015-05-13 | 2015-05-13 |  | 2015-05-13 | 2015-05-13 | 0.75d | 45.75d | 0d | UX | 6h | 6 | 6 |
| 38 | 5.2.2.2 | Lista contenido | 0.75d | 2015-05-14 | 2015-05-14 | 37 | 2015-05-14 | 2015-05-14 | 0.75d | 45.75d | 0d | UX | 6h | 6 | 6 |
| 39 | 5.2.2.3 | Ver agrupaciones | 0.75d | 2015-05-14 | 2015-05-15 | 38 | 2015-05-14 | 2015-05-15 | 0.75d | 45.75d | 0d | UX | 6h | 6 | 6 |
| 40 | 5.2.2.4 | Notificaciones | 0.75d | 2015-05-15 | 2015-05-18 | 39 | 2015-05-15 | 2015-05-18 | 0.75d | 45.75d |  | UX | 6h | 6 | 6 |
| 41 | 6 | **Desarrollo** | 40.5d? | 2015-05-06 | 2015-07-02 | 9 | 2015-05-06 | 2015-07-02 | 40.5d? | 0.25d |  |  | 548h | 548 | 548 |
| 42 | 6.1 | **Configuración del Ambiente de Trabajo** | 1.5d | 2015-05-06 | 2015-05-07 |  | 2015-05-06 | 2015-05-07 | 1.5d | 0.25d | 0d |  | 24h | 24 | 24 |
| 43 | 6.1.1 | Configurar ambientes de desarrollo (personal y virtual) | 1d | 2015-05-06 | 2015-05-07 |  | 2015-05-06 | 2015-05-07 | 1d | 0.25d | 0d | SEII - Web; SEII - Mobile | 16h | 16 | 16 |
| 44 | 6.1.2 | Configurar integración continua | 0.5d | 2015-05-07 | 2015-05-07 | 43 | 2015-05-07 | 2015-05-07 | 0.5d | 0.25d |  | SEII - Web; SEII - Mobile | 8h | 8 | 8 |
| 45 | 6.2 | **Web Services** | 24d? | 2015-05-07 | 2015-06-10 | 42 | 2015-05-07 | 2015-06-10 | 24d? | 0.25d | 0d |  | 192h | 192 | 192 |
| 46 | 6.2.1 | Reuniones | 2d? | 2015-05-07 | 2015-05-11 |  | 2015-05-07 | 2015-05-11 | 2d? | 0.25d | 0d | SEII - Web | 16h | 16 | 16 |
| 47 | 6.2.2 | Creación servicio web y estructura base | 2d | 2015-05-11 | 2015-05-13 | 46 | 2015-05-11 | 2015-05-13 | 2d | 0.25d | 0d | SEII - Web | 16h | 16 | 16 |
| 48 | 6.2.3 | Implementación log (bitácora) | 3d | 2015-05-13 | 2015-05-18 | 47 | 2015-05-13 | 2015-05-18 | 3d | 0.25d | 0d | SEII - Web | 24h | 24 | 24 |
| 49 | 6.2.4 | Implementación utilitarios base (parseo, conversión) | 2d | 2015-05-18 | 2015-05-20 | 48 | 2015-05-18 | 2015-05-20 | 2d | 0.25d | 0d | SEII - Web | 16h | 16 | 16 |
| 50 | 6.2.5 | Integración YANBAL - Active Directory | 2d? | 2015-05-20 | 2015-05-22 | 49 | 2015-05-20 | 2015-05-22 | 2d? | 0.25d | 0d | SEII - Web | 16h | 16 | 16 |
| 51 | 6.2.6 | Autenticacion / login | 1d | 2015-05-22 | 2015-05-25 | 50 | 2015-05-22 | 2015-05-25 | 1d | 0.25d | 0d | SEII - Web | 8h | 8 | 8 |
| 52 | 6.2.7 | Descargar contenido (PDF,Imagenes,Video,Audio) | 1d | 2015-05-25 | 2015-05-26 | 51 | 2015-05-25 | 2015-05-26 | 1d | 0.25d | 0d | SEII - Web | 8h | 8 | 8 |
| 53 | 6.2.8 | Listar documentos descargados | 0.75d | 2015-05-26 | 2015-05-27 | 52 | 2015-05-26 | 2015-05-27 | 0.75d | 0.25d | 0d | SEII - Web | 6h | 6 | 6 |
| 54 | 6.2.9 | Eliminar documentos | 0.75d | 2015-05-27 | 2015-05-28 | 53 | 2015-05-27 | 2015-05-28 | 0.75d | 0.25d | 0d | SEII - Web | 6h | 6 | 6 |
| 55 | 6.2.10 | Insertar Metricas Usabilidad | 2d | 2015-05-28 | 2015-06-01 | 54 | 2015-05-28 | 2015-06-01 | 2d | 0.25d | 0d | SEII - Web | 16h | 16 | 16 |
| 56 | 6.2.11 | CRUD Usuarios | 1d | 2015-06-01 | 2015-06-02 | 55 | 2015-06-01 | 2015-06-02 | 1d | 0.25d | 0d | SEII - Web | 8h | 8 | 8 |
| 57 | 6.2.12 | CRUD Roles | 1d | 2015-06-02 | 2015-06-03 | 56 | 2015-06-02 | 2015-06-03 | 1d | 0.25d | 0d | SEII - Web | 8h | 8 | 8 |
| 58 | 6.2.13 | CRUD agrupaciones | 1d | 2015-06-03 | 2015-06-04 | 57 | 2015-06-03 | 2015-06-04 | 1d | 0.25d | 0d | SEII - Web | 8h | 8 | 8 |
| 59 | 6.2.14 | CRUD Contenidos | 2d | 2015-06-04 | 2015-06-08 | 58 | 2015-06-04 | 2015-06-08 | 2d | 0.25d | 0d | SEII - Web | 16h | 16 | 16 |
| 60 | 6.2.15 | Administrar parametros | 0.5d | 2015-06-08 | 2015-06-08 | 59 | 2015-06-08 | 2015-06-08 | 0.5d | 0.25d | 0d | SEII - Web | 4h | 4 | 4 |
| 61 | 6.2.16 | Actualización de servicios | 1d? | 2015-06-08 | 2015-06-09 | 60 | 2015-06-08 | 2015-06-09 | 1d? | 0.25d | 0d | SEII - Web | 8h | 8 | 8 |
| 62 | 6.2.17 | Actualizar documentación de servicios | 1d? | 2015-06-09 | 2015-06-10 | 61 | 2015-06-09 | 2015-06-10 | 1d? | 0.25d |  | SEII - Web | 8h | 8 | 8 |

Notes:
- 36: Considerar cómo se va a ver en smartphones y tablets.

| ID | WBS | Task | Duration | Start | Finish | Predecessors | Baseline start | Baseline finish | Baseline duration | Total slack | Free slack | Resources | Work | Cost | Baseline cost |
| --- | --- | --- | --- | --- | --- | --- | --- | --- | --- | --- | --- | --- | --- | --- | --- |
| 63 | 6.3 | **HTML** | 4d? | 2015-05-07 | 2015-05-13 | 20, 42 | 2015-05-07 | 2015-05-13 | 4d? | 14.25d | 0d |  | 32h | 32 | 32 |
| 64 | 6.3.1 | Portal Web | 2d? | 2015-05-07 | 2015-05-11 |  | 2015-05-07 | 2015-05-11 | 2d? | 14.25d | 0d | SEII - Mobile | 16h | 16 | 16 |
| 65 | 6.3.2 | PhoneGap App | 2d? | 2015-05-11 | 2015-05-13 | 64 | 2015-05-11 | 2015-05-13 | 2d? | 14.25d |  | SEII - Mobile | 16h | 16 | 16 |
| 66 | 6.4 | **Portal Web** | 15d? | 2015-06-10 | 2015-07-02 | 45, 63 | 2015-06-10 | 2015-07-02 | 15d? | 0.25d | 0d |  | 120h | 120 | 120 |
| 67 | 6.4.1 | Aplicación y pruebas de estilo base | 1d | 2015-06-10 | 2015-06-11 |  | 2015-06-10 | 2015-06-11 | 1d | 0.25d | 0d | SEII - Web | 8h | 8 | 8 |
| 68 | 6.4.2 | UI Login | 0.5d | 2015-06-11 | 2015-06-12 | 67 | 2015-06-11 | 2015-06-12 | 0.5d | 0.25d | 0d | SEII - Web | 4h | 4 | 4 |
| 69 | 6.4.3 | UI - Mantenimiento de usuarios | 1d | 2015-06-12 | 2015-06-15 | 68 | 2015-06-12 | 2015-06-15 | 1d | 0.25d | 0d | SEII - Web | 8h | 8 | 8 |
| 70 | 6.4.4 | UI - Mantenimiento de roles | 1d | 2015-06-15 | 2015-06-16 | 69 | 2015-06-15 | 2015-06-16 | 1d | 0.25d | 0d | SEII - Web | 8h | 8 | 8 |
| 71 | 6.4.5 | Crear grupos de usuarios | 2d | 2015-06-16 | 2015-06-18 | 70 | 2015-06-16 | 2015-06-18 | 2d | 0.25d | 0d | SEII - Web | 16h | 16 | 16 |
| 72 | 6.4.6 | Asociar grupos a perfiles | 1d | 2015-06-18 | 2015-06-19 | 71 | 2015-06-18 | 2015-06-19 | 1d | 0.25d | 0d | SEII - Web | 8h | 8 | 8 |
| 73 | 6.4.7 | **Administración de Colecciones** | 2d | 2015-06-19 | 2015-06-23 | 72 | 2015-06-19 | 2015-06-23 | 2d | 0.25d |  |  | 16h | 16 | 16 |
| 74 | 6.4.7.1 | Crear colección | 0.5d | 2015-06-19 | 2015-06-19 |  | 2015-06-19 | 2015-06-19 | 0.5d | 0.25d | 0d | SEII - Web | 4h | 4 | 4 |
| 75 | 6.4.7.2 | Editar colección | 0.5d | 2015-06-19 | 2015-06-22 | 74 | 2015-06-19 | 2015-06-22 | 0.5d | 0.25d | 0d | SEII - Web | 4h | 4 | 4 |
| 76 | 6.4.7.3 | Eliminar colección | 0.5d | 2015-06-22 | 2015-06-22 | 75 | 2015-06-22 | 2015-06-22 | 0.5d | 0.25d | 0d | SEII - Web | 4h | 4 | 4 |
| 77 | 6.4.7.4 | Mover colección | 0.5d | 2015-06-22 | 2015-06-23 | 76 | 2015-06-22 | 2015-06-23 | 0.5d | 0.25d | 0d | SEII - Web | 4h | 4 | 4 |
| 78 | 6.4.8 | **Administraciòn de documentos** | 2.5d? | 2015-06-23 | 2015-06-25 | 77 | 2015-06-23 | 2015-06-25 | 2.5d? | 0.25d | 0d |  | 20h | 20 | 20 |
| 79 | 6.4.8.1 | Agrerar documento | 1d? | 2015-06-23 | 2015-06-24 |  | 2015-06-23 | 2015-06-24 | 1d? | 0.25d | 0d | SEII - Web | 8h | 8 | 8 |
| 80 | 6.4.8.2 | Editar atributos del documento | 0.5d? | 2015-06-24 | 2015-06-24 | 79 | 2015-06-24 | 2015-06-24 | 0.5d? | 0.25d | 0d | SEII - Web | 4h | 4 | 4 |
| 81 | 6.4.8.3 | Eliminar documento | 0.5d? | 2015-06-24 | 2015-06-25 | 80 | 2015-06-24 | 2015-06-25 | 0.5d? | 0.25d | 0d | SEII - Web | 4h | 4 | 4 |
| 82 | 6.4.8.4 | Mover documento | 0.5d? | 2015-06-25 | 2015-06-25 | 81 | 2015-06-25 | 2015-06-25 | 0.5d? | 0.25d |  | SEII - Web | 4h | 4 | 4 |
| 83 | 6.4.9 | **Perfiles** | 4d | 2015-06-25 | 2015-07-02 | 78 | 2015-06-25 | 2015-07-02 | 4d | 0.25d |  |  | 32h | 32 | 32 |
| 84 | 6.4.9.1 | Administrar contenido por perfil | 2d | 2015-06-25 | 2015-06-30 |  | 2015-06-25 | 2015-06-30 | 2d | 0.25d | 0d | SEII - Web | 16h | 16 | 16 |
| 85 | 6.4.9.2 | Publicar contenido por perfil | 2d | 2015-06-30 | 2015-07-02 | 84 | 2015-06-30 | 2015-07-02 | 2d | 0.25d |  | SEII - Web | 16h | 16 | 16 |
| 86 | 6.5 | **PhoneGap** | 21.5d? | 2015-05-13 | 2015-06-12 | 63 | 2015-05-13 | 2015-06-12 | 21.5d? | 14.25d | 0d |  | 172h | 172 | 172 |
| 87 | 6.5.1 | Listener para eventos Back | 0.5d? | 2015-05-13 | 2015-05-14 |  | 2015-05-13 | 2015-05-14 | 0.5d? | 14.25d | 0d | SEII - Mobile | 4h | 4 | 4 |

| ID | WBS | Task | Duration | Start | Finish | Predecessors | Baseline start | Baseline finish | Baseline duration | Total slack | Free slack | Resources | Work | Cost | Baseline cost |
| --- | --- | --- | --- | --- | --- | --- | --- | --- | --- | --- | --- | --- | --- | --- | --- |
| 88 | 6.5.2 | **Login** | 3.5d? | 2015-05-14 | 2015-05-19 | 87 | 2015-05-14 | 2015-05-19 | 3.5d? | 14.25d | 0d |  | 28h | 28 | 28 |
| 89 | 6.5.2.1 | UI | 0.75d? | 2015-05-14 | 2015-05-14 |  | 2015-05-14 | 2015-05-14 | 0.75d? | 14.25d | 0d | SEII - Mobile | 6h | 6 | 6 |
| 90 | 6.5.2.2 | Servicios | 0.75d? | 2015-05-15 | 2015-05-15 | 89 | 2015-05-15 | 2015-05-15 | 0.75d? | 14.25d | 0d | SEII - Mobile | 6h | 6 | 6 |
| 91 | 6.5.2.3 | Manejo de accesos y permisos | 2d? | 2015-05-15 | 2015-05-19 | 90 | 2015-05-15 | 2015-05-19 | 2d? | 14.25d |  | SEII - Mobile | 16h | 16 | 16 |
| 92 | 6.5.3 | **Documentos** | 6.25d? | 2015-05-19 | 2015-05-27 | 88 | 2015-05-19 | 2015-05-27 | 6.25d? | 14.25d | 0d |  | 50h | 50 | 50 |
| 93 | 6.5.3.1 | Visualizar lista de documentos | 0.75d? | 2015-05-19 | 2015-05-20 |  | 2015-05-19 | 2015-05-20 | 0.75d? | 14.25d | 0d | SEII - Mobile | 6h | 6 | 6 |
| 94 | 6.5.3.2 | Descargar documentos | 1.75d? | 2015-05-20 | 2015-05-22 | 93 | 2015-05-20 | 2015-05-22 | 1.75d? | 14.25d | 0d | SEII - Mobile | 14h | 14 | 14 |
| 95 | 6.5.3.3 | Llamada a visor - Android | 1d? | 2015-05-22 | 2015-05-25 | 94 | 2015-05-22 | 2015-05-25 | 1d? | 14.25d | 0d | SEII - Mobile | 8h | 8 | 8 |
| 96 | 6.5.3.4 | Visualizar documentos - iOS | 0.5d? | 2015-05-25 | 2015-05-25 | 95 | 2015-05-25 | 2015-05-25 | 0.5d? | 14.25d | 0d | SEII - Mobile | 4h | 4 | 4 |
| 97 | 6.5.3.5 | Visualizar documentos - Windows Phone | 0.5d? | 2015-05-25 | 2015-05-26 | 96 | 2015-05-25 | 2015-05-26 | 0.5d? | 14.25d | 0d | SEII - Mobile | 4h | 4 | 4 |
| 98 | 6.5.3.6 | Eliminar un documento | 0.75d? | 2015-05-26 | 2015-05-26 | 97 | 2015-05-26 | 2015-05-26 | 0.75d? | 14.25d | 0d | SEII - Mobile | 6h | 6 | 6 |
| 99 | 6.5.3.7 | Editar atributos | 1d? | 2015-05-27 | 2015-05-27 | 98 | 2015-05-27 | 2015-05-27 | 1d? | 14.25d |  | SEII - Mobile | 8h | 8 | 8 |
| 100 | 6.5.4 | **Agrupaciones** | 3d? | 2015-05-28 | 2015-06-01 | 92 | 2015-05-28 | 2015-06-01 | 3d? | 14.25d | 0d |  | 24h | 24 | 24 |
| 101 | 6.5.4.1 | Ver agrupaciones | 1.5d? | 2015-05-28 | 2015-05-29 |  | 2015-05-28 | 2015-05-29 | 1.5d? | 14.25d | 0d | SEII - Mobile | 12h | 12 | 12 |
| 102 | 6.5.4.2 | Servicios | 1.5d? | 2015-05-29 | 2015-06-01 | 101 | 2015-05-29 | 2015-06-01 | 1.5d? | 14.25d |  | SEII - Mobile | 12h | 12 | 12 |
| 103 | 6.5.5 | **Notificaciones** | 5.25d? | 2015-06-02 | 2015-06-09 | 100 | 2015-06-02 | 2015-06-09 | 5.25d? | 14.25d | 0d |  | 42h | 42 | 42 |
| 104 | 6.5.5.1 | Desplegar notificación genérica - Android | 1d? | 2015-06-02 | 2015-06-02 |  | 2015-06-02 | 2015-06-02 | 1d? | 14.25d | 0d | SEII - Mobile | 8h | 8 | 8 |
| 105 | 6.5.5.2 | Desplegar notificación genérica - iOS | 1d? | 2015-06-03 | 2015-06-03 | 104 | 2015-06-03 | 2015-06-03 | 1d? | 14.25d | 0d | SEII - Mobile | 8h | 8 | 8 |
| 106 | 6.5.5.3 | Desplegar notificación genérica - Windows Phone | 1d? | 2015-06-04 | 2015-06-04 | 105 | 2015-06-04 | 2015-06-04 | 1d? | 14.25d | 0d | SEII - Mobile | 8h | 8 | 8 |
| 107 | 6.5.5.4 | Desplegar notificación con redirección a documentos - Android | 0.75d? | 2015-06-05 | 2015-06-05 | 106 | 2015-06-05 | 2015-06-05 | 0.75d? | 14.25d | 0d | SEII - Mobile | 6h | 6 | 6 |
| 108 | 6.5.5.5 | Desplegar notificación con redirección a documentos - iOS | 0.75d? | 2015-06-05 | 2015-06-08 | 107 | 2015-06-05 | 2015-06-08 | 0.75d? | 14.25d | 0d | SEII - Mobile | 6h | 6 | 6 |
| 109 | 6.5.5.6 | Desplegar notificación con redirección a documentos - Windows Phone | 0.75d? | 2015-06-08 | 2015-06-09 | 108 | 2015-06-08 | 2015-06-09 | 0.75d? | 14.25d |  | SEII - Mobile | 6h | 6 | 6 |
| 110 | 6.5.6 | Integración con Google Analytics | 2d? | 2015-06-09 | 2015-06-11 | 103 | 2015-06-09 | 2015-06-11 | 2d? | 14.25d | 0d | SEII - Mobile | 16h | 16 | 16 |
| 111 | 6.5.7 | Sincronización a demanda del usuario | 1d? | 2015-06-11 | 2015-06-12 | 110 | 2015-06-11 | 2015-06-12 | 1d? | 14.25d |  | SEII - Mobile | 8h | 8 | 8 |

| ID | WBS | Task | Duration | Start | Finish | Predecessors | Baseline start | Baseline finish | Baseline duration | Total slack | Free slack | Resources | Work | Cost | Baseline cost |
| --- | --- | --- | --- | --- | --- | --- | --- | --- | --- | --- | --- | --- | --- | --- | --- |
| 112 | 6.6 | **Revisión de Pares PhoneGap** | 1d | 2015-06-12 | 2015-06-15 | 86 | 2015-06-12 | 2015-06-15 | 1d | 14.25d | 0d |  | 8h | 8 | 8 |
| 113 | 6.6.1 | Soporte Ejecución Revisión de Pares | 0.25d | 2015-06-12 | 2015-06-12 |  | 2015-06-12 | 2015-06-12 | 0.25d | 14.25d | 0d | SEII - Mobile | 2h | 2 | 2 |
| 114 | 6.6.2 | Correcciones Revisión de Pares | 0.75d | 2015-06-12 | 2015-06-15 | 113 | 2015-06-12 | 2015-06-15 | 0.75d | 14.25d |  | SEII - Mobile | 6h | 6 | 6 |
| 115 | 7 | **Aseguramiento de la Calidad** | 27d? | 2015-06-08 | 2015-07-16 | 3 | 2015-06-08 | 2015-07-16 | 27d? | 0.25d | 0d |  | 540h | 540 | 540 |
| 116 | 7.1 | Plan de Pruebas (Funcionales y Rendimiento) | 2d | 2015-06-08 | 2015-06-10 | 117SF | 2015-06-08 | 2015-06-10 | 2d | 25.25d |  | QAII - 1 | 16h | 16 | 16 |
| 117 | 7.2 | Configuración Ambientes de QA | 1d | 2015-06-10 | 2015-06-11 | 118SF | 2015-06-10 | 2015-06-11 | 1d | 24.25d | 0d | QAII - 1 | 8h | 8 | 8 |
| 118 | 7.3 | **PhoneGap** | 10d? | 2015-06-11 | 2015-06-25 |  | 2015-06-11 | 2015-06-25 | 10d? | 14.25d | 0d |  | 272h | 272 | 272 |
| 119 | 7.3.1 | Estimación y Creación de Casos de Prueba | 2d? | 2015-06-11 | 2015-06-15 | 120SF | 2015-06-11 | 2015-06-15 | 2d? | 22.25d |  | QAI - 2; QAII - 1 | 32h | 32 | 32 |
| 120 | 7.3.2 | **Ejecución en Tablet** | 7d? | 2015-06-15 | 2015-06-24 | 112 | 2015-06-15 | 2015-06-24 | 7d? | 15.25d | 0d |  | 112h | 112 | 112 |
| 121 | 7.3.2.1 | Ejecución en Samsung de 10.1" /SO Android 4.1.2 (Principal) | 3.25d? | 2015-06-15 | 2015-06-18 |  | 2015-06-15 | 2015-06-18 | 3.25d? | 15.25d | 0d | QAI - 2; QAI - 5 | 52h | 52 | 52 |
| 122 | 7.3.2.2 | Ejecución en Lenovo 7" / SO Android 4.2.2 (Secundario) | 0.94d? | 2015-06-18 | 2015-06-19 | 121 | 2015-06-18 | 2015-06-19 | 0.94d? | 15.25d | 0d | QAI - 2; QAI - 5 | 15h | 15 | 15 |
| 123 | 7.3.2.3 | Tablet AOC / SO: Android 4.1.1 (Secundario) | 0.94d? | 2015-06-19 | 2015-06-22 | 122 | 2015-06-19 | 2015-06-22 | 0.94d? | 15.25d | 0d | QAI - 2; QAI - 5 | 15h | 15 | 15 |
| 124 | 7.3.2.4 | Ejecución en Ipad SO 7 (Secundario) | 0.94d? | 2015-06-22 | 2015-06-23 | 123 | 2015-06-22 | 2015-06-23 | 0.94d? | 15.25d | 0d | QAI - 2; QAI - 5 | 15h | 15 | 15 |
| 125 | 7.3.2.5 | Ejecución en Ipad SO 8 (Secundario) | 0.94d? | 2015-06-23 | 2015-06-24 | 124 | 2015-06-23 | 2015-06-24 | 0.94d? | 15.25d |  | QAI - 2; QAI - 5 | 15h | 15 | 15 |
| 126 | 7.3.3 | **Ejecución en SmartPhone** | 8d? | 2015-06-15 | 2015-06-25 | 112 | 2015-06-15 | 2015-06-25 | 8d? | 14.25d |  |  | 128h | 128 | 128 |
| 127 | 7.3.3.1 | Nokia Lumia 520 / SO: Windows Phone 8.0 (Principal) | 3.31d? | 2015-06-15 | 2015-06-18 |  | 2015-06-15 | 2015-06-18 | 3.31d? | 14.25d | 0d | QAI - 3; QAI - 6 | 53h | 53 | 53 |
| 128 | 7.3.3.2 | Ejecución en Samsung Galaxy Chat/SO -SO Android 4.1.2 (secundario) | 0.94d? | 2015-06-18 | 2015-06-19 | 127 | 2015-06-18 | 2015-06-19 | 0.94d? | 14.25d | 0d | QAI - 3; QAI - 6 | 15h | 15 | 15 |
| 129 | 7.3.3.3 | Samsung Galaxy S III Mini / SO: Android 4.1.2 (Principal) | 0.94d? | 2015-06-19 | 2015-06-22 | 128 | 2015-06-19 | 2015-06-22 | 0.94d? | 14.25d | 0d | QAI - 3; QAI - 6 | 15h | 15 | 15 |
| 130 | 7.3.3.4 | Ejecución en Iphone 4 / iSO 7 (Principal) | 0.94d? | 2015-06-22 | 2015-06-23 | 129 | 2015-06-22 | 2015-06-23 | 0.94d? | 14.25d | 0d | QAI - 3; QAI - 6 | 15h | 15 | 15 |
| 131 | 7.3.3.5 | Ejecución en Iphone 5 / iSO 7 (Secundario) | 0.94d? | 2015-06-23 | 2015-06-24 | 130 | 2015-06-23 | 2015-06-24 | 0.94d? | 14.25d | 0d | QAI - 3; QAI - 6 | 15h | 15 | 15 |
| 132 | 7.3.3.6 | Ejecución en Iphone 6 / iSO 7 (Secundario) | 0.94d? | 2015-06-24 | 2015-06-25 | 131 | 2015-06-24 | 2015-06-25 | 0.94d? | 14.25d |  | QAI - 3; QAI - 6 | 15h | 15 | 15 |
| 133 | 7.4 | **Portal Web** | 7d? | 2015-06-30 | 2015-07-09 |  | 2015-06-30 | 2015-07-09 | 7d? | 0.25d | 0d |  | 112h | 112 | 112 |
| 134 | 7.4.1 | Estimación y Creación de Casos de Prueba | 2d | 2015-06-30 | 2015-07-02 | 135SF | 2015-06-30 | 2015-07-02 | 2d | 5.25d |  | QAI - 1; QAII - 1 | 32h | 32 | 32 |
| 135 | 7.4.2 | **Ejecución en Web Browser - IE9 (Principal)** | 3.75d? | 2015-07-02 | 2015-07-08 | 66 | 2015-07-02 | 2015-07-08 | 3.75d? | 0.25d | 0d |  | 60h | 60 | 60 |
| 136 | 7.4.2.1 | Ejecución de casos de prueba funcionales | 2.25d? | 2015-07-02 | 2015-07-06 |  | 2015-07-02 | 2015-07-06 | 2.25d? | 0.25d | 0d | QAI - 1; QAI- 4 | 36h | 36 | 36 |
| 137 | 7.4.2.2 | Reporte de errores | 0.5d? | 2015-07-07 | 2015-07-07 | 136 | 2015-07-07 | 2015-07-07 | 0.5d? | 0.25d | 0d | QAI - 1; QAI- 4 | 8h | 8 | 8 |
| 138 | 7.4.2.3 | Verificación de errores | 0.5d? | 2015-07-07 | 2015-07-07 | 137 | 2015-07-07 | 2015-07-07 | 0.5d? | 0.25d | 0d | QAI - 1; QAI- 4 | 8h | 8 | 8 |
| 139 | 7.4.2.4 | Pruebas exploratoria | 0.5d? | 2015-07-08 | 2015-07-08 | 138 | 2015-07-08 | 2015-07-08 | 0.5d? | 0.25d |  | QAI - 1; QAI- 4 | 8h | 8 | 8 |
| 140 | 7.4.3 | Ejecución en Web Browser - Chrome 40 (Secundario) | 1.25d? | 2015-07-08 | 2015-07-09 | 135 | 2015-07-08 | 2015-07-09 | 1.25d? | 0.25d |  | QAI - 1; QAI- 4 | 20h | 20 | 20 |

| ID | WBS | Task | Duration | Start | Finish | Predecessors | Baseline start | Baseline finish | Baseline duration | Total slack | Free slack | Resources | Work | Cost | Baseline cost |
| --- | --- | --- | --- | --- | --- | --- | --- | --- | --- | --- | --- | --- | --- | --- | --- |
| 141 | 7.5 | **Soporte a Pruebas Funcionales** | 17.5d | 2015-06-15 | 2015-07-09 |  | 2015-06-15 | 2015-07-09 | 17.5d | 4.25d | 0d |  | 60h | 60 | 60 |
| 142 | 7.5.1 | **PhoneGap** | 10d | 2015-06-15 | 2015-06-30 |  | 2015-06-15 | 2015-06-30 | 10d | 11.75d |  |  | 40h | 40 | 40 |
| 143 | 7.5.1.1 | Resolución Bugs | 10d | 2015-06-15 | 2015-06-30 | 120SS | 2015-06-15 | 2015-06-30 | 10d | 11.75d |  | SEII - Mobile [50%] | 40h | 40 | 40 |
| 144 | 7.5.2 | **Portal Web** | 5d | 2015-07-02 | 2015-07-09 |  | 2015-07-02 | 2015-07-09 | 5d | 4.25d |  |  | 20h | 20 | 20 |
| 145 | 7.5.2.1 | Resolución Bugs | 5d | 2015-07-02 | 2015-07-09 | 135SS | 2015-07-02 | 2015-07-09 | 5d | 4.25d |  | SEII - Web [50%] | 20h | 20 | 20 |
| 146 | 7.6 | **Pruebas de Rendimiento** | 9d? | 2015-07-03 | 2015-07-16 |  | 2015-07-03 | 2015-07-16 | 9d? | 0.25d |  |  | 72h | 72 | 72 |
| 147 | 7.6.1 | Creación de Scripts (Flujo: 6WS) | 4.5d? | 2015-07-03 | 2015-07-09 | 148SF | 2015-07-03 | 2015-07-09 | 4.5d? | 4.75d |  | QAII - 1 | 36h | 36 | 36 |
| 148 | 7.6.2 | **Ejecución de Pruebas** | 3d | 2015-07-09 | 2015-07-14 | 133 | 2015-07-09 | 2015-07-14 | 3d | 0.25d | 0d |  | 24h | 24 | 24 |
| 149 | 7.6.2.1 | Preparación del Ambiente | 1d | 2015-07-09 | 2015-07-10 |  | 2015-07-09 | 2015-07-10 | 1d | 0.25d | 0d | QAII - 1 | 8h | 8 | 8 |
| 150 | 7.6.2.2 | Prueba de Ambiente | 0.5d | 2015-07-10 | 2015-07-13 | 149 | 2015-07-10 | 2015-07-13 | 0.5d | 0.25d | 0d | QAII - 1 | 4h | 4 | 4 |
| 151 | 7.6.2.3 | Ejecución prueba de carga | 1.5d | 2015-07-13 | 2015-07-14 | 150 | 2015-07-13 | 2015-07-14 | 1.5d | 0.25d |  | QAII - 1 | 12h | 12 | 12 |
| 152 | 7.6.3 | **Documentación** | 1.5d | 2015-07-14 | 2015-07-16 | 148 | 2015-07-14 | 2015-07-16 | 1.5d | 0.25d |  |  | 12h | 12 | 12 |
| 153 | 7.6.3.1 | Parsing Logs | 0.5d | 2015-07-14 | 2015-07-15 |  | 2015-07-14 | 2015-07-15 | 0.5d | 0.25d | 0d | QAII - 1 | 4h | 4 | 4 |
| 154 | 7.6.3.2 | Análisis y Notas Iniciales | 0.5d | 2015-07-15 | 2015-07-15 | 153 | 2015-07-15 | 2015-07-15 | 0.5d | 0.25d | 0d | QAII - 1 | 4h | 4 | 4 |
| 155 | 7.6.3.3 | Creación de documento de resultados | 0.5d | 2015-07-15 | 2015-07-16 | 154 | 2015-07-15 | 2015-07-16 | 0.5d | 0.25d |  | QAII - 1 | 4h | 4 | 4 |
| 156 | 8 | **Documentación** | 4d | 2015-07-09 | 2015-07-15 | 141 | 2015-07-09 | 2015-07-15 | 4d | 4.25d |  |  | 32h | 32 | 32 |
| 157 | 8.1 | Manual de instalación | 2d | 2015-07-09 | 2015-07-13 |  | 2015-07-09 | 2015-07-13 | 2d | 4.25d | 0d | SEII - Web [50%]; SEII - Mobile [50%] | 16h | 16 | 16 |
| 158 | 8.2 | Manual de usuario | 2d | 2015-07-13 | 2015-07-15 | 157 | 2015-07-13 | 2015-07-15 | 2d | 4.25d |  | SEII - Web [50%]; SEII - Mobile [50%] | 16h | 16 | 16 |
| 159 | 9 | **Generación de Binarios** | 0.5d | 2015-07-16 | 2015-07-16 | 115 | 2015-07-16 | 2015-07-16 | 0.5d | 0.25d | 0d |  | 6h | 6 | 6 |
| 160 | 9.1 | Portal Web / Web Services | 0.25d | 2015-07-16 | 2015-07-16 |  | 2015-07-16 | 2015-07-16 | 0.25d | 0.5d |  | SEII - Web | 2h | 2 | 2 |
| 161 | 9.2 | Aplicaciones Moviles (iOS, Android, Windows Phone) | 0.5d | 2015-07-16 | 2015-07-16 |  | 2015-07-16 | 2015-07-16 | 0.5d | 0.25d |  | SEII - Mobile | 4h | 4 | 4 |
| 162 | 10 | **Despliegue** | 3d | 2015-07-16 | 2015-07-21 | 159 | 2015-07-16 | 2015-07-21 | 3d | 0.25d |  |  | 24h | 24 | 24 |
| 163 | 10.1 | Publicacion / Ejecución despliegue en Ambiente UAT YANBAL | 2d | 2015-07-16 | 2015-07-20 |  | 2015-07-16 | 2015-07-20 | 2d | 0.25d | 0d | SEII - Web | 16h | 16 | 16 |
| 164 | 10.2 | Publicación / Ejecución despliegue en Ambiente Producción YANBAL | 1d | 2015-07-20 | 2015-07-21 | 163 | 2015-07-20 | 2015-07-21 | 1d | 0.25d |  | SEII - Web | 8h | 8 | 8 |
