# Yanbal PhoneGap - Web

Schedule from MS Project, 2015-04-14 to 2015-07-24, status date 2008-01-09, costs in $, A marks actual dates.
Avantica Technologies

## Calendars

- Standard: Mon-Fri 08:00-12:00, 13:00-17:00; Sat-Sun off. Exceptions (off unless hours are given): 2015-05-01 (Dia del Trabajo), 2015-06-29 (Día de San Pedro y San Pablo).

## Resources

| Resource | Rate |
| --- | --- |
| QAII | 1 |
| PM | 1 |
| UX | 1 |
| SEII - Mobile | 1 |
| SEII - Web | 1 |
| QAI - 1 | 1 |
| QAI - 2 | 1 |
| QAI - 3 | 1 |
| QAI - 4 | 1 |
| Yanbal | 1 |

## Schedule

| ID | WBS | Task | Type | Duration | Start | Finish | Predecessors | Complete | Remaining | Baseline start | Baseline finish | Baseline duration | Total slack | Free slack | Constraint | Resources | Work | Actual work | Cost | Baseline cost | Actual cost |
| --- | --- | --- | --- | --- | --- | --- | --- | --- | --- | --- | --- | --- | --- | --- | --- | --- | --- | --- | --- | --- | --- |
| 1 | 1 | Gestión del Proyecto |  | 69d | 2015-04-14 A | 2015-07-21 |  | 12% | 61d | 2015-04-14 | 2015-07-21 | 69d | 0.25d |  |  | PM [25%] | 138h | 16h | 138 | 138 | 16 |
| 2 | 2 | Sesión de Inicio de Proyecto (KickOff) |  | 4h | 2015-04-14 A | 2015-04-14 A |  | 100% |  | 2015-04-14 | 2015-04-14 | 4h |  |  |  | SEII - Mobile; SEII - Web | 8h | 8h | 8 | 8 | 8 |
| 3 | 3 | **Análisis** |  | 9.25d? | 2015-04-14 A | 2015-04-27 | 2 | 73% | 2.5d? | 2015-04-14 | 2015-04-23 | 6.75d | 0d |  |  |  | 132h | 108h | 132 | 108 | 108 |
| 4 | 3.1 | Reuniones |  | 2d | 2015-04-14 A | 2015-04-16 A |  | 100% |  | 2015-04-14 | 2015-04-16 | 2d |  |  |  | SEII - Mobile; SEII - Web | 32h | 32h | 32 | 32 | 32 |
| 5 | 3.2 | Especificación de requerimientos funcionales |  | 0.5d | 2015-04-16 A | 2015-04-16 A | 4 | 100% |  | 2015-04-16 | 2015-04-16 | 0.5d |  |  |  | SEII - Mobile; SEII - Web | 8h | 8h | 8 | 8 | 8 |
| 6 | 3.3 | Creación de Wireframes |  | 2d | 2015-04-17 A | 2015-04-20 A | 5 | 100% |  | 2015-04-17 | 2015-04-20 | 2d |  |  |  | SEII - Mobile; SEII - Web | 32h | 32h | 32 | 32 | 32 |
| 7 | 3.4 | Especificación de casos de uso |  | 2d | 2015-04-21 A | 2015-04-22 A | 6 | 100% |  | 2015-04-21 | 2015-04-22 | 2d |  |  |  | SEII - Mobile; SEII - Web | 32h | 32h | 32 | 32 | 32 |
| 8 | 3.5 | Matriz de trazabilidad: requerimientos / casos de uso |  | 0.25d | 2015-04-23 A | 2015-04-23 A | 7 | 100% |  | 2015-04-23 | 2015-04-23 | 0.25d |  |  |  | SEII - Mobile; SEII - Web | 4h | 4h | 4 | 4 | 4 |
| 9 | 3.6 | Aprobación Yanbal |  | 2d? | 2015-04-23 | 2015-04-27 | 8 |  |  |  |  |  | 0d |  |  | Yanbal | 16h |  | 16 |  |  |
| 10 | 3.7 | Modificación de documentos |  | 0.5d? | 2015-04-27 | 2015-04-27 | 9 |  |  |  |  |  | 0d |  |  | SEII - Mobile; SEII - Web | 8h |  | 8 |  |  |
| 11 | 4 | **Diseño Técnico** |  | 12.5d? | 2015-04-23 A | 2015-05-12 |  | 4% | 11.98d? | 2015-04-23 | 2015-05-06 | 8d | 0d |  |  |  | 176h | 8h | 176 | 128 | 8 |
| 12 | 4.1 | Catalogo de servicios web a crear / consumir |  | 2d | 2015-04-23 A | 2015-04-27 | 9SS | 25% | 1.5d | 2015-05-04 | 2015-05-06 | 2d | 0.5d |  |  | SEII - Mobile; SEII - Web | 32h | 8h | 32 | 32 | 8 |
| 13 | 4.2 | Reuniones |  | 1d | 2015-04-27 | 2015-04-28 | 12, 10 |  |  | 2015-04-23 | 2015-04-24 | 1d | 0d |  |  | SEII - Mobile; SEII - Web | 16h |  | 16 | 16 |  |
| 14 | 4.3 | Definir estándares de desarrollo |  | 0.5d | 2015-04-28 | 2015-04-29 | 13 |  |  | 2015-04-24 | 2015-04-24 | 0.5d | 0d |  |  | SEII - Mobile; SEII - Web | 8h |  | 8 | 8 |  |
| 15 | 4.4 | Requerimientos no funcionales |  | 0.5d | 2015-04-29 | 2015-04-29 | 14 |  |  | 2015-04-24 | 2015-04-27 | 0.5d | 0d |  |  | SEII - Mobile; SEII - Web | 8h |  | 8 | 8 |  |
| 16 | 4.5 | Diagrama de Componentes |  | 0.25d | 2015-04-29 | 2015-04-29 | 15 |  |  | 2015-04-27 | 2015-04-27 | 0.25d | 0d |  |  | SEII - Mobile; SEII - Web | 4h |  | 4 | 4 |  |
| 17 | 4.6 | Diagrama de Paquetes |  | 0.5d | 2015-04-30 | 2015-04-30 | 16 |  |  | 2015-04-27 | 2015-04-27 | 0.5d | 0d |  |  | SEII - Mobile; SEII - Web | 8h |  | 8 | 8 |  |
| 18 | 4.7 | Diagrama de Despliegue |  | 0.25d | 2015-04-30 | 2015-04-30 | 17 |  |  | 2015-04-28 | 2015-04-28 | 0.25d | 0d |  |  | SEII - Mobile; SEII - Web | 4h |  | 4 | 4 |  |
| 19 | 4.8 | Diagrama de Clases |  | 2d | 2015-04-30 | 2015-05-05 | 18 |  |  | 2015-04-28 | 2015-04-30 | 2d | 0d |  |  | SEII - Mobile; SEII - Web | 32h |  | 32 | 32 |  |
| 20 | 4.9 | Diseño de base de datos |  | 1d | 2015-05-05 | 2015-05-06 | 19 |  |  | 2015-04-30 | 2015-05-04 | 1d | 0d |  |  | SEII - Mobile; SEII - Web | 16h |  | 16 | 16 |  |
| 21 | 4.10 | Aprobación Yanbal |  | 2d? | 2015-05-06 | 2015-05-08 | 20 |  |  |  |  |  | 0d |  |  | Yanbal | 16h |  | 16 |  |  |
| 22 | 4.11 | Modificación de documentos |  | 2d? | 2015-05-08 | 2015-05-12 | 21 |  |  |  |  |  | 0d |  |  | SEII - Mobile; SEII - Web | 32h |  | 32 |  |  |
| 23 | 5 | Disponibilidad diseñadoras | milestone | 0d | 2015-04-29 | 2015-04-29 |  |  |  |  |  |  | 15.5d | 0d | start no earlier than 2015-04-29 |  |  |  |  |  |  |
| 24 | 6 | **Diseño Gráfico** |  | 18.25d | 2015-04-29 | 2015-05-26 |  |  |  | 2015-04-21 | 2015-05-18 | 18.25d | 15.5d |  |  |  | 146h |  | 146 | 146 |  |
| 25 | 6.1 | **Preparación de propuesta** |  | 7.25d | 2015-04-29 | 2015-05-11 | 23 |  |  | 2015-04-21 | 2015-04-30 | 7.25d | 15.5d | 0d |  |  | 58h |  | 58 | 58 |  |
| 26 | 6.1.1 | Reuniones con el cliente (información inicial) |  | 0.75d | 2015-04-29 | 2015-04-29 |  |  |  | 2015-04-21 | 2015-04-21 | 0.75d | 15.5d | 0d |  | UX | 6h |  | 6 | 6 |  |
| 27 | 6.1.2 | Elaboración de propuesta grafica (2 Pág. Maestras) Móvil |  | 2.5d | 2015-04-29 | 2015-05-05 | 26 |  |  | 2015-04-21 | 2015-04-24 | 2.5d | 15.5d | 0d |  | UX | 20h |  | 20 | 20 |  |
| 28 | 6.1.3 | Elaboración de propuesta grafica (2 Pág. Maestras) Web |  | 2.25d | 2015-05-05 | 2015-05-07 | 27 |  |  | 2015-04-24 | 2015-04-28 | 2.25d | 15.5d | 0d |  | UX | 18h |  | 18 | 18 |  |
| 29 | 6.1.4 | Elaboración de assets y cortes de imágenes |  | 1.75d | 2015-05-07 | 2015-05-11 | 28 |  |  | 2015-04-28 | 2015-04-30 | 1.75d | 15.5d |  |  | UX | 14h |  | 14 | 14 |  |

| ID | WBS | Task | Duration | Start | Finish | Predecessors | Baseline start | Baseline finish | Baseline duration | Total slack | Free slack | Resources | Work | Cost | Baseline cost |
| --- | --- | --- | --- | --- | --- | --- | --- | --- | --- | --- | --- | --- | --- | --- | --- |
| 30 | 6.2 | **Preparación de maquetas y assets** | 11d | 2015-05-11 | 2015-05-26 | 25 | 2015-04-30 | 2015-05-18 | 11d | 42.5d |  |  | 88h | 88 | 88 |
| 31 | 6.2.1 | **BackOffice Administrador (Web)** | 8d | 2015-05-11 | 2015-05-21 |  | 2015-04-30 | 2015-05-13 | 8d | 42.5d | 0d |  | 64h | 64 | 64 |
| 32 | 6.2.1.1 | UI Login | 1d | 2015-05-11 | 2015-05-12 |  | 2015-04-30 | 2015-05-04 | 1d | 42.5d | 0d | UX | 8h | 8 | 8 |
| 33 | 6.2.1.2 | UI - Mantenimiento de usuarios | 1d | 2015-05-12 | 2015-05-13 | 32 | 2015-05-04 | 2015-05-05 | 1d | 42.5d | 0d | UX | 8h | 8 | 8 |
| 34 | 6.2.1.3 | UI - Mantenimiento de roles | 1d | 2015-05-13 | 2015-05-14 | 33 | 2015-05-05 | 2015-05-06 | 1d | 42.5d | 0d | UX | 8h | 8 | 8 |
| 35 | 6.2.1.4 | Crear grupos de usuarios | 1d | 2015-05-14 | 2015-05-15 | 34 | 2015-05-06 | 2015-05-07 | 1d | 42.5d | 0d | UX | 8h | 8 | 8 |
| 36 | 6.2.1.5 | Asociar grupos a perfiles | 1d | 2015-05-15 | 2015-05-18 | 35 | 2015-05-07 | 2015-05-08 | 1d | 42.5d | 0d | UX | 8h | 8 | 8 |
| 37 | 6.2.1.6 | Administración de Colecciones | 0.75d | 2015-05-18 | 2015-05-18 | 36 | 2015-05-08 | 2015-05-08 | 0.75d | 42.5d | 0d | UX | 6h | 6 | 6 |
| 38 | 6.2.1.7 | Administraciòn de documentos | 0.75d | 2015-05-19 | 2015-05-19 | 37 | 2015-05-11 | 2015-05-11 | 0.75d | 42.5d | 0d | UX | 6h | 6 | 6 |
| 39 | 6.2.1.8 | Administrar contenido por perfil | 0.75d | 2015-05-19 | 2015-05-20 | 38 | 2015-05-11 | 2015-05-12 | 0.75d | 42.5d | 0d | UX | 6h | 6 | 6 |
| 40 | 6.2.1.9 | Publicar contenido por perfil | 0.75d | 2015-05-20 | 2015-05-21 | 39 | 2015-05-12 | 2015-05-13 | 0.75d | 42.5d |  | UX | 6h | 6 | 6 |
| 41 | 6.2.2 | **Frontoffice (App Mobile)** | 3d | 2015-05-21 | 2015-05-26 | 31 | 2015-05-13 | 2015-05-18 | 3d | 42.5d |  |  | 24h | 24 | 24 |
| 42 | 6.2.2.1 | Login | 0.75d | 2015-05-21 | 2015-05-21 |  | 2015-05-13 | 2015-05-13 | 0.75d | 42.5d | 0d | UX | 6h | 6 | 6 |
| 43 | 6.2.2.2 | Lista contenido | 0.75d | 2015-05-22 | 2015-05-22 | 42 | 2015-05-14 | 2015-05-14 | 0.75d | 42.5d | 0d | UX | 6h | 6 | 6 |
| 44 | 6.2.2.3 | Ver agrupaciones | 0.75d | 2015-05-22 | 2015-05-25 | 43 | 2015-05-14 | 2015-05-15 | 0.75d | 42.5d | 0d | UX | 6h | 6 | 6 |
| 45 | 6.2.2.4 | Notificaciones | 0.75d | 2015-05-25 | 2015-05-26 | 44 | 2015-05-15 | 2015-05-18 | 0.75d | 42.5d |  | UX | 6h | 6 | 6 |
| 46 | 7 | **Configuración del Ambiente de Trabajo** | 2d | 2015-05-06 | 2015-05-08 | 21SS | 2015-05-06 | 2015-05-07 | 1.5d | 2d |  |  | 32h | 32 | 24 |
| 47 | 7.1 | Configurar ambientes de desarrollo (personal y virtual) | 1d | 2015-05-06 | 2015-05-07 |  | 2015-05-06 | 2015-05-07 | 1d | 2d | 0d | SEII - Web; SEII - Mobile | 16h | 16 | 16 |
| 48 | 7.2 | Configurar integración continua | 1d | 2015-05-07 | 2015-05-08 | 47 | 2015-05-07 | 2015-05-07 | 0.5d | 2d |  | SEII - Web; SEII - Mobile | 16h | 16 | 8 |
| 49 | 8 | **Desarrollo** | 39d? | 2015-05-12 | 2015-07-07 | 11 | 2015-05-06 | 2015-07-02 | 40.5d? | 0d |  |  | 524h | 524 | 548 |
| 50 | 8.1 | **Web Services** | 24d? | 2015-05-12 | 2015-06-15 | 46 | 2015-05-07 | 2015-06-10 | 24d? | 0d |  |  | 192h | 192 | 192 |
| 51 | 8.1.1 | Reuniones | 2d? | 2015-05-12 | 2015-05-14 |  | 2015-05-07 | 2015-05-11 | 2d? | 0d |  | SEII - Web | 16h | 16 | 16 |
| 52 | 8.1.2 | Creación servicio web y estructura base | 2d | 2015-05-14 | 2015-05-18 | 51 | 2015-05-11 | 2015-05-13 | 2d | 0d |  | SEII - Web | 16h | 16 | 16 |
| 53 | 8.1.3 | Implementación log (bitácora) | 3d | 2015-05-18 | 2015-05-21 | 52 | 2015-05-13 | 2015-05-18 | 3d | 0d |  | SEII - Web | 24h | 24 | 24 |
| 54 | 8.1.4 | Implementación utilitarios base (parseo, conversión) | 2d | 2015-05-21 | 2015-05-25 | 53 | 2015-05-18 | 2015-05-20 | 2d | 0d |  | SEII - Web | 16h | 16 | 16 |
| 55 | 8.1.5 | Integración YANBAL - Active Directory | 2d? | 2015-05-25 | 2015-05-27 | 54 | 2015-05-20 | 2015-05-22 | 2d? | 0d |  | SEII - Web | 16h | 16 | 16 |
| 56 | 8.1.6 | Autenticacion / login | 1d | 2015-05-27 | 2015-05-28 | 55 | 2015-05-22 | 2015-05-25 | 1d | 0d |  | SEII - Web | 8h | 8 | 8 |
| 57 | 8.1.7 | Descargar contenido (PDF,Imagenes,Video,Audio) | 1d | 2015-05-28 | 2015-05-29 | 56 | 2015-05-25 | 2015-05-26 | 1d | 0d |  | SEII - Web | 8h | 8 | 8 |
| 58 | 8.1.8 | Listar documentos descargados | 0.75d | 2015-05-29 | 2015-06-01 | 57 | 2015-05-26 | 2015-05-27 | 0.75d | 0d |  | SEII - Web | 6h | 6 | 6 |
| 59 | 8.1.9 | Eliminar documentos | 0.75d | 2015-06-01 | 2015-06-02 | 58 | 2015-05-27 | 2015-05-28 | 0.75d | 0d |  | SEII - Web | 6h | 6 | 6 |
| 60 | 8.1.10 | Insertar Metricas Usabilidad | 2d | 2015-06-02 | 2015-06-04 | 59 | 2015-05-28 | 2015-06-01 | 2d | 0d |  | SEII - Web | 16h | 16 | 16 |
| 61 | 8.1.11 | CRUD Usuarios | 1d | 2015-06-04 | 2015-06-05 | 60 | 2015-06-01 | 2015-06-02 | 1d | 0d |  | SEII - Web | 8h | 8 | 8 |
| 62 | 8.1.12 | CRUD Roles | 1d | 2015-06-05 | 2015-06-08 | 61 | 2015-06-02 | 2015-06-03 | 1d | 0d |  | SEII - Web | 8h | 8 | 8 |
| 63 | 8.1.13 | CRUD agrupaciones | 1d | 2015-06-08 | 2015-06-09 | 62 | 2015-06-03 | 2015-06-04 | 1d | 0d |  | SEII - Web | 8h | 8 | 8 |
| 64 | 8.1.14 | CRUD Contenidos | 2d | 2015-06-09 | 2015-06-11 | 63 | 2015-06-04 | 2015-06-08 | 2d | 0d |  | SEII - Web | 16h | 16 | 16 |
| 65 | 8.1.15 | Administrar parametros | 0.5d | 2015-06-11 | 2015-06-11 | 64 | 2015-06-08 | 2015-06-08 | 0.5d | 0d |  | SEII - Web | 4h | 4 | 4 |
| 66 | 8.1.16 | Actualización de servicios | 1d? | 2015-06-11 | 2015-06-12 | 65 | 2015-06-08 | 2015-06-09 | 1d? | 0d |  | SEII - Web | 8h | 8 | 8 |
| 67 | 8.1.17 | Actualizar documentación de servicios | 1d? | 2015-06-12 | 2015-06-15 | 66 | 2015-06-09 | 2015-06-10 | 1d? | 0d |  | SEII - Web | 8h | 8 | 8 |

Notes:
- 41: Considerar cómo se va a ver en smartphones y tablets.

| ID | WBS | Task | Duration | Start | Finish | Predecessors | Baseline start | Baseline finish | Baseline duration | Total slack | Free slack | Resources | Work | Cost | Baseline cost |
| --- | --- | --- | --- | --- | --- | --- | --- | --- | --- | --- | --- | --- | --- | --- | --- |
| 68 | 8.2 | **HTML** | 4d? | 2015-05-12 | 2015-05-18 | 25, 46 | 2015-05-07 | 2015-05-13 | 4d? | 14d | 0d |  | 32h | 32 | 32 |
| 69 | 8.2.1 | Portal Web | 2d? | 2015-05-12 | 2015-05-14 |  | 2015-05-07 | 2015-05-11 | 2d? | 14d | 0d | SEII - Mobile | 16h | 16 | 16 |
| 70 | 8.2.2 | PhoneGap App | 2d? | 2015-05-14 | 2015-05-18 | 69 | 2015-05-11 | 2015-05-13 | 2d? | 14d |  | SEII - Mobile | 16h | 16 | 16 |
| 71 | 8.3 | **Portal Web** | 15d? | 2015-06-15 | 2015-07-07 | 50, 68 | 2015-06-10 | 2015-07-02 | 15d? | 0d |  |  | 120h | 120 | 120 |
| 72 | 8.3.1 | Aplicación y pruebas de estilo base | 1d | 2015-06-15 | 2015-06-16 |  | 2015-06-10 | 2015-06-11 | 1d | 0d |  | SEII - Web | 8h | 8 | 8 |
| 73 | 8.3.2 | UI Login | 0.5d | 2015-06-16 | 2015-06-17 | 72 | 2015-06-11 | 2015-06-12 | 0.5d | 0d |  | SEII - Web | 4h | 4 | 4 |
| 74 | 8.3.3 | UI - Mantenimiento de usuarios | 1d | 2015-06-17 | 2015-06-18 | 73 | 2015-06-12 | 2015-06-15 | 1d | 0d |  | SEII - Web | 8h | 8 | 8 |
| 75 | 8.3.4 | UI - Mantenimiento de roles | 1d | 2015-06-18 | 2015-06-19 | 74 | 2015-06-15 | 2015-06-16 | 1d | 0d |  | SEII - Web | 8h | 8 | 8 |
| 76 | 8.3.5 | Crear grupos de usuarios | 2d | 2015-06-19 | 2015-06-23 | 75 | 2015-06-16 | 2015-06-18 | 2d | 0d |  | SEII - Web | 16h | 16 | 16 |
| 77 | 8.3.6 | Asociar grupos a perfiles | 1d | 2015-06-23 | 2015-06-24 | 76 | 2015-06-18 | 2015-06-19 | 1d | 0d |  | SEII - Web | 8h | 8 | 8 |
| 78 | 8.3.7 | **Administración de Colecciones** | 2d | 2015-06-24 | 2015-06-26 | 77 | 2015-06-19 | 2015-06-23 | 2d | 0d |  |  | 16h | 16 | 16 |
| 79 | 8.3.7.1 | Crear colección | 0.5d | 2015-06-24 | 2015-06-24 |  | 2015-06-19 | 2015-06-19 | 0.5d | 0d |  | SEII - Web | 4h | 4 | 4 |
| 80 | 8.3.7.2 | Editar colección | 0.5d | 2015-06-24 | 2015-06-25 | 79 | 2015-06-19 | 2015-06-22 | 0.5d | 0d |  | SEII - Web | 4h | 4 | 4 |
| 81 | 8.3.7.3 | Eliminar colección | 0.5d | 2015-06-25 | 2015-06-25 | 80 | 2015-06-22 | 2015-06-22 | 0.5d | 0d |  | SEII - Web | 4h | 4 | 4 |
| 82 | 8.3.7.4 | Mover colección | 0.5d | 2015-06-25 | 2015-06-26 | 81 | 2015-06-22 | 2015-06-23 | 0.5d | 0d |  | SEII - Web | 4h | 4 | 4 |
| 83 | 8.3.8 | **Administraciòn de documentos** | 2.5d? | 2015-06-26 | 2015-07-01 | 82 | 2015-06-23 | 2015-06-25 | 2.5d? | 0d |  |  | 20h | 20 | 20 |
| 84 | 8.3.8.1 | Agrerar documento | 1d? | 2015-06-26 | 2015-06-30 |  | 2015-06-23 | 2015-06-24 | 1d? | 0d |  | SEII - Web | 8h | 8 | 8 |
| 85 | 8.3.8.2 | Editar atributos del documento | 0.5d? | 2015-06-30 | 2015-06-30 | 84 | 2015-06-24 | 2015-06-24 | 0.5d? | 0d |  | SEII - Web | 4h | 4 | 4 |
| 86 | 8.3.8.3 | Eliminar documento | 0.5d? | 2015-06-30 | 2015-07-01 | 85 | 2015-06-24 | 2015-06-25 | 0.5d? | 0d |  | SEII - Web | 4h | 4 | 4 |
| 87 | 8.3.8.4 | Mover documento | 0.5d? | 2015-07-01 | 2015-07-01 | 86 | 2015-06-25 | 2015-06-25 | 0.5d? | 0d |  | SEII - Web | 4h | 4 | 4 |
| 88 | 8.3.9 | **Perfiles** | 4d | 2015-07-01 | 2015-07-07 | 83 | 2015-06-25 | 2015-07-02 | 4d | 0d |  |  | 32h | 32 | 32 |
| 89 | 8.3.9.1 | Administrar contenido por perfil | 2d | 2015-07-01 | 2015-07-03 |  | 2015-06-25 | 2015-06-30 | 2d | 0d |  | SEII - Web | 16h | 16 | 16 |
| 90 | 8.3.9.2 | Publicar contenido por perfil | 2d | 2015-07-03 | 2015-07-07 | 89 | 2015-06-30 | 2015-07-02 | 2d | 0d |  | SEII - Web | 16h | 16 | 16 |
| 91 | 8.4 | **PhoneGap** | 21.5d? | 2015-05-18 | 2015-06-17 | 68 | 2015-05-13 | 2015-06-12 | 21.5d? | 14d | 0d |  | 172h | 172 | 172 |
| 92 | 8.4.1 | Listener para eventos Back | 0.5d? | 2015-05-18 | 2015-05-19 |  | 2015-05-13 | 2015-05-14 | 0.5d? | 14d | 0d | SEII - Mobile | 4h | 4 | 4 |

| ID | WBS | Task | Duration | Start | Finish | Predecessors | Baseline start | Baseline finish | Baseline duration | Total slack | Free slack | Resources | Work | Cost | Baseline cost |
| --- | --- | --- | --- | --- | --- | --- | --- | --- | --- | --- | --- | --- | --- | --- | --- |
| 93 | 8.4.2 | **Login** | 3.5d? | 2015-05-19 | 2015-05-22 | 92 | 2015-05-14 | 2015-05-19 | 3.5d? | 14d | 0d |  | 28h | 28 | 28 |
| 94 | 8.4.2.1 | UI | 0.75d? | 2015-05-19 | 2015-05-19 |  | 2015-05-14 | 2015-05-14 | 0.75d? | 14d | 0d | SEII - Mobile | 6h | 6 | 6 |
| 95 | 8.4.2.2 | Servicios | 0.75d? | 2015-05-20 | 2015-05-20 | 94 | 2015-05-15 | 2015-05-15 | 0.75d? | 14d | 0d | SEII - Mobile | 6h | 6 | 6 |
| 96 | 8.4.2.3 | Manejo de accesos y permisos | 2d? | 2015-05-20 | 2015-05-22 | 95 | 2015-05-15 | 2015-05-19 | 2d? | 14d |  | SEII - Mobile | 16h | 16 | 16 |
| 97 | 8.4.3 | **Documentos** | 6.25d? | 2015-05-22 | 2015-06-01 | 93 | 2015-05-19 | 2015-05-27 | 6.25d? | 14d | 0d |  | 50h | 50 | 50 |
| 98 | 8.4.3.1 | Visualizar lista de documentos | 0.75d? | 2015-05-22 | 2015-05-25 |  | 2015-05-19 | 2015-05-20 | 0.75d? | 14d | 0d | SEII - Mobile | 6h | 6 | 6 |
| 99 | 8.4.3.2 | Descargar documentos | 1.75d? | 2015-05-25 | 2015-05-27 | 98 | 2015-05-20 | 2015-05-22 | 1.75d? | 14d | 0d | SEII - Mobile | 14h | 14 | 14 |
| 100 | 8.4.3.3 | Llamada a visor - Android | 1d? | 2015-05-27 | 2015-05-28 | 99 | 2015-05-22 | 2015-05-25 | 1d? | 14d | 0d | SEII - Mobile | 8h | 8 | 8 |
| 101 | 8.4.3.4 | Visualizar documentos - iOS | 0.5d? | 2015-05-28 | 2015-05-28 | 100 | 2015-05-25 | 2015-05-25 | 0.5d? | 14d | 0d | SEII - Mobile | 4h | 4 | 4 |
| 102 | 8.4.3.5 | Visualizar documentos - Windows Phone | 0.5d? | 2015-05-28 | 2015-05-29 | 101 | 2015-05-25 | 2015-05-26 | 0.5d? | 14d | 0d | SEII - Mobile | 4h | 4 | 4 |
| 103 | 8.4.3.6 | Eliminar un documento | 0.75d? | 2015-05-29 | 2015-05-29 | 102 | 2015-05-26 | 2015-05-26 | 0.75d? | 14d | 0d | SEII - Mobile | 6h | 6 | 6 |
| 104 | 8.4.3.7 | Editar atributos | 1d? | 2015-06-01 | 2015-06-01 | 103 | 2015-05-27 | 2015-05-27 | 1d? | 14d |  | SEII - Mobile | 8h | 8 | 8 |
| 105 | 8.4.4 | **Agrupaciones** | 3d? | 2015-06-02 | 2015-06-04 | 97 | 2015-05-28 | 2015-06-01 | 3d? | 14d | 0d |  | 24h | 24 | 24 |
| 106 | 8.4.4.1 | Ver agrupaciones | 1.5d? | 2015-06-02 | 2015-06-03 |  | 2015-05-28 | 2015-05-29 | 1.5d? | 14d | 0d | SEII - Mobile | 12h | 12 | 12 |
| 107 | 8.4.4.2 | Servicios | 1.5d? | 2015-06-03 | 2015-06-04 | 106 | 2015-05-29 | 2015-06-01 | 1.5d? | 14d |  | SEII - Mobile | 12h | 12 | 12 |
| 108 | 8.4.5 | **Notificaciones** | 5.25d? | 2015-06-05 | 2015-06-12 | 105 | 2015-06-02 | 2015-06-09 | 5.25d? | 14d | 0d |  | 42h | 42 | 42 |
| 109 | 8.4.5.1 | Desplegar notificación genérica - Android | 1d? | 2015-06-05 | 2015-06-05 |  | 2015-06-02 | 2015-06-02 | 1d? | 14d | 0d | SEII - Mobile | 8h | 8 | 8 |
| 110 | 8.4.5.2 | Desplegar notificación genérica - iOS | 1d? | 2015-06-08 | 2015-06-08 | 109 | 2015-06-03 | 2015-06-03 | 1d? | 14d | 0d | SEII - Mobile | 8h | 8 | 8 |
| 111 | 8.4.5.3 | Desplegar notificación genérica - Windows Phone | 1d? | 2015-06-09 | 2015-06-09 | 110 | 2015-06-04 | 2015-06-04 | 1d? | 14d | 0d | SEII - Mobile | 8h | 8 | 8 |
| 112 | 8.4.5.4 | Desplegar notificación con redirección a documentos - Android | 0.75d? | 2015-06-10 | 2015-06-10 | 111 | 2015-06-05 | 2015-06-05 | 0.75d? | 14d | 0d | SEII - Mobile | 6h | 6 | 6 |
| 113 | 8.4.5.5 | Desplegar notificación con redirección a documentos - iOS | 0.75d? | 2015-06-10 | 2015-06-11 | 112 | 2015-06-05 | 2015-06-08 | 0.75d? | 14d | 0d | SEII - Mobile | 6h | 6 | 6 |
| 114 | 8.4.5.6 | Desplegar notificación con redirección a documentos - Windows Phone | 0.75d? | 2015-06-11 | 2015-06-12 | 113 | 2015-06-08 | 2015-06-09 | 0.75d? | 14d |  | SEII - Mobile | 6h | 6 | 6 |
| 115 | 8.4.6 | Integración con Google Analytics | 2d? | 2015-06-12 | 2015-06-16 | 108 | 2015-06-09 | 2015-06-11 | 2d? | 14d | 0d | SEII - Mobile | 16h | 16 | 16 |
| 116 | 8.4.7 | Sincronización a demanda del usuario | 1d? | 2015-06-16 | 2015-06-17 | 115 | 2015-06-11 | 2015-06-12 | 1d? | 14d |  | SEII - Mobile | 8h | 8 | 8 |

| ID | WBS | Task | Duration | Start | Finish | Predecessors | Baseline start | Baseline finish | Baseline duration | Total slack | Free slack | Resources | Work | Cost | Baseline cost |
| --- | --- | --- | --- | --- | --- | --- | --- | --- | --- | --- | --- | --- | --- | --- | --- |
| 117 | 8.5 | **Revisión de Pares PhoneGap** | 1d | 2015-06-17 | 2015-06-18 | 91 | 2015-06-12 | 2015-06-15 | 1d | 14d | 0d |  | 8h | 8 | 8 |
| 118 | 8.5.1 | Soporte Ejecución Revisión de Pares | 0.25d | 2015-06-17 | 2015-06-17 |  | 2015-06-12 | 2015-06-12 | 0.25d | 14d | 0d | SEII - Mobile | 2h | 2 | 2 |
| 119 | 8.5.2 | Correcciones Revisión de Pares | 0.75d | 2015-06-17 | 2015-06-18 | 118 | 2015-06-12 | 2015-06-15 | 0.75d | 14d |  | SEII - Mobile | 6h | 6 | 6 |
| 120 | 9 | **Aseguramiento de la Calidad** | 27d? | 2015-06-11 | 2015-07-21 | 3 | 2015-06-08 | 2015-07-16 | 27d? | 0d |  |  | 540h | 540 | 540 |
| 121 | 9.1 | Plan de Pruebas (Funcionales y Rendimiento) | 2d | 2015-06-11 | 2015-06-15 | 122SF | 2015-06-08 | 2015-06-10 | 2d | 25d |  | QAII | 16h | 16 | 16 |
| 122 | 9.2 | Configuración Ambientes de QA | 1d | 2015-06-15 | 2015-06-16 | 123SF | 2015-06-10 | 2015-06-11 | 1d | 24d | 0d | QAII | 8h | 8 | 8 |
| 123 | 9.3 | **PhoneGap** | 10d? | 2015-06-16 | 2015-07-01 |  | 2015-06-11 | 2015-06-25 | 10d? | 14d | 0d |  | 272h | 272 | 272 |
| 124 | 9.3.1 | Estimación y Creación de Casos de Prueba | 2d? | 2015-06-16 | 2015-06-18 | 125SF | 2015-06-11 | 2015-06-15 | 2d? | 22d |  | QAI - 1; QAII | 32h | 32 | 32 |
| 125 | 9.3.2 | **Ejecución en Tablet** | 7d? | 2015-06-18 | 2015-06-30 | 117 | 2015-06-15 | 2015-06-24 | 7d? | 15d | 0d |  | 112h | 112 | 112 |
| 126 | 9.3.2.1 | Ejecución en Samsung de 10.1" /SO Android 4.1.2 (Principal) | 3.25d? | 2015-06-18 | 2015-06-23 |  | 2015-06-15 | 2015-06-18 | 3.25d? | 15d | 0d | QAI - 1; QAI - 3 | 52h | 52 | 52 |
| 127 | 9.3.2.2 | Ejecución en Lenovo 7" / SO Android 4.2.2 (Secundario) | 0.94d? | 2015-06-23 | 2015-06-24 | 126 | 2015-06-18 | 2015-06-19 | 0.94d? | 15d | 0d | QAI - 1; QAI - 3 | 15h | 15 | 15 |
| 128 | 9.3.2.3 | Tablet AOC / SO: Android 4.1.1 (Secundario) | 0.94d? | 2015-06-24 | 2015-06-25 | 127 | 2015-06-19 | 2015-06-22 | 0.94d? | 15d | 0d | QAI - 1; QAI - 3 | 15h | 15 | 15 |
| 129 | 9.3.2.4 | Ejecución en Ipad SO 7 (Secundario) | 0.94d? | 2015-06-25 | 2015-06-26 | 128 | 2015-06-22 | 2015-06-23 | 0.94d? | 15d | 0d | QAI - 1; QAI - 3 | 15h | 15 | 15 |
| 130 | 9.3.2.5 | Ejecución en Ipad SO 8 (Secundario) | 0.94d? | 2015-06-26 | 2015-06-30 | 129 | 2015-06-23 | 2015-06-24 | 0.94d? | 15d |  | QAI - 1; QAI - 3 | 15h | 15 | 15 |
| 131 | 9.3.3 | **Ejecución en SmartPhone** | 8d? | 2015-06-18 | 2015-07-01 | 117 | 2015-06-15 | 2015-06-25 | 8d? | 14d |  |  | 128h | 128 | 128 |
| 132 | 9.3.3.1 | Nokia Lumia 520 / SO: Windows Phone 8.0 (Principal) | 3.31d? | 2015-06-18 | 2015-06-23 |  | 2015-06-15 | 2015-06-18 | 3.31d? | 14d | 0d | QAI - 2; QAI - 4 | 53h | 53 | 53 |
| 133 | 9.3.3.2 | Ejecución en Samsung Galaxy Chat/SO -SO Android 4.1.2 (secundario) | 0.94d? | 2015-06-23 | 2015-06-24 | 132 | 2015-06-18 | 2015-06-19 | 0.94d? | 14d | 0d | QAI - 2; QAI - 4 | 15h | 15 | 15 |
| 134 | 9.3.3.3 | Samsung Galaxy S III Mini / SO: Android 4.1.2 (Principal) | 0.94d? | 2015-06-24 | 2015-06-25 | 133 | 2015-06-19 | 2015-06-22 | 0.94d? | 14d | 0d | QAI - 2; QAI - 4 | 15h | 15 | 15 |
| 135 | 9.3.3.4 | Ejecución en Iphone 4 / iSO 7 (Principal) | 0.94d? | 2015-06-25 | 2015-06-26 | 134 | 2015-06-22 | 2015-06-23 | 0.94d? | 14d | 0d | QAI - 2; QAI - 4 | 15h | 15 | 15 |
| 136 | 9.3.3.5 | Ejecución en Iphone 5 / iSO 7 (Secundario) | 0.94d? | 2015-06-26 | 2015-06-30 | 135 | 2015-06-23 | 2015-06-24 | 0.94d? | 14d | 0d | QAI - 2; QAI - 4 | 15h | 15 | 15 |
| 137 | 9.3.3.6 | Ejecución en Iphone 6 / iSO 7 (Secundario) | 0.94d? | 2015-06-30 | 2015-07-01 | 136 | 2015-06-24 | 2015-06-25 | 0.94d? | 14d |  | QAI - 2; QAI - 4 | 15h | 15 | 15 |
| 138 | 9.4 | **Portal Web** | 7d? | 2015-07-03 | 2015-07-14 |  | 2015-06-30 | 2015-07-09 | 7d? | 0d |  |  | 112h | 112 | 112 |
| 139 | 9.4.1 | Estimación y Creación de Casos de Prueba | 2d | 2015-07-03 | 2015-07-07 | 140SF | 2015-06-30 | 2015-07-02 | 2d | 5d |  | QAI - 1; QAII | 32h | 32 | 32 |
| 140 | 9.4.2 | **Ejecución en Web Browser - IE9 (Principal)** | 3.75d? | 2015-07-07 | 2015-07-13 | 71 | 2015-07-02 | 2015-07-08 | 3.75d? | 0d |  |  | 60h | 60 | 60 |
| 141 | 9.4.2.1 | Ejecución de casos de prueba funcionales | 2.25d? | 2015-07-07 | 2015-07-09 |  | 2015-07-02 | 2015-07-06 | 2.25d? | 0d |  | QAI - 3; QAI - 1 | 36h | 36 | 36 |
| 142 | 9.4.2.2 | Reporte de errores | 0.5d? | 2015-07-10 | 2015-07-10 | 141 | 2015-07-07 | 2015-07-07 | 0.5d? | 0d |  | QAI - 1; QAI - 3 | 8h | 8 | 8 |
| 143 | 9.4.2.3 | Verificación de errores | 0.5d? | 2015-07-10 | 2015-07-10 | 142 | 2015-07-07 | 2015-07-07 | 0.5d? | 0d |  | QAI - 1; QAI - 3 | 8h | 8 | 8 |
| 144 | 9.4.2.4 | Pruebas exploratoria | 0.5d? | 2015-07-13 | 2015-07-13 | 143 | 2015-07-08 | 2015-07-08 | 0.5d? | 0d |  | QAI - 1; QAI - 3 | 8h | 8 | 8 |
| 145 | 9.4.3 | Ejecución en Web Browser - Chrome 40 (Secundario) | 1.25d? | 2015-07-13 | 2015-07-14 | 140 | 2015-07-08 | 2015-07-09 | 1.25d? | 0d |  | QAI - 1; QAI - 3 | 20h | 20 | 20 |

| ID | WBS | Task | Duration | Start | Finish | Predecessors | Baseline start | Baseline finish | Baseline duration | Total slack | Free slack | Resources | Work | Cost | Baseline cost |
| --- | --- | --- | --- | --- | --- | --- | --- | --- | --- | --- | --- | --- | --- | --- | --- |
| 146 | 9.5 | **Soporte a Pruebas Funcionales** | 17.5d | 2015-06-18 | 2015-07-14 |  | 2015-06-15 | 2015-07-09 | 17.5d | 4d | 0d |  | 60h | 60 | 60 |
| 147 | 9.5.1 | **PhoneGap** | 10d | 2015-06-18 | 2015-07-03 |  | 2015-06-15 | 2015-06-30 | 10d | 11.5d |  |  | 40h | 40 | 40 |
| 148 | 9.5.1.1 | Resolución Bugs | 10d | 2015-06-18 | 2015-07-03 | 125SS | 2015-06-15 | 2015-06-30 | 10d | 11.5d |  | SEII - Mobile [50%] | 40h | 40 | 40 |
| 149 | 9.5.2 | **Portal Web** | 5d | 2015-07-07 | 2015-07-14 |  | 2015-07-02 | 2015-07-09 | 5d | 4d |  |  | 20h | 20 | 20 |
| 150 | 9.5.2.1 | Resolución Bugs | 5d | 2015-07-07 | 2015-07-14 | 140SS | 2015-07-02 | 2015-07-09 | 5d | 4d |  | SEII - Web [50%] | 20h | 20 | 20 |
| 151 | 9.6 | **Pruebas de Rendimiento** | 9d? | 2015-07-08 | 2015-07-21 |  | 2015-07-03 | 2015-07-16 | 9d? | 0d |  |  | 72h | 72 | 72 |
| 152 | 9.6.1 | Creación de Scripts (Flujo: 6WS) | 4.5d? | 2015-07-08 | 2015-07-14 | 153SF | 2015-07-03 | 2015-07-09 | 4.5d? | 4.5d |  | QAII | 36h | 36 | 36 |
| 153 | 9.6.2 | **Ejecución de Pruebas** | 3d | 2015-07-14 | 2015-07-17 | 138 | 2015-07-09 | 2015-07-14 | 3d | 0d |  |  | 24h | 24 | 24 |
| 154 | 9.6.2.1 | Preparación del Ambiente | 1d | 2015-07-14 | 2015-07-15 |  | 2015-07-09 | 2015-07-10 | 1d | 0d |  | QAII | 8h | 8 | 8 |
| 155 | 9.6.2.2 | Prueba de Ambiente | 0.5d | 2015-07-15 | 2015-07-16 | 154 | 2015-07-10 | 2015-07-13 | 0.5d | 0d |  | QAII | 4h | 4 | 4 |
| 156 | 9.6.2.3 | Ejecución prueba de carga | 1.5d | 2015-07-16 | 2015-07-17 | 155 | 2015-07-13 | 2015-07-14 | 1.5d | 0d |  | QAII | 12h | 12 | 12 |
| 157 | 9.6.3 | **Documentación** | 1.5d | 2015-07-17 | 2015-07-21 | 153 | 2015-07-14 | 2015-07-16 | 1.5d | 0d |  |  | 12h | 12 | 12 |
| 158 | 9.6.3.1 | Parsing Logs | 0.5d | 2015-07-17 | 2015-07-20 |  | 2015-07-14 | 2015-07-15 | 0.5d | 0d |  | QAII | 4h | 4 | 4 |
| 159 | 9.6.3.2 | Análisis y Notas Iniciales | 0.5d | 2015-07-20 | 2015-07-20 | 158 | 2015-07-15 | 2015-07-15 | 0.5d | 0d |  | QAII | 4h | 4 | 4 |
| 160 | 9.6.3.3 | Creación de documento de resultados | 0.5d | 2015-07-20 | 2015-07-21 | 159 | 2015-07-15 | 2015-07-16 | 0.5d | 0d |  | QAII | 4h | 4 | 4 |
| 161 | 10 | **Documentación** | 4d | 2015-07-14 | 2015-07-20 | 146 | 2015-07-09 | 2015-07-15 | 4d | 4d |  |  | 32h | 32 | 32 |
| 162 | 10.1 | Manual de instalación | 2d | 2015-07-14 | 2015-07-16 |  | 2015-07-09 | 2015-07-13 | 2d | 4d | 0d | SEII - Web [50%]; SEII - Mobile [50%] | 16h | 16 | 16 |
| 163 | 10.2 | Manual de usuario | 2d | 2015-07-16 | 2015-07-20 | 162 | 2015-07-13 | 2015-07-15 | 2d | 4d |  | SEII - Web [50%]; SEII - Mobile [50%] | 16h | 16 | 16 |
| 164 | 11 | **Generación de Binarios** | 0.5d | 2015-07-21 | 2015-07-21 | 120 | 2015-07-16 | 2015-07-16 | 0.5d | 0d |  |  | 6h | 6 | 6 |
| 165 | 11.1 | Portal Web / Web Services | 0.25d | 2015-07-21 | 2015-07-21 |  | 2015-07-16 | 2015-07-16 | 0.25d | 0.25d |  | SEII - Web | 2h | 2 | 2 |
| 166 | 11.2 | Aplicaciones Moviles (iOS, Android, Windows Phone) | 0.5d | 2015-07-21 | 2015-07-21 |  | 2015-07-16 | 2015-07-16 | 0.5d | 0d |  | SEII - Mobile | 4h | 4 | 4 |
| 167 | 12 | **Despliegue** | 3d | 2015-07-21 | 2015-07-24 | 164 | 2015-07-16 | 2015-07-21 | 3d | 0d |  |  | 24h | 24 | 24 |
| 168 | 12.1 | Publicacion / Ejecución despliegue en Ambiente UAT YANBAL | 2d | 2015-07-21 | 2015-07-23 |  | 2015-07-16 | 2015-07-20 | 2d | 0d |  | SEII - Web | 16h | 16 | 16 |
| 169 | 12.2 | Publicación / Ejecución despliegue en Ambiente Producción YANBAL | 1d | 2015-07-23 | 2015-07-24 | 168 | 2015-07-20 | 2015-07-21 | 1d | 0d |  | SEII - Web | 8h | 8 | 8 |
