# Yanbal PhoneGap - Web

Schedule from MS Project, 2015-04-14 to 2015-07-31, status date 2008-01-09, costs in $, A marks actual dates.
Avantica Technologies

## Calendars

- Standard: Mon-Fri 08:00-12:00, 13:00-17:00; Sat-Sun off. Exceptions (off unless hours are given): 2015-05-01 (Dia del Trabajo), 2015-06-29 (Día de San Pedro y San Pablo), 2015-07-28 to 2015-07-29 (Fiestas Patrias).

## Resources

| Resource | Rate |
| --- | --- |
| QAII | 1 |
| PM | 1 |
| UX | 1 |
| SEII - Mobile | 1 |
| SEII - Web | 1 |
| QAI - 1 | 1 |
| QAI - 2 | 1 |
| Tester - 1 | 1 |
| Tester - 2 | 1 |
| Yanbal | 1 |

## Schedule

| ID | WBS | Task | Type | Duration | Start | Finish | Predecessors | Complete | Remaining | Baseline start | Baseline finish | Baseline duration | Total slack | Free slack | Constraint | Resources | Work | Actual work | Cost | Baseline cost | Actual cost |
| --- | --- | --- | --- | --- | --- | --- | --- | --- | --- | --- | --- | --- | --- | --- | --- | --- | --- | --- | --- | --- | --- |
| 1 | 1 | Gestión del Proyecto |  | 75d | 2015-04-14 08:00 A | 2015-07-31 17:00 |  | 28% | 53.75d | 2015-04-14 08:00 | 2015-07-21 17:00 | 69d | 0d |  |  | PM [40%] | 240h | 68h | 240 | 138 | 68 |
| 2 | 2 | Sesión de Inicio de Proyecto (KickOff) |  | 4h | 2015-04-14 08:00 A | 2015-04-14 12:00 A |  | 100% |  | 2015-04-14 08:00 | 2015-04-14 12:00 | 4h |  |  |  | SEII - Mobile; SEII - Web | 8h | 8h | 8 | 8 | 8 |
| 3 | 3 | **Análisis** |  | 15.5d? | 2015-04-14 13:00 A | 2015-05-06 17:00 | 2 | 93% | 1.05d? | 2015-04-14 13:00 | 2015-04-23 10:00 | 6.75d | 1d |  |  |  | 216h | 200h | 216 | 108 | 200 |
| 4 | 3.1 | Reuniones (124) |  | 2d | 2015-04-14 13:00 A | 2015-04-16 12:00 A |  | 100% |  | 2015-04-14 13:00 | 2015-04-16 12:00 | 2d |  |  |  | SEII - Mobile; SEII - Web | 32h | 32h | 32 | 32 | 32 |
| 5 | 3.2 | Especificación de requerimientos funcionales (125) |  | 1d | 2015-04-16 13:00 A | 2015-04-17 12:00 A | 4 | 100% |  | 2015-04-16 13:00 | 2015-04-16 17:00 | 0.5d |  |  |  | SEII - Mobile; SEII - Web | 16h | 16h | 16 | 8 | 16 |
| 6 | 3.3 | Creación de Wireframes (126) |  | 2.5d | 2015-04-17 13:00 A | 2015-04-21 17:00 A | 5 | 100% |  | 2015-04-17 08:00 | 2015-04-20 17:00 | 2d |  |  |  | SEII - Mobile; SEII - Web | 40h | 40h | 40 | 32 | 40 |
| 7 | 3.4 | Especificación de casos de uso (127) |  | 5d | 2015-04-21 13:00 A | 2015-04-28 12:00 A | 6 | 100% |  | 2015-04-21 08:00 | 2015-04-22 17:00 | 2d |  |  |  | SEII - Mobile; SEII - Web | 80h | 80h | 80 | 32 | 80 |
| 8 | 3.5 | Matriz de trazabilidad: requerimientos / casos de uso (128) |  | 0.25d | 2015-04-28 13:00 A | 2015-04-28 15:00 A | 7 | 100% |  | 2015-04-23 08:00 | 2015-04-23 10:00 | 0.25d |  |  |  | SEII - Mobile; SEII - Web | 4h | 4h | 4 | 4 | 4 |
| 9 | 3.6 | Aprobación Yanbal |  | 2.5d? | 2015-04-30 08:00 A | 2015-05-05 12:00 A | 8 | 100% |  |  |  |  |  |  |  | Yanbal | 20h | 20h | 20 |  | 20 |
| 10 | 3.7 | Modificación de documentos |  | 1.5d? | 2015-05-05 13:00 A | 2015-05-06 17:00 | 9 | 33% | 1d? |  |  |  | 1d | 0.25d |  | SEII - Mobile; SEII - Web | 24h | 8h | 24 |  | 8 |
| 11 | 4 | **Diseño Técnico** |  | 13.25d? | 2015-04-30 08:00 A | 2015-05-20 10:00 |  | 19% | 10.73d? | 2015-04-23 10:00 | 2015-05-06 10:00 | 8d | 0d |  |  |  | 152h | 32h | 152 | 128 | 32 |
| 12 | 4.1 | Catalogo de servicios web a crear / consumir (137) |  | 1.5d | 2015-04-30 08:00 A | 2015-05-04 12:00 | 9SS | 83% | 0.25d | 2015-05-04 10:00 | 2015-05-06 10:00 | 2d | 3.5d | 2.75d |  | SEII - Mobile; SEII - Web | 24h | 20h | 24 | 32 | 20 |
| 13 | 4.2 | Reuniones (129) |  | 1d | 2015-05-07 10:00 A | 2015-05-08 10:00 | 12, 10 | 25% | 0.75d | 2015-04-23 10:00 | 2015-04-24 10:00 | 1d | 0.5d | 0d |  | SEII - Mobile; SEII - Web | 16h | 4h | 16 | 16 | 4 |
| 14 | 4.3 | Definir estándares de desarrollo (130) |  | 0.5d | 2015-05-08 10:00 A | 2015-05-08 15:00 | 13 | 50% | 0.25d | 2015-04-24 10:00 | 2015-04-24 15:00 | 0.5d | 0.25d | 0d |  | SEII - Mobile; SEII - Web | 8h | 4h | 8 | 8 | 4 |
| 15 | 4.4 | Requerimientos no funcionales (131) |  | 0.5d | 2015-05-08 15:00 A | 2015-05-11 10:00 | 14 | 25% | 0.38d | 2015-04-24 15:00 | 2015-04-27 10:00 | 0.5d | 0.12d | 0d |  | SEII - Mobile; SEII - Web | 8h | 2h | 8 | 8 | 2 |
| 16 | 4.5 | Diagrama de Componentes (132) |  | 0.25d | 2015-05-11 10:00 A | 2015-05-11 12:00 | 15 | 50% | 0.12d | 2015-04-27 10:00 | 2015-04-27 12:00 | 0.25d | 0d |  |  | SEII - Mobile; SEII - Web | 4h | 2h | 4 | 4 | 2 |
| 17 | 4.6 | Diagrama de Paquetes (133) |  | 0.5d | 2015-05-11 13:00 | 2015-05-11 17:00 | 16 |  |  | 2015-04-27 13:00 | 2015-04-27 17:00 | 0.5d | 0d |  |  | SEII - Mobile; SEII - Web | 8h |  | 8 | 8 |  |
| 18 | 4.7 | Diagrama de Despliegue (134) |  | 0.25d | 2015-05-12 08:00 | 2015-05-12 10:00 | 17 |  |  | 2015-04-28 08:00 | 2015-04-28 10:00 | 0.25d | 0d |  |  | SEII - Mobile; SEII - Web | 4h |  | 4 | 4 |  |
| 19 | 4.8 | Diagrama de Clases (135) |  | 2d | 2015-05-12 10:00 | 2015-05-14 10:00 | 18 |  |  | 2015-04-28 10:00 | 2015-04-30 10:00 | 2d | 0d |  |  | SEII - Mobile; SEII - Web | 32h |  | 32 | 32 |  |
| 20 | 4.9 | Diseño de base de datos (136) |  | 1d | 2015-05-14 10:00 | 2015-05-15 10:00 | 19 |  |  | 2015-04-30 10:00 | 2015-05-04 10:00 | 1d | 0d |  |  | SEII - Mobile; SEII - Web | 16h |  | 16 | 16 |  |
| 21 | 4.10 | Aprobación Yanbal |  | 2d? | 2015-05-15 10:00 | 2015-05-19 10:00 | 20 |  |  |  |  |  | 0d |  |  | Yanbal | 16h |  | 16 |  |  |
| 22 | 4.11 | Modificación de documentos |  | 1d? | 2015-05-19 10:00 | 2015-05-20 10:00 | 21 |  |  |  |  |  | 0d |  |  | SEII - Mobile; SEII - Web | 16h |  | 16 |  |  |
| 23 | 5 | Disponibilidad UX | milestone | 0d | 2015-04-29 08:00 | 2015-04-29 08:00 |  |  |  |  |  |  | 54.5d | 0d | start no earlier than 2015-04-29 08:00 |  |  |  |  |  |  |
| 24 | 6 | **Diseño Gráfico** |  | 15d? | 2015-04-29 08:00 A | 2015-05-20 17:00 | 23 | 20% | 12d? | 2015-04-21 08:00 | 2015-05-18 10:00 | 18.25d | 49d |  |  |  | 120h | 24h | 120 | 146 | 24 |
| 25 | 6.1 | **Preparación de propuesta** |  | 7.25d | 2015-04-29 08:00 A | 2015-05-11 10:00 |  | 41% | 4.25d | 2015-04-21 08:00 | 2015-04-30 10:00 | 7.25d | 12d | 0d |  |  | 58h | 24h | 58 | 58 | 24 |
| 26 | 6.1.1 | Reuniones con el cliente (información inicial) |  | 0.75d | 2015-04-29 08:00 A | 2015-04-29 15:00 |  | 67% | 0.25d | 2015-04-21 08:00 | 2015-04-21 15:00 | 0.75d | 14.5d | 0d |  | UX | 6h | 4h | 6 | 6 | 4 |
| 27 | 6.1.2 | Elaboración de propuesta grafica (2 Pág. Maestras) Móvil |  | 2.5d | 2015-04-29 15:00 A | 2015-05-05 10:00 | 26 | 80% | 0.5d | 2015-04-21 15:00 | 2015-04-24 10:00 | 2.5d | 12.5d | 0d |  | UX | 20h | 16h | 20 | 20 | 16 |
| 28 | 6.1.3 | Elaboración de propuesta grafica (2 Pág. Maestras) Web |  | 2.25d | 2015-05-05 10:00 A | 2015-05-07 12:00 | 27 | 22% | 1.75d | 2015-04-24 10:00 | 2015-04-28 12:00 | 2.25d | 12d | 0d |  | UX | 18h | 4h | 18 | 18 | 4 |
| 29 | 6.1.4 | Elaboración de assets y cortes de imágenes |  | 1.75d | 2015-05-07 13:00 | 2015-05-11 10:00 | 28 |  |  | 2015-04-28 13:00 | 2015-04-30 10:00 | 1.75d | 12d |  |  | UX | 14h |  | 14 | 14 |  |

| ID | WBS | Task | Duration | Start | Finish | Predecessors | Complete | Remaining | Baseline start | Baseline finish | Baseline duration | Total slack | Free slack | Resources | Work | Actual work | Cost | Baseline cost | Actual cost |
| --- | --- | --- | --- | --- | --- | --- | --- | --- | --- | --- | --- | --- | --- | --- | --- | --- | --- | --- | --- |
| 30 | 6.2 | **Preparación de maquetas y assets** | 7.75d? | 2015-05-11 10:00 | 2015-05-20 17:00 | 25 |  |  | 2015-04-30 10:00 | 2015-05-18 10:00 | 11d | 49d |  |  | 62h |  | 62 | 88 |  |
| 31 | 6.2.1 | **Kiosko Móvil** | 3d? | 2015-05-11 10:00 | 2015-05-14 10:00 |  |  |  | 2015-05-13 10:00 | 2015-05-18 10:00 | 3d | 49d | 0d |  | 24h |  | 24 | 24 |  |
| 32 | 6.2.1.1 | Login | 0.5d | 2015-05-11 10:00 | 2015-05-11 15:00 |  |  |  | 2015-05-13 10:00 | 2015-05-13 17:00 | 0.75d | 49d | 0d | UX | 4h |  | 4 | 6 |  |
| 33 | 6.2.1.2 | Página Principal | 0.5d | 2015-05-11 15:00 | 2015-05-12 10:00 | 32 |  |  | 2015-05-14 08:00 | 2015-05-14 15:00 | 0.75d | 49d | 0d | UX | 4h |  | 4 | 6 |  |
| 34 | 6.2.1.3 | Ver Colección | 0.5d | 2015-05-12 10:00 | 2015-05-12 15:00 | 33 |  |  | 2015-05-14 15:00 | 2015-05-15 12:00 | 0.75d | 49d | 0d | UX | 4h |  | 4 | 6 |  |
| 35 | 6.2.1.4 | Notificaciones | 0.5d | 2015-05-12 15:00 | 2015-05-13 10:00 | 34 |  |  | 2015-05-15 13:00 | 2015-05-18 10:00 | 0.75d | 49d | 0d | UX | 4h |  | 4 | 6 |  |
| 36 | 6.2.1.5 | Configuración | 0.5d? | 2015-05-13 10:00 | 2015-05-13 15:00 | 35 |  |  |  |  |  | 49d | 0d | UX | 4h |  | 4 |  |  |
| 37 | 6.2.1.6 | Ver/Descargar/Eliminar Archivo | 0.5d? | 2015-05-13 15:00 | 2015-05-14 10:00 | 36 |  |  |  |  |  | 49d |  | UX | 4h |  | 4 |  |  |
| 38 | 6.2.2 | **Kisoko Web** | 4.75d? | 2015-05-14 10:00 | 2015-05-20 17:00 | 31 |  |  | 2015-04-30 10:00 | 2015-05-13 10:00 | 8d | 49d |  |  | 38h |  | 38 | 64 |  |
| 39 | 6.2.2.1 | Login | 0.75d | 2015-05-14 10:00 | 2015-05-14 17:00 |  |  |  | 2015-04-30 10:00 | 2015-05-04 10:00 | 1d | 49d | 0d | UX | 6h |  | 6 | 8 |  |
| 40 | 6.2.2.2 | Pantalla Principal | 0.5d? | 2015-05-15 08:00 | 2015-05-15 12:00 | 39 |  |  |  |  |  | 49d | 0d | UX | 4h |  | 4 |  |  |
| 41 | 6.2.2.3 | Administración de Colecciones | 1d | 2015-05-15 13:00 | 2015-05-18 12:00 | 40 |  |  | 2015-05-08 10:00 | 2015-05-08 17:00 | 0.75d | 49d | 0d | UX | 8h |  | 8 | 6 |  |
| 42 | 6.2.2.4 | Crear/Editar Colecciones | 0.5d? | 2015-05-18 13:00 | 2015-05-18 17:00 | 41 |  |  |  |  |  | 49d | 0d | UX | 4h |  | 4 |  |  |
| 43 | 6.2.2.5 | Cargar Archivos | 0.5d? | 2015-05-19 08:00 | 2015-05-19 12:00 | 42 |  |  |  |  |  | 49d | 0d | UX | 4h |  | 4 |  |  |
| 44 | 6.2.2.6 | Publicar Archivos | 0.5d? | 2015-05-19 13:00 | 2015-05-19 17:00 | 43 |  |  |  |  |  | 49d | 0d | UX | 4h |  | 4 |  |  |
| 45 | 6.2.2.7 | Mover Archivos | 0.5d? | 2015-05-20 08:00 | 2015-05-20 12:00 | 44 |  |  |  |  |  | 49d | 0d | UX | 4h |  | 4 |  |  |
| 46 | 6.2.2.8 | Configuración de límites de carga y descarga | 0.5d | 2015-05-20 13:00 | 2015-05-20 17:00 | 45 |  |  | 2015-05-11 08:00 | 2015-05-11 15:00 | 0.75d | 49d |  | UX | 4h |  | 4 | 6 |  |
| 47 | 7 | **Configuración del Ambiente de Trabajo** | 3d | 2015-05-15 10:00 A | 2015-05-20 10:00 | 21SS | 57% | 1.29d | 2015-05-06 10:00 | 2015-05-07 15:00 | 1.5d | 0d |  |  | 56h | 32h | 56 | 24 | 32 |
| 48 | 7.1 | Configurar ambientes de desarrollo (personal y virtual) | 2.5d | 2015-05-15 10:00 A | 2015-05-19 15:00 |  | 60% | 1d | 2015-05-06 10:00 | 2015-05-07 10:00 | 1d | 0d |  | SEII - Web; SEII - Mobile | 40h | 24h | 40 | 16 | 24 |
| 49 | 7.2 | Configurar integración continua | 1d | 2015-05-18 10:00 A | 2015-05-20 10:00 | 48 | 50% | 0.5d | 2015-05-07 10:00 | 2015-05-07 15:00 | 0.5d | 0d |  | SEII - Web; SEII - Mobile | 16h | 8h | 16 | 8 | 8 |
| 50 | 8 | **Desarrollo** | 32.75d? | 2015-05-20 10:00 | 2015-07-06 17:00 | 11 |  |  | 2015-05-06 10:00 | 2015-07-02 15:00 | 40.5d? | 0d |  |  | 460h |  | 460 | 548 |  |
| 51 | 8.1 | **HTML** | 9d? | 2015-05-20 10:00 | 2015-06-02 10:00 | 25, 47 |  |  | 2015-05-07 15:00 | 2015-05-13 15:00 | 4d? | 5d | 0d |  | 72h |  | 72 | 32 |  |
| 52 | 8.1.1 | **Estructura base HTML** | 2d? | 2015-05-20 10:00 | 2015-05-22 10:00 |  |  |  |  |  |  | 5d | 0d |  | 16h |  | 16 |  |  |
| 53 | 8.1.1.1 | Móvil | 1d? | 2015-05-20 10:00 | 2015-05-21 10:00 |  |  |  |  |  |  | 5d | 0d | SEII - Mobile | 8h |  | 8 |  |  |
| 54 | 8.1.1.2 | Web | 1d? | 2015-05-21 10:00 | 2015-05-22 10:00 | 53 |  |  |  |  |  | 5d |  | SEII - Mobile | 8h |  | 8 |  |  |

Notes:
- 31: Considerar cómo se va a ver en smartphones y tablets.

| ID | WBS | Task | Duration | Start | Finish | Predecessors | Baseline start | Baseline finish | Baseline duration | Total slack | Free slack | Resources | Work | Cost | Baseline cost |
| --- | --- | --- | --- | --- | --- | --- | --- | --- | --- | --- | --- | --- | --- | --- | --- |
| 55 | 8.1.2 | **Páginas Móvil** | 3d? | 2015-05-22 10:00 | 2015-05-27 10:00 | 52 |  |  |  | 5d | 0d |  | 24h | 24 |  |
| 56 | 8.1.2.1 | Inicio Session | 0.38d? | 2015-05-22 10:00 | 2015-05-22 14:00 |  |  |  |  | 5d | 0d | SEII - Mobile | 3h | 3 |  |
| 57 | 8.1.2.2 | Pagina Principal | 0.38d? | 2015-05-22 14:00 | 2015-05-22 17:00 | 56 |  |  |  | 5d | 0d | SEII - Mobile | 3h | 3 |  |
| 58 | 8.1.2.3 | Coleccion seleccionada | 0.12d? | 2015-05-25 08:00 | 2015-05-25 09:00 | 57 |  |  |  | 8d | 0d | SEII - Mobile | 1h | 1 |  |
| 59 | 8.1.2.4 | Opciones del archivo | 0.25d? | 2015-05-25 09:00 | 2015-05-25 11:00 | 58 |  |  |  | 5d | 0d | SEII - Mobile | 2h | 2 |  |
| 60 | 8.1.2.5 | Página de configuración | 0.12d? | 2015-05-25 11:00 | 2015-05-25 12:00 | 59 |  |  |  | 5d | 0d | SEII - Mobile | 1h | 1 |  |
| 61 | 8.1.2.6 | Panel de notificaciones | 0.75d? | 2015-05-25 13:00 | 2015-05-26 10:00 | 60 |  |  |  | 8d | 0d | SEII - Mobile | 6h | 6 |  |
| 62 | 8.1.2.7 | Sincronización | 0.5d? | 2015-05-26 10:00 | 2015-05-26 15:00 | 61 |  |  |  | 5d | 0d | SEII - Mobile | 4h | 4 |  |
| 63 | 8.1.2.8 | Revisión/Corrección con UX | 0.5d? | 2015-05-26 15:00 | 2015-05-27 10:00 | 62 |  |  |  | 5d |  | SEII - Mobile | 4h | 4 |  |
| 64 | 8.1.3 | **Páginas Web** | 4d? | 2015-05-27 10:00 | 2015-06-02 10:00 | 55 |  |  |  | 5d |  |  | 32h | 32 |  |
| 65 | 8.1.3.1 | Página Principal | 0.5d? | 2015-05-27 10:00 | 2015-05-27 15:00 |  |  |  |  | 5d | 0d | SEII - Mobile | 4h | 4 |  |
| 66 | 8.1.3.2 | Inicio Session | 0.5d? | 2015-05-27 15:00 | 2015-05-28 10:00 | 65 |  |  |  | 5d | 0d | SEII - Mobile | 4h | 4 |  |
| 67 | 8.1.3.3 | Mantener Colecciones | 1.5d? | 2015-05-28 10:00 | 2015-05-29 15:00 | 66 |  |  |  | 5d | 0d | SEII - Mobile | 12h | 12 |  |
| 68 | 8.1.3.4 | Configurar limite de descarga | 0.5d? | 2015-05-29 15:00 | 2015-06-01 10:00 | 67 |  |  |  | 5d | 0d | SEII - Mobile | 4h | 4 |  |
| 69 | 8.1.3.5 | Revisión/Corrección con UX | 1d? | 2015-06-01 10:00 | 2015-06-02 10:00 | 68 |  |  |  | 5d |  | SEII - Mobile | 8h | 8 |  |
| 70 | 8.2 | **PhoneGap** | 15.75d? | 2015-06-02 10:00 | 2015-06-23 17:00 | 51 | 2015-05-13 15:00 | 2015-06-12 10:00 | 21.5d? | 8d |  |  | 126h | 126 | 172 |
| 71 | 8.2.1 | Creación proyecto base | 1d? | 2015-06-02 10:00 | 2015-06-03 10:00 |  |  |  |  | 8d | 0d | SEII - Mobile | 8h | 8 |  |
| 72 | 8.2.2 | Revisión de pares | 0.75d? | 2015-06-03 10:00 | 2015-06-03 17:00 | 71 |  |  |  | 8d | 0d | SEII - Mobile | 6h | 6 |  |
| 73 | 8.2.3 | Creación archivo de propiedades | 0.75d? | 2015-06-04 08:00 | 2015-06-04 15:00 | 72 |  |  |  | 11d | 0d | SEII - Mobile | 6h | 6 |  |
| 74 | 8.2.4 | Listener para eventos Back | 1.5d? | 2015-06-04 15:00 | 2015-06-08 10:00 | 73 | 2015-05-13 15:00 | 2015-05-14 10:00 | 0.5d? | 8d | 0d | SEII - Mobile | 12h | 12 | 4 |
| 75 | 8.2.5 | **CUM-001: Autenticar usuario** | 1d? | 2015-06-08 10:00 | 2015-06-09 10:00 | 74 |  |  |  | 8d | 0d |  | 8h | 8 |  |
| 76 | 8.2.5.1 | Consumir servicio | 0.25d? | 2015-06-08 10:00 | 2015-06-08 12:00 |  |  |  |  | 8d | 0d | SEII - Mobile | 2h | 2 |  |
| 77 | 8.2.5.2 | Crear token | 0.25d? | 2015-06-08 13:00 | 2015-06-08 15:00 | 76 |  |  |  | 11d | 0d | SEII - Mobile | 2h | 2 |  |
| 78 | 8.2.5.3 | Guardar sesión | 0.5d? | 2015-06-08 15:00 | 2015-06-09 10:00 | 77 |  |  |  | 8d |  | SEII - Mobile | 4h | 4 |  |

Notes:
- 74: Incluye envío de datos cuando haya internet. / Considerar caso en que se muere la app.

| ID | WBS | Task | Duration | Start | Finish | Predecessors | Total slack | Free slack | Resources | Work | Cost |
| --- | --- | --- | --- | --- | --- | --- | --- | --- | --- | --- | --- |
| 79 | 8.2.6 | **CUM-002: Sincronizar Contenido y CUM-006: Mostrar notificación** | 3.75d? | 2015-06-09 10:00 | 2015-06-12 17:00 | 75 | 8d | 0d |  | 30h | 30 |
| 80 | 8.2.6.1 | Consumir servicio (sincronización al inicio y a demanda) | 0.5d? | 2015-06-09 10:00 | 2015-06-09 15:00 |  | 8d | 0d | SEII - Mobile | 4h | 4 |
| 81 | 8.2.6.2 | Guardar datos en cache | 0.75d? | 2015-06-09 15:00 | 2015-06-10 12:00 | 80 | 8d | 0d | SEII - Mobile | 6h | 6 |
| 82 | 8.2.6.3 | Actualizar panel de notificacion | 0.5d? | 2015-06-10 13:00 | 2015-06-10 17:00 | 81 | 11d | 0d | SEII - Mobile | 4h | 4 |
| 83 | 8.2.6.4 | Actualizar panel de configuración (ultima sync y cant max descarga) | 0.25d? | 2015-06-11 08:00 | 2015-06-11 10:00 | 82 | 11d | 0d | SEII - Mobile | 2h | 2 |
| 84 | 8.2.6.5 | Actualizar panel de notificacion para eliminar visto | 0.5d? | 2015-06-11 10:00 | 2015-06-11 15:00 | 83 | 8d | 0d | SEII - Mobile | 4h | 4 |
| 85 | 8.2.6.6 | Configuración para notificaciones push (panel nativo) | 1d? | 2015-06-11 15:00 | 2015-06-12 15:00 | 84 | 8d | 0d | SEII - Mobile | 8h | 8 |
| 86 | 8.2.6.7 | Mensaje confirmación éxito/error sincronización por conexión de internet | 0.25d? | 2015-06-12 15:00 | 2015-06-12 17:00 | 85 | 8d |  | SEII - Mobile | 2h | 2 |
| 87 | 8.2.7 | **CUM-003: Visualizar Contenido** | 2.25d? | 2015-06-15 08:00 | 2015-06-17 10:00 | 79 | 8d | 0d |  | 18h | 18 |
| 88 | 8.2.7.1 | Consumir servicio | 0.5d? | 2015-06-15 08:00 | 2015-06-15 12:00 |  | 11d | 0d | SEII - Mobile | 4h | 4 |
| 89 | 8.2.7.2 | Manejo de nagevabilidad | 0.5d? | 2015-06-15 13:00 | 2015-06-15 17:00 | 88 | 11d | 0d | SEII - Mobile | 4h | 4 |
| 90 | 8.2.7.3 | Ver archivo | 1d? | 2015-06-16 08:00 | 2015-06-16 17:00 | 89 | 11d | 0d | SEII - Mobile | 8h | 8 |
| 91 | 8.2.7.4 | Mostrar mensaje de confirmación para descargar con red movil (validacion peso máximo) | 0.25d? | 2015-06-17 08:00 | 2015-06-17 10:00 | 90 | 11d |  | SEII - Mobile | 2h | 2 |
| 92 | 8.2.8 | **CUM-004: Descargar Archivo** | 0.75d? | 2015-06-17 10:00 | 2015-06-17 17:00 | 87 | 8d | 0d |  | 6h | 6 |
| 93 | 8.2.8.1 | Consumir servicio | 0.25d? | 2015-06-17 10:00 | 2015-06-17 12:00 |  | 8d | 0d | SEII - Mobile | 2h | 2 |
| 94 | 8.2.8.2 | Marcar contenido como descargado | 0.25d? | 2015-06-17 13:00 | 2015-06-17 15:00 | 93 | 11d | 0d | SEII - Mobile | 2h | 2 |
| 95 | 8.2.8.3 | Mostrar mensaje de confirmación para descargar con red movil (validacion peso máximo) | 0.25d? | 2015-06-17 15:00 | 2015-06-17 17:00 | 94 | 8d |  | SEII - Mobile | 2h | 2 |
| 96 | 8.2.9 | **CUM-005: Eliminar Archivos** | 1d? | 2015-06-18 08:00 | 2015-06-18 17:00 | 92 | 8d | 0d |  | 8h | 8 |
| 97 | 8.2.9.1 | Consumir servicio | 0.5d? | 2015-06-18 08:00 | 2015-06-18 12:00 |  | 11d | 0d | SEII - Mobile | 4h | 4 |
| 98 | 8.2.9.2 | Guardar datos en cache | 0.5d? | 2015-06-18 13:00 | 2015-06-18 17:00 | 97 | 11d |  | SEII - Mobile | 4h | 4 |
| 99 | 8.2.10 | **CUM-007: Enviar métricas** | 1d? | 2015-06-19 08:00 | 2015-06-19 17:00 | 96 | 8d | 0d |  | 8h | 8 |
| 100 | 8.2.10.1 | Enviar parametro de log en los servicios | 0.5d? | 2015-06-19 08:00 | 2015-06-19 12:00 |  | 11d | 0d | SEII - Mobile | 4h | 4 |
| 101 | 8.2.10.2 | Colocar url de google analytics en las acciones | 0.5d? | 2015-06-19 13:00 | 2015-06-19 17:00 | 100 | 11d |  | SEII - Mobile | 4h | 4 |
| 102 | 8.2.11 | **CUM-008: Permitir uso de red móvil en descarga** | 0.5d? | 2015-06-22 08:00 | 2015-06-22 12:00 | 99 | 8d | 0d |  | 4h | 4 |
| 103 | 8.2.11.1 | Grabar en cache | 0.5d? | 2015-06-22 08:00 | 2015-06-22 12:00 |  | 11d |  | SEII - Mobile | 4h | 4 |
| 104 | 8.2.12 | Pruebas desarrollador | 1d? | 2015-06-22 13:00 | 2015-06-23 12:00 | 102 | 11d | 0d | SEII - Mobile | 8h | 8 |
| 105 | 8.2.13 | Revisión de pares | 0.5d? | 2015-06-23 13:00 | 2015-06-23 17:00 | 104 | 11d |  | SEII - Mobile | 4h | 4 |

| ID | WBS | Task | Duration | Start | Finish | Predecessors | Baseline start | Baseline finish | Baseline duration | Total slack | Resources | Work | Cost | Baseline cost |
| --- | --- | --- | --- | --- | --- | --- | --- | --- | --- | --- | --- | --- | --- | --- |
| 106 | 8.3 | **Web Services** | 14d? | 2015-05-20 10:00 | 2015-06-09 10:00 | 47 | 2015-05-07 15:00 | 2015-06-10 15:00 | 24d? | 0d |  | 112h | 112 | 192 |
| 107 | 8.3.1 | Reuniones | 1d? | 2015-05-20 10:00 | 2015-05-21 10:00 |  | 2015-05-07 15:00 | 2015-05-11 15:00 | 2d? | 0d | SEII - Web | 8h | 8 | 16 |
| 108 | 8.3.2 | Creación servicio web y estructura base | 1.5d | 2015-05-21 10:00 | 2015-05-22 15:00 | 107 | 2015-05-11 15:00 | 2015-05-13 15:00 | 2d | 0d | SEII - Web | 12h | 12 | 16 |
| 109 | 8.3.3 | Implementación log (bitácora) | 1.5d | 2015-05-22 15:00 | 2015-05-26 10:00 | 108 | 2015-05-13 15:00 | 2015-05-18 15:00 | 3d | 0d | SEII - Web | 12h | 12 | 24 |
| 110 | 8.3.4 | Implementación utilitarios base (parseo, conversión) | 1.5d | 2015-05-26 10:00 | 2015-05-27 15:00 | 109 | 2015-05-18 15:00 | 2015-05-20 15:00 | 2d | 0d | SEII - Web | 12h | 12 | 16 |
| 111 | 8.3.5 | Seguridad (SSL) | 1d? | 2015-05-27 15:00 | 2015-05-28 15:00 | 110 | 2015-05-20 15:00 | 2015-05-22 15:00 | 2d? | 0d | SEII - Web | 8h | 8 | 16 |
| 112 | 8.3.6 | Autenticar usuario movil | 1d | 2015-05-28 15:00 | 2015-05-29 15:00 | 111 | 2015-05-22 15:00 | 2015-05-25 15:00 | 1d | 0d | SEII - Web | 8h | 8 | 8 |
| 113 | 8.3.7 | ObtenerColeccionesContenido | 1d | 2015-05-29 15:00 | 2015-06-01 15:00 | 112 | 2015-05-25 15:00 | 2015-05-26 15:00 | 1d | 0d | SEII - Web | 8h | 8 | 8 |
| 114 | 8.3.8 | ObtenerArchivo | 1d | 2015-06-01 15:00 | 2015-06-02 15:00 | 113 | 2015-05-26 15:00 | 2015-05-27 12:00 | 0.75d | 0d | SEII - Web | 8h | 8 | 6 |
| 115 | 8.3.9 | ObtenerNotificaciones | 1d | 2015-06-02 15:00 | 2015-06-03 15:00 | 114 | 2015-05-27 13:00 | 2015-05-28 10:00 | 0.75d | 0d | SEII - Web | 8h | 8 | 6 |
| 116 | 8.3.10 | ActualizarNotificacion | 1d | 2015-06-03 15:00 | 2015-06-04 15:00 | 115 | 2015-05-28 10:00 | 2015-06-01 10:00 | 2d | 0d | SEII - Web | 8h | 8 | 16 |
| 117 | 8.3.11 | AutenticacionWeb | 1d | 2015-06-04 15:00 | 2015-06-05 15:00 | 116 | 2015-06-01 10:00 | 2015-06-02 10:00 | 1d | 0d | SEII - Web | 8h | 8 | 8 |
| 118 | 8.3.12 | Pruebas de desarrollador | 0.5d | 2015-06-05 15:00 | 2015-06-08 10:00 | 117 | 2015-06-02 10:00 | 2015-06-03 10:00 | 1d | 0d | SEII - Web | 4h | 4 | 8 |
| 119 | 8.3.13 | Revisión de pares | 0.5d | 2015-06-08 10:00 | 2015-06-08 15:00 | 118 | 2015-06-03 10:00 | 2015-06-04 10:00 | 1d | 0d | SEII - Web | 4h | 4 | 8 |
| 120 | 8.3.14 | Actualizar documentación de servicios | 0.5d? | 2015-06-08 15:00 | 2015-06-09 10:00 | 119 | 2015-06-09 15:00 | 2015-06-10 15:00 | 1d? | 0d | SEII - Web | 4h | 4 | 8 |
| 121 | 8.4 | **Portal Web** | 18.75d? | 2015-06-09 10:00 | 2015-07-06 17:00 | 106, 51 | 2015-06-10 15:00 | 2015-07-02 15:00 | 15d? | 0d |  | 150h | 150 | 120 |
| 122 | 8.4.1 | Creación proyecto base | 1d | 2015-06-09 10:00 | 2015-06-10 10:00 |  | 2015-06-10 15:00 | 2015-06-11 15:00 | 1d | 0d | SEII - Web | 8h | 8 | 8 |
| 123 | 8.4.2 | **CUW-001: Iniciar sesión** | 1.5d | 2015-06-10 10:00 | 2015-06-11 15:00 | 122 | 2015-06-11 15:00 | 2015-06-12 10:00 | 0.5d | 0d |  | 12h | 12 | 4 |
| 124 | 8.4.2.1 | Consumir servicio Yanbal | 1d | 2015-06-10 10:00 | 2015-06-11 10:00 |  | 2015-06-12 10:00 | 2015-06-15 10:00 | 1d | 0d | SEII - Web | 8h | 8 | 8 |
| 125 | 8.4.2.2 | Validar Rol obtenido | 0.5d | 2015-06-11 10:00 | 2015-06-11 15:00 | 124 | 2015-06-15 10:00 | 2015-06-16 10:00 | 1d | 0d | SEII - Web | 4h | 4 | 8 |
| 126 | 8.4.3 | **CUW-002: Configurar tamaño de Carga y Descarga** | 1d? | 2015-06-11 15:00 | 2015-06-12 15:00 | 125, 123 | 2015-06-16 10:00 | 2015-06-18 10:00 | 2d | 0d |  | 8h | 8 | 16 |
| 127 | 8.4.3.1 | Listar Limites de Carga y Descarga | 0.5d | 2015-06-11 15:00 | 2015-06-12 10:00 |  | 2015-06-18 10:00 | 2015-06-19 10:00 | 1d | 0d | SEII - Web | 4h | 4 | 8 |
| 128 | 8.4.3.2 | Editar Limite Carga y Descarga | 0.5d? | 2015-06-12 10:00 | 2015-06-12 15:00 | 127 |  |  |  | 0d | SEII - Web | 4h | 4 |  |
| 129 | 8.4.4 | **CUW-003: Gestionar Colecciones** | 3.25d? | 2015-06-12 15:00 | 2015-06-17 17:00 | 126 |  |  |  | 0d |  | 26h | 26 |  |
| 130 | 8.4.4.1 | Listar Coleccion | 0.75d? | 2015-06-12 15:00 | 2015-06-15 12:00 |  |  |  |  | 0d | SEII - Web | 6h | 6 |  |
| 131 | 8.4.4.2 | Buscar Coleccion | 0.5d? | 2015-06-15 13:00 | 2015-06-15 17:00 | 130 |  |  |  | 0d | SEII - Web | 4h | 4 |  |
| 132 | 8.4.4.3 | Crear Coleccion | 0.75d? | 2015-06-16 08:00 | 2015-06-16 15:00 | 131 |  |  |  | 0d | SEII - Web | 6h | 6 |  |
| 133 | 8.4.4.4 | Editar Coleccion | 0.75d? | 2015-06-16 15:00 | 2015-06-17 12:00 | 132 |  |  |  | 0d | SEII - Web | 6h | 6 |  |
| 134 | 8.4.4.5 | Eliminar Coleccion | 0.5d? | 2015-06-17 13:00 | 2015-06-17 17:00 | 133 |  |  |  | 0d | SEII - Web | 4h | 4 |  |

| ID | WBS | Task | Duration | Start | Finish | Predecessors | Total slack | Free slack | Resources | Work | Cost |
| --- | --- | --- | --- | --- | --- | --- | --- | --- | --- | --- | --- |
| 135 | 8.4.5 | **CUW-004: Gestionar Archivos** | 3.75d? | 2015-06-18 08:00 | 2015-06-23 15:00 | 129 | 0d |  |  | 30h | 30 |
| 136 | 8.4.5.1 | Listar Archivo | 0.75d? | 2015-06-18 08:00 | 2015-06-18 15:00 |  | 0d |  | SEII - Web | 6h | 6 |
| 137 | 8.4.5.2 | Crear Archivo | 0.75d? | 2015-06-18 15:00 | 2015-06-19 12:00 | 136 | 0d |  | SEII - Web | 6h | 6 |
| 138 | 8.4.5.3 | Editar Archivo | 0.75d? | 2015-06-19 13:00 | 2015-06-22 10:00 | 137 | 0d |  | SEII - Web | 6h | 6 |
| 139 | 8.4.5.4 | Cargar Archivo | 0.5d? | 2015-06-22 10:00 | 2015-06-22 15:00 | 138 | 0d |  | SEII - Web | 4h | 4 |
| 140 | 8.4.5.5 | Validar limite de Carga de archivo | 0.25d? | 2015-06-22 15:00 | 2015-06-22 17:00 | 139 | 0d |  | SEII - Web | 2h | 2 |
| 141 | 8.4.5.6 | Eliminar Archivo | 0.75d? | 2015-06-23 08:00 | 2015-06-23 15:00 | 140 | 0d |  | SEII - Web | 6h | 6 |
| 142 | 8.4.6 | **CUW-005 Publicar Archivo** | 4.75d? | 2015-06-23 15:00 | 2015-07-01 12:00 | 135 | 0d |  |  | 38h | 38 |
| 143 | 8.4.6.1 | Listar Roles | 0.75d? | 2015-06-23 15:00 | 2015-06-24 12:00 |  | 0d |  | SEII - Web | 6h | 6 |
| 144 | 8.4.6.2 | Listar Pais | 0.5d? | 2015-06-24 13:00 | 2015-06-24 17:00 | 143 | 0d |  | SEII - Web | 4h | 4 |
| 145 | 8.4.6.3 | Remover Rol asignado | 0.5d? | 2015-06-25 08:00 | 2015-06-25 12:00 | 144 | 0d |  | SEII - Web | 4h | 4 |
| 146 | 8.4.6.4 | Guardar Publicacion | 1d? | 2015-06-25 13:00 | 2015-06-26 12:00 | 145 | 0d |  | SEII - Web | 8h | 8 |
| 147 | 8.4.6.5 | Enviar Push Notificaction a Servidores (Iphone, Android, WinPhone) | 2d? | 2015-06-26 13:00 | 2015-07-01 12:00 | 146 | 0d |  | SEII - Web | 16h | 16 |
| 148 | 8.4.7 | **CUW-006 Mover Archivos** | 1.25d? | 2015-07-01 13:00 | 2015-07-02 15:00 | 142 | 0d |  |  | 10h | 10 |
| 149 | 8.4.7.1 | Listar Coleccion | 0.75d? | 2015-07-01 13:00 | 2015-07-02 10:00 |  | 0d |  | SEII - Web | 6h | 6 |
| 150 | 8.4.7.2 | Mover Archivo | 0.5d? | 2015-07-02 10:00 | 2015-07-02 15:00 | 149 | 0d |  | SEII - Web | 4h | 4 |
| 151 | 8.4.8 | **CUW-007 Enviar Notificaciones** | 1d? | 2015-07-02 15:00 | 2015-07-03 15:00 | 148 | 0d |  |  | 8h | 8 |
| 152 | 8.4.8.1 | Registrar Notificacion por Archivo y usuario | 1d? | 2015-07-02 15:00 | 2015-07-03 15:00 |  | 0d |  | SEII - Web | 8h | 8 |
| 153 | 8.4.9 | Pruebas de desarrollador | 0.75d? | 2015-07-03 15:00 | 2015-07-06 12:00 | 151 | 0d |  | SEII - Web | 6h | 6 |
| 154 | 8.4.10 | Revisión de pares | 0.5d? | 2015-07-06 13:00 | 2015-07-06 17:00 | 153 | 0d |  | SEII - Web | 4h | 4 |
| 155 | 9 | **Aseguramiento de la calidad** | 24d? | 2015-06-25 08:00 | 2015-07-31 17:00 |  | 0d |  |  | 536h | 536 |
| 156 | 9.1 | Plan de Pruebas (Funcionales y Rendimiento) | 2d? | 2015-06-25 08:00 | 2015-06-30 08:00 | 157SF | 25d |  | QAII | 16h | 16 |
| 157 | 9.2 | Configuración Ambientes de QA | 1d? | 2015-06-30 08:00 | 2015-07-01 08:00 | 159SF | 24d | 0d | QAII | 8h | 8 |
| 158 | 9.3 | **Pruebas Funcionales** | 17d? | 2015-07-01 08:00 | 2015-07-23 17:00 |  | 0d |  |  | 384h | 384 |
| 159 | 9.3.1 | Estimación y Creación de Casos de Prueba Web y Móvil | 4d? | 2015-07-01 08:00 | 2015-07-07 08:00 | 161SF | 16d | 0d | QAI - 1; QAII | 64h | 64 |

| ID | WBS | Task | Duration | Start | Finish | Predecessors | Total slack | Free slack | Resources | Work | Cost |
| --- | --- | --- | --- | --- | --- | --- | --- | --- | --- | --- | --- |
| 160 | 9.3.2 | **Móvil** | 8d? | 2015-07-07 08:00 | 2015-07-16 17:00 |  | 0d |  |  | 240h | 240 |
| 161 | 9.3.2.1 | **Ejecución en Tablet** | 7d? | 2015-07-07 08:00 | 2015-07-15 17:00 | 50 | 1d | 0d |  | 112h | 112 |
| 162 | 9.3.2.1.1 | Ejecución en Samsung de 10.1" /SO Android 4.1.2 (Principal) | 3d? | 2015-07-07 08:00 | 2015-07-09 17:00 |  | 4d | 0d | QAI - 1; Tester - 1 | 48h | 48 |
| 163 | 9.3.2.1.2 | Ejecución en Lenovo 7" / SO Android 4.2.2 (Secundario) | 1d? | 2015-07-10 08:00 | 2015-07-10 17:00 | 162 | 4d | 0d | QAI - 1; Tester - 1 | 16h | 16 |
| 164 | 9.3.2.1.3 | Tablet AOC / SO: Android 4.1.1 (Secundario) | 1d? | 2015-07-13 08:00 | 2015-07-13 17:00 | 163 | 4d | 0d | QAI - 1; Tester - 1 | 16h | 16 |
| 165 | 9.3.2.1.4 | Ejecución en Ipad SO 7 (Secundario) | 1d? | 2015-07-14 08:00 | 2015-07-14 17:00 | 164 | 4d | 0d | QAI - 1; Tester - 1 | 16h | 16 |
| 166 | 9.3.2.1.5 | Ejecución en Ipad SO 8 (Secundario) | 1d? | 2015-07-15 08:00 | 2015-07-15 17:00 | 165 | 4d |  | QAI - 1; Tester - 1 | 16h | 16 |
| 167 | 9.3.2.2 | **Ejecución en SmartPhone** | 8d? | 2015-07-07 08:00 | 2015-07-16 17:00 | 50 | 0d |  |  | 128h | 128 |
| 168 | 9.3.2.2.1 | Nokia Lumia 520 / SO: Windows Phone 8.0 (Principal) | 3d? | 2015-07-07 08:00 | 2015-07-09 17:00 |  | 0d |  | QAI - 2; Tester - 2 | 48h | 48 |
| 169 | 9.3.2.2.2 | Ejecución en Samsung Galaxy Chat/SO -SO Android 4.1.2 (secundario) | 1d? | 2015-07-10 08:00 | 2015-07-10 17:00 | 168 | 0d |  | QAI - 2; Tester - 2 | 16h | 16 |
| 170 | 9.3.2.2.3 | Samsung Galaxy S III Mini / SO: Android 4.1.2 (Principal) | 1d? | 2015-07-13 08:00 | 2015-07-13 17:00 | 169 | 0d |  | QAI - 2; Tester - 2 | 16h | 16 |
| 171 | 9.3.2.2.4 | Ejecución en Iphone 4 / iSO 7 (Principal) | 1d? | 2015-07-14 08:00 | 2015-07-14 17:00 | 170 | 0d |  | QAI - 2; Tester - 2 | 16h | 16 |
| 172 | 9.3.2.2.5 | Ejecución en Iphone 5 / iSO 7 (Secundario) | 1d? | 2015-07-15 08:00 | 2015-07-15 17:00 | 171 | 0d |  | QAI - 2; Tester - 2 | 16h | 16 |
| 173 | 9.3.2.2.6 | Ejecución en Iphone 6 / iSO 7 (Secundario) | 1d? | 2015-07-16 08:00 | 2015-07-16 17:00 | 172 | 0d |  | QAI - 2; Tester - 2 | 16h | 16 |
| 174 | 9.3.3 | **Web** | 5d? | 2015-07-17 08:00 | 2015-07-23 17:00 |  | 0d |  |  | 80h | 80 |
| 175 | 9.3.3.1 | **Ejecución en Web Browser - IE9 (Principal)** | 3.75d? | 2015-07-17 08:00 | 2015-07-22 15:00 | 160 | 0d |  |  | 60h | 60 |
| 176 | 9.3.3.1.1 | Ejecución de casos de prueba funcionales | 2.25d? | 2015-07-17 08:00 | 2015-07-21 10:00 |  | 0d |  | QAI - 1; Tester - 1 | 36h | 36 |
| 177 | 9.3.3.1.2 | Reporte de errores | 0.5d? | 2015-07-21 10:00 | 2015-07-21 15:00 | 176 | 0d |  | QAI - 1; Tester - 1 | 8h | 8 |
| 178 | 9.3.3.1.3 | Verificación de errores | 0.5d? | 2015-07-21 15:00 | 2015-07-22 10:00 | 177 | 0d |  | QAI - 1; Tester - 1 | 8h | 8 |
| 179 | 9.3.3.1.4 | Pruebas exploratoria | 0.5d? | 2015-07-22 10:00 | 2015-07-22 15:00 | 178 | 0d |  | QAI - 1; Tester - 1 | 8h | 8 |
| 180 | 9.3.3.2 | Ejecución en Web Browser - Chrome 40 (Secundario) | 1.25d? | 2015-07-22 15:00 | 2015-07-23 17:00 | 175 | 0d |  | QAI - 1; Tester - 1 | 20h | 20 |
| 181 | 9.4 | **Soporte a Pruebas Funcionales (Resolución de Bugs)** | 10d? | 2015-07-07 08:00 | 2015-07-20 17:00 | 160SS | 7d |  |  | 60h | 60 |
| 182 | 9.4.1 | Móvil | 10d | 2015-07-07 08:00 | 2015-07-20 17:00 |  | 7d |  | SEII - Mobile [50%] | 40h | 40 |
| 183 | 9.4.2 | Web | 5d? | 2015-07-07 08:00 | 2015-07-13 17:00 |  | 12d |  | SEII - Web [50%] | 20h | 20 |

| ID | WBS | Task | Duration | Start | Finish | Predecessors | Total slack | Free slack | Resources | Work | Cost |
| --- | --- | --- | --- | --- | --- | --- | --- | --- | --- | --- | --- |
| 184 | 9.5 | **Pruebas de Rendimiento** | 8.5d? | 2015-07-17 13:00 | 2015-07-31 17:00 |  | 0d |  |  | 68h | 68 |
| 185 | 9.5.1 | Creación de Scripts (Flujo: 6WS) | 4.5d? | 2015-07-17 13:00 | 2015-07-24 08:00 | 186SF | 7d |  | QAII | 36h | 36 |
| 186 | 9.5.2 | **Ejecución de Pruebas** | 2.5d? | 2015-07-24 08:00 | 2015-07-30 12:00 | 158 | 0d |  |  | 20h | 20 |
| 187 | 9.5.2.1 | Preparación del Ambiente | 0.75d? | 2015-07-24 08:00 | 2015-07-24 15:00 |  | 0d |  | QAII | 6h | 6 |
| 188 | 9.5.2.2 | Prueba de Ambiente | 0.25d? | 2015-07-24 15:00 | 2015-07-24 17:00 | 187 | 0d |  | QAII | 2h | 2 |
| 189 | 9.5.2.3 | Ejecución prueba de carga | 1.5d? | 2015-07-27 08:00 | 2015-07-30 12:00 | 188 | 0d |  | QAII | 12h | 12 |
| 190 | 9.5.3 | **Documentación** | 1.5d? | 2015-07-30 13:00 | 2015-07-31 17:00 | 186 | 0d |  |  | 12h | 12 |
| 191 | 9.5.3.1 | Parsing Logs | 0.5d? | 2015-07-30 13:00 | 2015-07-30 17:00 |  | 0d |  | QAII | 4h | 4 |
| 192 | 9.5.3.2 | Análisis y Notas Iniciales | 0.5d? | 2015-07-31 08:00 | 2015-07-31 12:00 | 191 | 0d |  | QAII | 4h | 4 |
| 193 | 9.5.3.3 | Creación de documento de resultados | 0.5d? | 2015-07-31 13:00 | 2015-07-31 17:00 | 192 | 0d |  | QAII | 4h | 4 |
| 194 | 10 | Soporte a Pruebas de Rendimiento | 2.5d | 2015-07-24 08:00 | 2015-07-30 12:00 | 186SS | 1.5d |  | SEII - Web | 20h | 20 |
| 195 | 11 | **Documentación** | 10d? | 2015-07-07 08:00 | 2015-07-20 17:00 | 160SS | 6d | 0d |  | 100h | 100 |
| 196 | 11.1 | **Móvil** | 10d? | 2015-07-07 08:00 | 2015-07-20 17:00 |  | 6d |  |  | 40h | 40 |
| 197 | 11.1.1 | Release notes | 1d? | 2015-07-07 08:00 | 2015-07-07 17:00 |  | 6d | 0d | SEII - Mobile [50%] | 4h | 4 |
| 198 | 11.1.2 | Manual de soporte | 2d? | 2015-07-08 08:00 | 2015-07-09 17:00 | 197 | 6d | 0d | SEII - Mobile [50%] | 8h | 8 |
| 199 | 11.1.3 | Manual de instalación | 3d? | 2015-07-10 08:00 | 2015-07-14 17:00 | 198 | 6d | 0d | SEII - Mobile [50%] | 12h | 12 |
| 200 | 11.1.4 | Manual de usuario | 4d? | 2015-07-15 08:00 | 2015-07-20 17:00 | 199 | 6d |  | SEII - Mobile [50%] | 16h | 16 |
| 201 | 11.2 | **Web** | 10d? | 2015-07-07 08:00 | 2015-07-20 17:00 |  | 6d |  |  | 60h | 60 |
| 202 | 11.2.1 | Release notes | 1d? | 2015-07-07 08:00 | 2015-07-07 17:00 |  | 6d | 0d | SEII - Web [50%] | 4h | 4 |
| 203 | 11.2.2 | Manual de soporte | 4d? | 2015-07-08 08:00 | 2015-07-13 17:00 | 202 | 6d | 0d | SEII - Web [50%] | 16h | 16 |
| 204 | 11.2.3 | Manual de instalación | 2d? | 2015-07-14 08:00 | 2015-07-15 17:00 | 203 | 6d | 0d | SEII - Web | 16h | 16 |
| 205 | 11.2.4 | Manual de usuario | 3d? | 2015-07-16 08:00 | 2015-07-20 17:00 | 204 | 6d |  | SEII - Web | 24h | 24 |
| 206 | 12 | **Generación de Binarios** | 1d? | 2015-07-21 08:00 | 2015-07-21 17:00 | 195 | 6d |  |  | 16h | 16 |
| 207 | 12.1 | Portal Web / Web Services | 1d? | 2015-07-21 08:00 | 2015-07-21 17:00 |  | 6d |  | SEII - Web | 8h | 8 |
| 208 | 12.2 | Aplicaciones Moviles (iOS, Android, Windows Phone) | 1d? | 2015-07-21 08:00 | 2015-07-21 17:00 |  | 6d |  | SEII - Mobile | 8h | 8 |
