# Yanbal PhoneGap - Web

Schedule from MS Project, 2015-04-14 to 2015-07-31, status date 2008-01-09, costs in $, A marks actual dates.
Avantica Technologies

## Calendars

- Standard: Mon-Fri 08:00-12:00, 13:00-17:00; Sat-Sun off. Exceptions (off unless hours are given): 2015-05-01 (Dia del Trabajo), 2015-06-29 (Día de San Pedro y San Pablo), 2015-07-28 to 2015-07-29 (Fiestas Patrias).

## Resources

| Resource | Rate |
| --- | --- |
| QAII | 1 |
| PM | 1 |
| UX | 1 |
| SEII - Mobile | 1 |
| SEII - Web | 1 |
| QAI - 1 | 1 |
| QAI - 2 | 1 |
| Tester - 1 | 1 |
| Tester - 2 | 1 |
| Yanbal | 1 |
| UX1 | 1 |
| QAI - 3 | 1 |
| Tester - 3 | 1 |

## Schedule

| ID | WBS | Task | Type | Duration | Start | Finish | Predecessors | Complete | Remaining | Baseline start | Baseline finish | Baseline duration | Total slack | Free slack | Constraint | Resources | Work | Actual work | Cost | Baseline cost | Actual cost |
| --- | --- | --- | --- | --- | --- | --- | --- | --- | --- | --- | --- | --- | --- | --- | --- | --- | --- | --- | --- | --- | --- |
| 1 | 1 | Gestión del proyecto |  | 75d? | 2015-04-14 08:00 A | 2015-07-31 17:00 |  | 43% | 42.5d? |  |  |  | 0d |  |  | PM [40%] | 240h | 104h | 240 |  | 104 |
| 2 | 2 | Sesión de Inicio de Proyecto (KickOff) |  | 4h | 2015-04-14 08:00 A | 2015-04-14 12:00 A |  | 100% |  | 2015-04-14 08:00 | 2015-04-14 12:00 | 4h |  |  |  | SEII - Mobile; SEII - Web | 8h | 8h | 8 | 8 | 8 |
| 3 | 3 | **Análisis** |  | 15.5d? | 2015-04-14 13:00 A | 2015-05-06 17:00 A | 2 | 100% |  | 2015-04-14 13:00 | 2015-04-23 10:00 | 6.75d |  |  |  |  | 216h | 216h | 216 | 108 | 216 |
| 4 | 3.1 | Reuniones (124) |  | 2d | 2015-04-14 13:00 A | 2015-04-16 12:00 A |  | 100% |  | 2015-04-14 13:00 | 2015-04-16 12:00 | 2d |  |  |  | SEII - Mobile; SEII - Web | 32h | 32h | 32 | 32 | 32 |
| 5 | 3.2 | Especificación de requerimientos funcionales (125) |  | 1d | 2015-04-16 13:00 A | 2015-04-17 12:00 A | 4 | 100% |  | 2015-04-16 13:00 | 2015-04-16 17:00 | 0.5d |  |  |  | SEII - Mobile; SEII - Web | 16h | 16h | 16 | 8 | 16 |
| 6 | 3.3 | Creación de Wireframes (126) |  | 2.5d | 2015-04-17 13:00 A | 2015-04-21 17:00 A | 5 | 100% |  | 2015-04-17 08:00 | 2015-04-20 17:00 | 2d |  |  |  | SEII - Mobile; SEII - Web | 40h | 40h | 40 | 32 | 40 |
| 7 | 3.4 | Especificación de casos de uso (127) |  | 5d | 2015-04-21 13:00 A | 2015-04-28 12:00 A | 6 | 100% |  | 2015-04-21 08:00 | 2015-04-22 17:00 | 2d |  |  |  | SEII - Mobile; SEII - Web | 80h | 80h | 80 | 32 | 80 |
| 8 | 3.5 | Matriz de trazabilidad: requerimientos / casos de uso (128) |  | 0.25d | 2015-04-28 13:00 A | 2015-04-28 15:00 A | 7 | 100% |  | 2015-04-23 08:00 | 2015-04-23 10:00 | 0.25d |  |  |  | SEII - Mobile; SEII - Web | 4h | 4h | 4 | 4 | 4 |
| 9 | 3.6 | Aprobación Yanbal |  | 2.5d? | 2015-04-30 08:00 A | 2015-05-05 12:00 A | 8 | 100% |  |  |  |  |  |  |  | Yanbal | 20h | 20h | 20 |  | 20 |
| 10 | 3.7 | Modificación de documentos |  | 1.5d? | 2015-05-05 13:00 A | 2015-05-06 17:00 A | 9 | 100% |  |  |  |  |  |  |  | SEII - Mobile; SEII - Web | 24h | 24h | 24 |  | 24 |
| 11 | 4 | **Diseño Técnico** |  | 28d? | 2015-04-14 08:00 A | 2015-05-22 17:00 |  | 80% | 5.6d? | 2015-04-23 10:00 | 2015-05-06 10:00 | 8d | 0d |  |  |  | 224h | 192h | 224 | 128 | 192 |
| 12 | 4.1 | Catalogo de servicios web a crear / consumir (137) |  | 1.25d | 2015-04-30 08:00 A | 2015-05-04 10:00 A | 9SS | 100% |  | 2015-05-04 10:00 | 2015-05-06 10:00 | 2d |  |  |  | SEII - Mobile; SEII - Web | 20h | 20h | 20 | 32 | 20 |
| 13 | 4.2 | Reuniones (129) |  | 1.25d | 2015-05-07 10:00 A | 2015-05-08 12:00 A | 12, 10 | 100% |  | 2015-04-23 10:00 | 2015-04-24 10:00 | 1d |  |  |  | SEII - Mobile; SEII - Web | 20h | 20h | 20 | 16 | 20 |
| 14 | 4.3 | Configurar ambiente de desarrollo |  | 3d? | 2015-04-14 08:00 A | 2015-05-15 15:00 A | 13 | 100% |  |  |  |  |  |  |  | SEII - Mobile; SEII - Web | 48h | 48h | 48 |  | 48 |
| 15 | 4.4 | Definir estándares de desarrollo (130) |  | 0.25d | 2015-05-08 10:00 A | 2015-05-15 16:00 A | 14 | 100% |  | 2015-04-24 10:00 | 2015-04-24 15:00 | 0.5d |  |  |  | SEII - Mobile; SEII - Web | 4h | 4h | 4 | 8 | 4 |
| 16 | 4.5 | Requerimientos no funcionales (131) |  | 0.5d | 2015-05-08 15:00 A | 2015-05-18 10:00 A | 15 | 100% |  | 2015-04-24 15:00 | 2015-04-27 10:00 | 0.5d |  |  |  | SEII - Mobile; SEII - Web | 8h | 8h | 8 | 8 | 8 |
| 17 | 4.6 | Arquitectura (132) |  | 0.75d | 2015-05-11 10:00 A | 2015-05-11 17:00 A | 16 | 100% |  | 2015-04-27 10:00 | 2015-04-27 12:00 | 0.25d |  |  |  | SEII - Mobile; SEII - Web | 12h | 12h | 12 | 4 | 12 |
| 18 | 4.7 | Base de Datos (136 y 160) |  | 1d | 2015-05-11 15:00 A | 2015-05-12 15:00 A | 17 | 100% |  | 2015-04-27 13:00 | 2015-04-27 17:00 | 0.5d |  |  |  | SEII - Mobile; SEII - Web | 16h | 16h | 16 | 8 | 16 |
| 19 | 4.8 | Especificación Técnica de la Solución (151 y 156) |  | 2d | 2015-05-12 10:00 A | 2015-05-14 10:00 A | 18 | 100% |  | 2015-04-28 08:00 | 2015-04-28 10:00 | 0.25d |  |  |  | SEII - Mobile; SEII - Web | 32h | 32h | 32 | 4 | 32 |
| 20 | 4.9 | Diagrama de Clases (148 y 149) |  | 0.75d | 2015-05-14 10:00 A | 2015-05-14 17:00 A | 19 | 100% |  | 2015-04-28 10:00 | 2015-04-30 10:00 | 2d |  |  |  | SEII - Mobile; SEII - Web | 12h | 12h | 12 | 32 | 12 |
| 21 | 4.10 | Mapa de Navegación (150 y 155) |  | 0.25d | 2015-05-15 08:00 A | 2015-05-15 10:00 A | 20 | 100% |  | 2015-04-30 10:00 | 2015-05-04 10:00 | 1d |  |  |  | SEII - Mobile; SEII - Web | 4h | 4h | 4 | 16 | 4 |
| 22 | 4.11 | Preparación y revisión del documento técnico |  | 1d? | 2015-05-19 08:00 A | 2015-05-19 17:00 A | 21 | 100% |  |  |  |  |  |  | start no earlier than 2015-05-19 08:00 | SEII - Mobile; SEII - Web | 16h | 16h | 16 |  | 16 |
| 23 | 4.12 | Aprobación Yanbal |  | 2d? | 2015-05-20 08:00 | 2015-05-21 17:00 | 22 |  |  |  |  |  | 0d |  |  | Yanbal | 16h |  | 16 |  |  |
| 24 | 4.13 | Modificación de documentos |  | 1d? | 2015-05-22 08:00 | 2015-05-22 17:00 | 23 |  |  |  |  |  | 0d |  |  | SEII - Mobile; SEII - Web | 16h |  | 16 |  |  |
| 25 | 5 | Disponibilidad UX | milestone | 0d | 2015-04-29 08:00 | 2015-04-29 08:00 |  |  |  |  |  |  | 58.15d | 0d | start no earlier than 2015-04-29 08:00 |  |  |  |  |  |  |

| ID | WBS | Task | Type | Duration | Start | Finish | Predecessors | Complete | Remaining | Baseline start | Baseline finish | Baseline duration | Total slack | Free slack | Constraint | Resources | Work | Actual work | Cost | Baseline cost | Actual cost |
| --- | --- | --- | --- | --- | --- | --- | --- | --- | --- | --- | --- | --- | --- | --- | --- | --- | --- | --- | --- | --- | --- |
| 26 | 6 | **Diseño Gráfico** |  | 16d? | 2015-04-29 08:00 A | 2015-05-21 17:00 | 25 | 68% | 5.17d? | 2015-04-21 08:00 | 2015-05-18 10:00 | 18.25d | 47d | 0d |  |  | 170h | 122h | 170 | 146 | 122 |
| 27 | 6.1 | **Preparación de propuesta** |  | 8d | 2015-04-29 08:00 A | 2015-05-11 17:00 A |  | 100% |  | 2015-04-21 08:00 | 2015-04-30 10:00 | 7.25d |  |  |  |  | 86h | 86h | 86 | 58 | 86 |
| 28 | 6.1.1 | Reuniones con el cliente (información inicial) |  | 0.75d | 2015-04-29 08:00 A | 2015-04-29 15:00 A |  | 100% |  | 2015-04-21 08:00 | 2015-04-21 15:00 | 0.75d |  |  |  | UX | 6h | 6h | 6 | 6 | 6 |
| 29 | 6.1.2 | Elaboración de propuesta grafica (2 Pág. Maestras) Móvil |  | 3.75d | 2015-04-29 15:00 A | 2015-05-06 12:00 A | 28 | 100% |  | 2015-04-21 15:00 | 2015-04-24 10:00 | 2.5d |  |  |  | UX | 30h | 30h | 30 | 20 | 30 |
| 30 | 6.1.3 | Elaboración de propuesta grafica (2 Pág. Maestras) Web |  | 3.75d | 2015-05-05 10:00 A | 2015-05-08 17:00 A | 29 | 100% |  | 2015-04-24 10:00 | 2015-04-28 12:00 | 2.25d |  |  |  | UX | 30h | 30h | 30 | 18 | 30 |
| 31 | 6.1.4 | Elaboración de assets y cortes de imágenes |  | 2.5d | 2015-05-07 13:00 A | 2015-05-11 17:00 A | 30 | 100% |  | 2015-04-28 13:00 | 2015-04-30 10:00 | 1.75d |  |  |  | UX | 20h | 20h | 20 | 14 | 20 |
| 32 | 6.2 | **Preparación de maquetas y assets** |  | 8d? | 2015-05-12 08:00 A | 2015-05-21 17:00 | 27 | 43% | 4.57d? | 2015-04-30 10:00 | 2015-05-18 10:00 | 11d | 47d |  |  |  | 84h | 36h | 84 | 88 | 36 |
| 33 | 6.2.1 | **Kiosko Móvil** |  | 6d? | 2015-05-12 08:00 A | 2015-05-19 17:00 A |  | 100% |  | 2015-05-13 10:00 | 2015-05-18 10:00 | 3d |  |  |  |  | 36h | 36h | 36 | 24 | 36 |
| 34 | 6.2.1.1 | Login |  | 1d | 2015-05-12 08:00 A | 2015-05-12 17:00 A |  | 100% |  | 2015-05-13 10:00 | 2015-05-13 17:00 | 0.75d |  |  |  | UX [75%] | 6h | 6h | 6 | 6 | 6 |
| 35 | 6.2.1.2 | Página Principal |  | 1d | 2015-05-13 08:00 A | 2015-05-13 17:00 A | 34 | 100% |  | 2015-05-14 08:00 | 2015-05-14 15:00 | 0.75d |  |  |  | UX [75%] | 6h | 6h | 6 | 6 | 6 |
| 36 | 6.2.1.3 | Ver Colección |  | 1d | 2015-05-14 08:00 A | 2015-05-14 17:00 A | 35 | 100% |  | 2015-05-14 15:00 | 2015-05-15 12:00 | 0.75d |  |  |  | UX [75%] | 6h | 6h | 6 | 6 | 6 |
| 37 | 6.2.1.4 | Notificaciones |  | 1d | 2015-05-15 08:00 A | 2015-05-15 17:00 A | 36 | 100% |  | 2015-05-15 13:00 | 2015-05-18 10:00 | 0.75d |  |  |  | UX [75%] | 6h | 6h | 6 | 6 | 6 |
| 38 | 6.2.1.5 | Configuración |  | 1d? | 2015-05-18 08:00 A | 2015-05-18 17:00 A | 37 | 100% |  |  |  |  |  |  |  | UX [75%] | 6h | 6h | 6 |  | 6 |
| 39 | 6.2.1.6 | Ver/Descargar/Eliminar Archivo |  | 1d? | 2015-05-19 08:00 A | 2015-05-19 17:00 A | 38 | 100% |  |  |  |  |  |  |  | UX [75%] | 6h | 6h | 6 |  | 6 |
| 40 | 6.2.2 | **Kisoko Web** |  | 8d? | 2015-05-12 08:00 | 2015-05-21 17:00 |  |  |  | 2015-04-30 10:00 | 2015-05-13 10:00 | 8d | 47d |  |  |  | 48h |  | 48 | 64 |  |
| 41 | 6.2.2.1 | Login |  | 1d | 2015-05-12 08:00 | 2015-05-12 17:00 |  |  |  | 2015-04-30 10:00 | 2015-05-04 10:00 | 1d | 47d | 0d |  | UX1 [75%] | 6h |  | 6 | 8 |  |
| 42 | 6.2.2.2 | Pantalla Principal |  | 1d? | 2015-05-13 08:00 | 2015-05-13 17:00 | 41 |  |  |  |  |  | 47d | 0d |  | UX1 [75%] | 6h |  | 6 |  |  |
| 43 | 6.2.2.3 | Administración de Colecciones |  | 1d | 2015-05-14 08:00 | 2015-05-14 17:00 | 42 |  |  | 2015-05-08 10:00 | 2015-05-08 17:00 | 0.75d | 47d | 0d |  | UX1 [75%] | 6h |  | 6 | 6 |  |
| 44 | 6.2.2.4 | Crear/Editar Colecciones |  | 1d? | 2015-05-15 08:00 | 2015-05-15 17:00 | 43 |  |  |  |  |  | 47d | 0d |  | UX1 [75%] | 6h |  | 6 |  |  |
| 45 | 6.2.2.5 | Cargar Archivos |  | 1d? | 2015-05-18 08:00 | 2015-05-18 17:00 | 44 |  |  |  |  |  | 47d | 0d |  | UX1 [75%] | 6h |  | 6 |  |  |
| 46 | 6.2.2.6 | Publicar Archivos |  | 1d? | 2015-05-19 08:00 | 2015-05-19 17:00 | 45 |  |  |  |  |  | 47d | 0d |  | UX1 [75%] | 6h |  | 6 |  |  |
| 47 | 6.2.2.7 | Mover Archivos |  | 1d? | 2015-05-20 08:00 | 2015-05-20 17:00 | 46 |  |  |  |  |  | 47d | 0d |  | UX1 [75%] | 6h |  | 6 |  |  |
| 48 | 6.2.2.8 | Configuración de límites de carga y descarga |  | 1d | 2015-05-21 08:00 | 2015-05-21 17:00 | 47 |  |  | 2015-05-11 08:00 | 2015-05-11 15:00 | 0.75d | 47d |  |  | UX1 [75%] | 6h |  | 6 | 6 |  |
| 49 | 7 | Entregable de Diseño Gráfico |  | 1d? | 2015-05-22 08:00 | 2015-05-22 17:00 | 26 |  |  |  |  |  | 47d |  |  |  |  |  |  |  |  |
| 50 | 8 | Disponibilidad QA | milestone | 0d | 2015-05-18 08:00 | 2015-05-18 08:00 |  |  |  |  |  |  | 43d | 0d | start no earlier than 2015-05-18 08:00 |  |  |  |  |  |  |

| ID | WBS | Task | Duration | Start | Finish | Predecessors | Baseline start | Baseline finish | Baseline duration | Total slack | Free slack | Resources | Work | Cost | Baseline cost |
| --- | --- | --- | --- | --- | --- | --- | --- | --- | --- | --- | --- | --- | --- | --- | --- |
| 51 | 9 | **Planificación y Especificación de Pruebas** | 9d? | 2015-05-18 08:00 | 2015-05-28 17:00 | 50 |  |  |  | 43d |  |  | 72h | 72 |  |
| 52 | 9.1 | Plan de Pruebas | 1d? | 2015-05-18 08:00 | 2015-05-18 17:00 |  |  |  |  | 43d | 0d | QAI - 1 | 8h | 8 |  |
| 53 | 9.2 | LCP | 1d? | 2015-05-19 08:00 | 2015-05-19 17:00 | 52 |  |  |  | 43d | 0d | QAI - 1 | 8h | 8 |  |
| 54 | 9.3 | ECP | 7d? | 2015-05-20 08:00 | 2015-05-28 17:00 | 53 |  |  |  | 43d |  | QAI - 1 | 56h | 56 |  |
| 55 | 10 | **Desarrollo** | 30d? | 2015-05-25 08:00 | 2015-07-06 17:00 | 11 | 2015-05-06 10:00 | 2015-07-02 15:00 | 40.5d? | 0d |  |  | 440h | 440 | 548 |
| 56 | 10.1 | **HTML** | 9d? | 2015-05-25 08:00 | 2015-06-04 17:00 | 11 | 2015-05-07 15:00 | 2015-05-13 15:00 | 4d? | 2d | 0d |  | 72h | 72 | 32 |
| 57 | 10.1.1 | **Estructura base HTML** | 2d? | 2015-05-25 08:00 | 2015-05-26 17:00 |  |  |  |  | 2d | 0d |  | 16h | 16 |  |
| 58 | 10.1.1.1 | Móvil | 1d? | 2015-05-25 08:00 | 2015-05-25 17:00 |  |  |  |  | 2d | 0d | SEII - Mobile | 8h | 8 |  |
| 59 | 10.1.1.2 | Web | 1d? | 2015-05-26 08:00 | 2015-05-26 17:00 | 58 |  |  |  | 2d |  | SEII - Mobile | 8h | 8 |  |
| 60 | 10.1.2 | **Páginas Móvil** | 3d? | 2015-05-27 08:00 | 2015-05-29 17:00 | 57 |  |  |  | 2d | 0d |  | 24h | 24 |  |
| 61 | 10.1.2.1 | Inicio Session | 0.38d? | 2015-05-27 08:00 | 2015-05-27 11:00 |  |  |  |  | 2d | 0d | SEII - Mobile | 3h | 3 |  |
| 62 | 10.1.2.2 | Pagina Principal | 0.38d? | 2015-05-27 11:00 | 2015-05-27 15:00 | 61 |  |  |  | 2d | 0d | SEII - Mobile | 3h | 3 |  |
| 63 | 10.1.2.3 | Coleccion seleccionada | 0.12d? | 2015-05-27 15:00 | 2015-05-27 16:00 | 62 |  |  |  | 2d | 0d | SEII - Mobile | 1h | 1 |  |
| 64 | 10.1.2.4 | Opciones del archivo | 0.25d? | 2015-05-27 16:00 | 2015-05-28 09:00 | 63 |  |  |  | 2d | 0d | SEII - Mobile | 2h | 2 |  |
| 65 | 10.1.2.5 | Página de configuración | 0.12d? | 2015-05-28 09:00 | 2015-05-28 10:00 | 64 |  |  |  | 2d | 0d | SEII - Mobile | 1h | 1 |  |
| 66 | 10.1.2.6 | Panel de notificaciones | 0.75d? | 2015-05-28 10:00 | 2015-05-28 17:00 | 65 |  |  |  | 2d | 0d | SEII - Mobile | 6h | 6 |  |
| 67 | 10.1.2.7 | Sincronización | 0.5d? | 2015-05-29 08:00 | 2015-05-29 12:00 | 66 |  |  |  | 2d | 0d | SEII - Mobile | 4h | 4 |  |
| 68 | 10.1.2.8 | Revisión/Corrección con UX | 0.5d? | 2015-05-29 13:00 | 2015-05-29 17:00 | 67 |  |  |  | 2d |  | SEII - Mobile | 4h | 4 |  |
| 69 | 10.1.3 | **Páginas Web** | 4d? | 2015-06-01 08:00 | 2015-06-04 17:00 | 60 |  |  |  | 2d |  |  | 32h | 32 |  |
| 70 | 10.1.3.1 | Página Principal | 0.5d? | 2015-06-01 08:00 | 2015-06-01 12:00 |  |  |  |  | 2d | 0d | SEII - Mobile | 4h | 4 |  |
| 71 | 10.1.3.2 | Inicio Session | 0.5d? | 2015-06-01 13:00 | 2015-06-01 17:00 | 70 |  |  |  | 2d | 0d | SEII - Mobile | 4h | 4 |  |
| 72 | 10.1.3.3 | Mantener Colecciones | 1.5d? | 2015-06-02 08:00 | 2015-06-03 12:00 | 71 |  |  |  | 2d | 0d | SEII - Mobile | 12h | 12 |  |
| 73 | 10.1.3.4 | Configurar limite de descarga | 0.5d? | 2015-06-03 13:00 | 2015-06-03 17:00 | 72 |  |  |  | 2d | 0d | SEII - Mobile | 4h | 4 |  |
| 74 | 10.1.3.5 | Revisión/Corrección con UX | 1d? | 2015-06-04 08:00 | 2015-06-04 17:00 | 73 |  |  |  | 2d |  | SEII - Mobile | 8h | 8 |  |

| ID | WBS | Task | Duration | Start | Finish | Predecessors | Baseline start | Baseline finish | Baseline duration | Total slack | Free slack | Resources | Work | Cost | Baseline cost |
| --- | --- | --- | --- | --- | --- | --- | --- | --- | --- | --- | --- | --- | --- | --- | --- |
| 75 | 10.2 | **PhoneGap** | 16d? | 2015-06-05 08:00 | 2015-06-26 17:00 | 56 | 2015-05-13 15:00 | 2015-06-12 10:00 | 21.5d? | 5d |  |  | 128h | 128 | 172 |
| 76 | 10.2.1 | Creación proyecto base | 1d? | 2015-06-05 08:00 | 2015-06-05 17:00 |  |  |  |  | 5d | 0d | SEII - Mobile | 8h | 8 |  |
| 77 | 10.2.2 | Revisión de pares | 1d? | 2015-06-08 08:00 | 2015-06-08 17:00 | 76 |  |  |  | 5d | 0d | SEII - Mobile | 8h | 8 |  |
| 78 | 10.2.3 | Creación archivo de propiedades | 0.75d? | 2015-06-09 08:00 | 2015-06-09 15:00 | 77 |  |  |  | 5d | 0d | SEII - Mobile | 6h | 6 |  |
| 79 | 10.2.4 | Listener para eventos Back | 1.5d? | 2015-06-09 15:00 | 2015-06-11 10:00 | 78 | 2015-05-13 15:00 | 2015-05-14 10:00 | 0.5d? | 5d | 0d | SEII - Mobile | 12h | 12 | 4 |
| 80 | 10.2.5 | **CUM-001: Autenticar usuario** | 1d? | 2015-06-11 10:00 | 2015-06-12 10:00 | 79 |  |  |  | 5d | 0d |  | 8h | 8 |  |
| 81 | 10.2.5.1 | Consumir servicio | 0.25d? | 2015-06-11 10:00 | 2015-06-11 12:00 |  |  |  |  | 5d | 0d | SEII - Mobile | 2h | 2 |  |
| 82 | 10.2.5.2 | Crear token | 0.25d? | 2015-06-11 13:00 | 2015-06-11 15:00 | 81 |  |  |  | 5d | 0d | SEII - Mobile | 2h | 2 |  |
| 83 | 10.2.5.3 | Guardar sesión | 0.5d? | 2015-06-11 15:00 | 2015-06-12 10:00 | 82 |  |  |  | 5d |  | SEII - Mobile | 4h | 4 |  |
| 84 | 10.2.6 | **CUM-002: Sincronizar Contenido y CUM-006: Mostrar notificación** | 3.75d? | 2015-06-12 10:00 | 2015-06-17 17:00 | 80 |  |  |  | 5d | 0d |  | 30h | 30 |  |
| 85 | 10.2.6.1 | Consumir servicio (sincronización al inicio y a demanda) | 0.5d? | 2015-06-12 10:00 | 2015-06-12 15:00 |  |  |  |  | 5d | 0d | SEII - Mobile | 4h | 4 |  |
| 86 | 10.2.6.2 | Guardar datos en cache | 0.75d? | 2015-06-12 15:00 | 2015-06-15 12:00 | 85 |  |  |  | 5d | 0d | SEII - Mobile | 6h | 6 |  |
| 87 | 10.2.6.3 | Actualizar panel de notificacion | 0.5d? | 2015-06-15 13:00 | 2015-06-15 17:00 | 86 |  |  |  | 5d | 0d | SEII - Mobile | 4h | 4 |  |
| 88 | 10.2.6.4 | Actualizar panel de configuración (ultima sync y cant max descarga) | 0.25d? | 2015-06-16 08:00 | 2015-06-16 10:00 | 87 |  |  |  | 5d | 0d | SEII - Mobile | 2h | 2 |  |
| 89 | 10.2.6.5 | Actualizar panel de notificacion para eliminar visto | 0.5d? | 2015-06-16 10:00 | 2015-06-16 15:00 | 88 |  |  |  | 5d | 0d | SEII - Mobile | 4h | 4 |  |
| 90 | 10.2.6.6 | Configuración para notificaciones push (panel nativo) | 1d? | 2015-06-16 15:00 | 2015-06-17 15:00 | 89 |  |  |  | 5d | 0d | SEII - Mobile | 8h | 8 |  |
| 91 | 10.2.6.7 | Mensaje confirmación éxito/error sincronización por conexión de internet | 0.25d? | 2015-06-17 15:00 | 2015-06-17 17:00 | 90 |  |  |  | 5d |  | SEII - Mobile | 2h | 2 |  |
| 92 | 10.2.7 | **CUM-003: Visualizar Contenido** | 2.25d? | 2015-06-18 08:00 | 2015-06-22 10:00 | 84 |  |  |  | 5d | 0d |  | 18h | 18 |  |
| 93 | 10.2.7.1 | Consumir servicio | 0.5d? | 2015-06-18 08:00 | 2015-06-18 12:00 |  |  |  |  | 5d | 0d | SEII - Mobile | 4h | 4 |  |
| 94 | 10.2.7.2 | Manejo de nagevabilidad | 0.5d? | 2015-06-18 13:00 | 2015-06-18 17:00 | 93 |  |  |  | 5d | 0d | SEII - Mobile | 4h | 4 |  |
| 95 | 10.2.7.3 | Ver archivo | 1d? | 2015-06-19 08:00 | 2015-06-19 17:00 | 94 |  |  |  | 5d | 0d | SEII - Mobile | 8h | 8 |  |
| 96 | 10.2.7.4 | Mostrar mensaje de confirmación para descargar con red movil (validacion peso máximo) | 0.25d? | 2015-06-22 08:00 | 2015-06-22 10:00 | 95 |  |  |  | 5d |  | SEII - Mobile | 2h | 2 |  |
| 97 | 10.2.8 | **CUM-004: Descargar Archivo** | 0.75d? | 2015-06-22 10:00 | 2015-06-22 17:00 | 92 |  |  |  | 5d | 0d |  | 6h | 6 |  |
| 98 | 10.2.8.1 | Consumir servicio | 0.25d? | 2015-06-22 10:00 | 2015-06-22 12:00 |  |  |  |  | 5d | 0d | SEII - Mobile | 2h | 2 |  |
| 99 | 10.2.8.2 | Marcar contenido como descargado | 0.25d? | 2015-06-22 13:00 | 2015-06-22 15:00 | 98 |  |  |  | 5d | 0d | SEII - Mobile | 2h | 2 |  |
| 100 | 10.2.8.3 | Mostrar mensaje de confirmación para descargar con red movil (validacion peso máximo) | 0.25d? | 2015-06-22 15:00 | 2015-06-22 17:00 | 99 |  |  |  | 5d |  | SEII - Mobile | 2h | 2 |  |

Notes:
- 79: Incluye envío de datos cuando haya internet. / Considerar caso en que se muere la app.

| ID | WBS | Task | Duration | Start | Finish | Predecessors | Baseline start | Baseline finish | Baseline duration | Total slack | Free slack | Resources | Work | Cost | Baseline cost |
| --- | --- | --- | --- | --- | --- | --- | --- | --- | --- | --- | --- | --- | --- | --- | --- |
| 101 | 10.2.9 | **CUM-005: Eliminar Archivos** | 1d? | 2015-06-23 08:00 | 2015-06-23 17:00 | 97 |  |  |  | 5d | 0d |  | 8h | 8 |  |
| 102 | 10.2.9.1 | Consumir servicio | 0.5d? | 2015-06-23 08:00 | 2015-06-23 12:00 |  |  |  |  | 5d | 0d | SEII - Mobile | 4h | 4 |  |
| 103 | 10.2.9.2 | Guardar datos en cache | 0.5d? | 2015-06-23 13:00 | 2015-06-23 17:00 | 102 |  |  |  | 5d |  | SEII - Mobile | 4h | 4 |  |
| 104 | 10.2.10 | **CUM-007: Enviar métricas** | 1d? | 2015-06-24 08:00 | 2015-06-24 17:00 | 101 |  |  |  | 5d | 0d |  | 8h | 8 |  |
| 105 | 10.2.10.1 | Enviar parametro de log en los servicios | 0.5d? | 2015-06-24 08:00 | 2015-06-24 12:00 |  |  |  |  | 5d | 0d | SEII - Mobile | 4h | 4 |  |
| 106 | 10.2.10.2 | Colocar url de google analytics en las acciones | 0.5d? | 2015-06-24 13:00 | 2015-06-24 17:00 | 105 |  |  |  | 5d |  | SEII - Mobile | 4h | 4 |  |
| 107 | 10.2.11 | **CUM-008: Permitir uso de red móvil en descarga** | 0.5d? | 2015-06-25 08:00 | 2015-06-25 12:00 | 104 |  |  |  | 5d | 0d |  | 4h | 4 |  |
| 108 | 10.2.11.1 | Grabar en cache | 0.5d? | 2015-06-25 08:00 | 2015-06-25 12:00 |  |  |  |  | 5d |  | SEII - Mobile | 4h | 4 |  |
| 109 | 10.2.12 | Pruebas desarrollador | 1d? | 2015-06-25 13:00 | 2015-06-26 12:00 | 107 |  |  |  | 5d | 0d | SEII - Mobile | 8h | 8 |  |
| 110 | 10.2.13 | Revisión de pares | 0.5d? | 2015-06-26 13:00 | 2015-06-26 17:00 | 109 |  |  |  | 5d |  | SEII - Mobile | 4h | 4 |  |
| 111 | 10.3 | **Web Services** | 11d? | 2015-05-25 08:00 | 2015-06-08 17:00 |  | 2015-05-07 15:00 | 2015-06-10 15:00 | 24d? | 0d |  |  | 88h | 88 | 192 |
| 112 | 10.3.1 | Reuniones | 1d? | 2015-05-25 08:00 | 2015-05-25 17:00 |  | 2015-05-07 15:00 | 2015-05-11 15:00 | 2d? | 0d |  | SEII - Web | 8h | 8 | 16 |
| 113 | 10.3.2 | Creación servicio web y estructura base | 1d | 2015-05-26 08:00 | 2015-05-26 17:00 | 112 | 2015-05-11 15:00 | 2015-05-13 15:00 | 2d | 0d |  | SEII - Web | 8h | 8 | 16 |
| 114 | 10.3.3 | Implementación log (bitácora) | 0.5d | 2015-05-27 08:00 | 2015-05-27 12:00 | 113 | 2015-05-13 15:00 | 2015-05-18 15:00 | 3d | 0d |  | SEII - Web | 4h | 4 | 24 |
| 115 | 10.3.4 | Implementación utilitarios base (parseo, conversión) | 1d | 2015-05-27 13:00 | 2015-05-28 12:00 | 114 | 2015-05-18 15:00 | 2015-05-20 15:00 | 2d | 0d |  | SEII - Web | 8h | 8 | 16 |
| 116 | 10.3.5 | Seguridad (SSL) | 1d? | 2015-05-28 13:00 | 2015-05-29 12:00 | 115 | 2015-05-20 15:00 | 2015-05-22 15:00 | 2d? | 0d |  | SEII - Web | 8h | 8 | 16 |
| 117 | 10.3.6 | Autenticar usuario movil | 1d | 2015-05-29 13:00 | 2015-06-01 12:00 | 116 | 2015-05-22 15:00 | 2015-05-25 15:00 | 1d | 0d |  | SEII - Web | 8h | 8 | 8 |
| 118 | 10.3.7 | ObtenerColeccionesContenido | 1d | 2015-06-01 13:00 | 2015-06-02 12:00 | 117 | 2015-05-25 15:00 | 2015-05-26 15:00 | 1d | 0d |  | SEII - Web | 8h | 8 | 8 |
| 119 | 10.3.8 | ObtenerArchivo | 1d | 2015-06-02 13:00 | 2015-06-03 12:00 | 118 | 2015-05-26 15:00 | 2015-05-27 12:00 | 0.75d | 0d |  | SEII - Web | 8h | 8 | 6 |
| 120 | 10.3.9 | ObtenerNotificaciones | 1d | 2015-06-03 13:00 | 2015-06-04 12:00 | 119 | 2015-05-27 13:00 | 2015-05-28 10:00 | 0.75d | 0d |  | SEII - Web | 8h | 8 | 6 |
| 121 | 10.3.10 | ActualizarNotificacion | 1d | 2015-06-04 13:00 | 2015-06-05 12:00 | 120 | 2015-05-28 10:00 | 2015-06-01 10:00 | 2d | 0d |  | SEII - Web | 8h | 8 | 16 |
| 122 | 10.3.11 | AutenticacionWeb | 0.5d | 2015-06-05 13:00 | 2015-06-05 17:00 | 121 | 2015-06-01 10:00 | 2015-06-02 10:00 | 1d | 0d |  | SEII - Web | 4h | 4 | 8 |
| 123 | 10.3.12 | Pruebas de desarrollador | 0.5d | 2015-06-08 08:00 | 2015-06-08 12:00 | 122 | 2015-06-02 10:00 | 2015-06-03 10:00 | 1d | 0d |  | SEII - Web | 4h | 4 | 8 |
| 124 | 10.3.13 | Revisión de pares | 0.5d | 2015-06-08 13:00 | 2015-06-08 17:00 | 123 | 2015-06-03 10:00 | 2015-06-04 10:00 | 1d | 0d |  | SEII - Web | 4h | 4 | 8 |

| ID | WBS | Task | Duration | Start | Finish | Predecessors | Baseline start | Baseline finish | Baseline duration | Total slack | Resources | Work | Cost | Baseline cost |
| --- | --- | --- | --- | --- | --- | --- | --- | --- | --- | --- | --- | --- | --- | --- |
| 125 | 10.4 | **Portal Web** | 19d? | 2015-06-09 08:00 | 2015-07-06 17:00 | 111, 56 | 2015-06-10 15:00 | 2015-07-02 15:00 | 15d? | 0d |  | 152h | 152 | 120 |
| 126 | 10.4.1 | Creación proyecto base | 1d | 2015-06-09 08:00 | 2015-06-09 17:00 |  | 2015-06-10 15:00 | 2015-06-11 15:00 | 1d | 0d | SEII - Web | 8h | 8 | 8 |
| 127 | 10.4.2 | **CUW-001: Iniciar sesión** | 1.5d | 2015-06-10 08:00 | 2015-06-11 12:00 | 126 | 2015-06-11 15:00 | 2015-06-12 10:00 | 0.5d | 0d |  | 12h | 12 | 4 |
| 128 | 10.4.2.1 | Consumir servicio Yanbal | 1d | 2015-06-10 08:00 | 2015-06-10 17:00 |  | 2015-06-12 10:00 | 2015-06-15 10:00 | 1d | 0d | SEII - Web | 8h | 8 | 8 |
| 129 | 10.4.2.2 | Validar Rol obtenido | 0.5d | 2015-06-11 08:00 | 2015-06-11 12:00 | 128 | 2015-06-15 10:00 | 2015-06-16 10:00 | 1d | 0d | SEII - Web | 4h | 4 | 8 |
| 130 | 10.4.3 | **CUW-002: Configurar tamaño de Carga y Descarga** | 1d? | 2015-06-11 13:00 | 2015-06-12 12:00 | 129, 127 | 2015-06-16 10:00 | 2015-06-18 10:00 | 2d | 0d |  | 8h | 8 | 16 |
| 131 | 10.4.3.1 | Listar Limites de Carga y Descarga | 0.5d | 2015-06-11 13:00 | 2015-06-11 17:00 |  | 2015-06-18 10:00 | 2015-06-19 10:00 | 1d | 0d | SEII - Web | 4h | 4 | 8 |
| 132 | 10.4.3.2 | Editar Limite Carga y Descarga | 0.5d? | 2015-06-12 08:00 | 2015-06-12 12:00 | 131 |  |  |  | 0d | SEII - Web | 4h | 4 |  |
| 133 | 10.4.4 | **CUW-003: Gestionar Colecciones** | 3.25d? | 2015-06-12 13:00 | 2015-06-17 15:00 | 130 |  |  |  | 0d |  | 26h | 26 |  |
| 134 | 10.4.4.1 | Listar Coleccion | 0.75d? | 2015-06-12 13:00 | 2015-06-15 10:00 |  |  |  |  | 0d | SEII - Web | 6h | 6 |  |
| 135 | 10.4.4.2 | Buscar Coleccion | 0.5d? | 2015-06-15 10:00 | 2015-06-15 15:00 | 134 |  |  |  | 0d | SEII - Web | 4h | 4 |  |
| 136 | 10.4.4.3 | Crear Coleccion | 0.75d? | 2015-06-15 15:00 | 2015-06-16 12:00 | 135 |  |  |  | 0d | SEII - Web | 6h | 6 |  |
| 137 | 10.4.4.4 | Editar Coleccion | 0.75d? | 2015-06-16 13:00 | 2015-06-17 10:00 | 136 |  |  |  | 0d | SEII - Web | 6h | 6 |  |
| 138 | 10.4.4.5 | Eliminar Coleccion | 0.5d? | 2015-06-17 10:00 | 2015-06-17 15:00 | 137 |  |  |  | 0d | SEII - Web | 4h | 4 |  |
| 139 | 10.4.5 | **CUW-004: Gestionar Archivos** | 3.75d? | 2015-06-17 15:00 | 2015-06-23 12:00 | 133 |  |  |  | 0d |  | 30h | 30 |  |
| 140 | 10.4.5.1 | Listar Archivo | 0.75d? | 2015-06-17 15:00 | 2015-06-18 12:00 |  |  |  |  | 0d | SEII - Web | 6h | 6 |  |
| 141 | 10.4.5.2 | Crear Archivo | 0.75d? | 2015-06-18 13:00 | 2015-06-19 10:00 | 140 |  |  |  | 0d | SEII - Web | 6h | 6 |  |
| 142 | 10.4.5.3 | Editar Archivo | 0.75d? | 2015-06-19 10:00 | 2015-06-19 17:00 | 141 |  |  |  | 0d | SEII - Web | 6h | 6 |  |
| 143 | 10.4.5.4 | Cargar Archivo | 0.5d? | 2015-06-22 08:00 | 2015-06-22 12:00 | 142 |  |  |  | 0d | SEII - Web | 4h | 4 |  |
| 144 | 10.4.5.5 | Validar limite de Carga de archivo | 0.25d? | 2015-06-22 13:00 | 2015-06-22 15:00 | 143 |  |  |  | 0d | SEII - Web | 2h | 2 |  |
| 145 | 10.4.5.6 | Eliminar Archivo | 0.75d? | 2015-06-22 15:00 | 2015-06-23 12:00 | 144 |  |  |  | 0d | SEII - Web | 6h | 6 |  |
| 146 | 10.4.6 | **CUW-005 Publicar Archivo** | 4.75d? | 2015-06-23 13:00 | 2015-07-01 10:00 | 139 |  |  |  | 0d |  | 38h | 38 |  |
| 147 | 10.4.6.1 | Listar Roles | 0.75d? | 2015-06-23 13:00 | 2015-06-24 10:00 |  |  |  |  | 0d | SEII - Web | 6h | 6 |  |
| 148 | 10.4.6.2 | Listar Pais | 0.5d? | 2015-06-24 10:00 | 2015-06-24 15:00 | 147 |  |  |  | 0d | SEII - Web | 4h | 4 |  |
| 149 | 10.4.6.3 | Remover Rol asignado | 0.5d? | 2015-06-24 15:00 | 2015-06-25 10:00 | 148 |  |  |  | 0d | SEII - Web | 4h | 4 |  |
| 150 | 10.4.6.4 | Guardar Publicacion | 1d? | 2015-06-25 10:00 | 2015-06-26 10:00 | 149 |  |  |  | 0d | SEII - Web | 8h | 8 |  |
| 151 | 10.4.6.5 | Enviar Push Notificaction a Servidores (Iphone, Android, WinPhone) | 2d? | 2015-06-26 10:00 | 2015-07-01 10:00 | 150 |  |  |  | 0d | SEII - Web | 16h | 16 |  |

| ID | WBS | Task | Duration | Start | Finish | Predecessors | Total slack | Free slack | Resources | Work | Cost |
| --- | --- | --- | --- | --- | --- | --- | --- | --- | --- | --- | --- |
| 152 | 10.4.7 | **CUW-006 Mover Archivos** | 1.25d? | 2015-07-01 10:00 | 2015-07-02 12:00 | 146 | 0d |  |  | 10h | 10 |
| 153 | 10.4.7.1 | Listar Coleccion | 0.75d? | 2015-07-01 10:00 | 2015-07-01 17:00 |  | 0d |  | SEII - Web | 6h | 6 |
| 154 | 10.4.7.2 | Mover Archivo | 0.5d? | 2015-07-02 08:00 | 2015-07-02 12:00 | 153 | 0d |  | SEII - Web | 4h | 4 |
| 155 | 10.4.8 | **CUW-007 Enviar Notificaciones** | 1.25d? | 2015-07-02 13:00 | 2015-07-03 15:00 | 152 | 0d |  |  | 10h | 10 |
| 156 | 10.4.8.1 | Registrar Notificacion por Archivo y usuario | 1.25d? | 2015-07-02 13:00 | 2015-07-03 15:00 |  | 0d |  | SEII - Web | 10h | 10 |
| 157 | 10.4.9 | Pruebas de desarrollador | 0.75d? | 2015-07-03 15:00 | 2015-07-06 12:00 | 155 | 0d |  | SEII - Web | 6h | 6 |
| 158 | 10.4.10 | Revisión de pares | 0.5d? | 2015-07-06 13:00 | 2015-07-06 17:00 | 157 | 0d |  | SEII - Web | 4h | 4 |
| 159 | 11 | Configuración ambiente QA | 1d? | 2015-07-07 08:00 | 2015-07-07 17:00 | 55 | 0d |  | SEII - Web; SEII - Mobile | 16h | 16 |
| 160 | 12 | Pruebas exploratorias | 2d? | 2015-07-08 08:00 | 2015-07-09 17:00 | 159 | 0d |  | QAI - 1; SEII - Web; SEII - Mobile | 48h | 48 |
| 161 | 13 | **Aseguramiento de la calidad** | 12d? | 2015-07-10 08:00 | 2015-07-27 17:00 | 160 | 0d |  |  | 462h | 462 |
| 162 | 13.1 | **Pruebas Funcionales** | 8d? | 2015-07-10 08:00 | 2015-07-21 17:00 |  | 0d |  |  | 320h | 320 |
| 163 | 13.1.1 | **Móvil** | 8d? | 2015-07-10 08:00 | 2015-07-21 17:00 |  | 0d |  |  | 240h | 240 |
| 164 | 13.1.1.1 | **Ejecución en Tablet** | 7d? | 2015-07-10 08:00 | 2015-07-20 17:00 |  | 1d |  |  | 112h | 112 |
| 165 | 13.1.1.1.1 | Ejecución en Samsung de 10.1" /SO Android 4.1.2 (Principal) | 3d? | 2015-07-10 08:00 | 2015-07-14 17:00 |  | 1d | 0d | QAI - 1; Tester - 1 | 48h | 48 |
| 166 | 13.1.1.1.2 | Ejecución en Lenovo 7" / SO Android 4.2.2 (Secundario) | 1d? | 2015-07-15 08:00 | 2015-07-15 17:00 | 165 | 1d | 0d | QAI - 1; Tester - 1 | 16h | 16 |
| 167 | 13.1.1.1.3 | Tablet AOC / SO: Android 4.1.1 (Secundario) | 1d? | 2015-07-16 08:00 | 2015-07-16 17:00 | 166 | 1d | 0d | QAI - 1; Tester - 1 | 16h | 16 |
| 168 | 13.1.1.1.4 | Ejecución en Ipad SO 7 (Secundario) | 1d? | 2015-07-17 08:00 | 2015-07-17 17:00 | 167 | 1d | 0d | QAI - 1; Tester - 1 | 16h | 16 |
| 169 | 13.1.1.1.5 | Ejecución en Ipad SO 8 (Secundario) | 1d? | 2015-07-20 08:00 | 2015-07-20 17:00 | 168 | 1d |  | QAI - 1; Tester - 1 | 16h | 16 |
| 170 | 13.1.1.2 | **Ejecución en SmartPhone** | 8d? | 2015-07-10 08:00 | 2015-07-21 17:00 |  | 0d |  |  | 128h | 128 |
| 171 | 13.1.1.2.1 | Nokia Lumia 520 / SO: Windows Phone 8.0 (Principal) | 3d? | 2015-07-10 08:00 | 2015-07-14 17:00 |  | 0d |  | QAI - 2; Tester - 2 | 48h | 48 |
| 172 | 13.1.1.2.2 | Ejecución en Samsung Galaxy Chat/SO -SO Android 4.1.2 (secundario) | 1d? | 2015-07-15 08:00 | 2015-07-15 17:00 | 171 | 0d |  | QAI - 2; Tester - 2 | 16h | 16 |
| 173 | 13.1.1.2.3 | Samsung Galaxy S III Mini / SO: Android 4.1.2 (Principal) | 1d? | 2015-07-16 08:00 | 2015-07-16 17:00 | 172 | 0d |  | QAI - 2; Tester - 2 | 16h | 16 |
| 174 | 13.1.1.2.4 | Ejecución en Iphone 4 / iSO 7 (Principal) | 1d? | 2015-07-17 08:00 | 2015-07-17 17:00 | 173 | 0d |  | QAI - 2; Tester - 2 | 16h | 16 |
| 175 | 13.1.1.2.5 | Ejecución en Iphone 5 / iSO 7 (Secundario) | 1d? | 2015-07-20 08:00 | 2015-07-20 17:00 | 174 | 0d |  | QAI - 2; Tester - 2 | 16h | 16 |
| 176 | 13.1.1.2.6 | Ejecución en Iphone 6 / iSO 7 (Secundario) | 1d? | 2015-07-21 08:00 | 2015-07-21 17:00 | 175 | 0d |  | QAI - 2; Tester - 2 | 16h | 16 |

| ID | WBS | Task | Duration | Start | Finish | Predecessors | Total slack | Free slack | Resources | Work | Cost |
| --- | --- | --- | --- | --- | --- | --- | --- | --- | --- | --- | --- |
| 177 | 13.1.2 | **Web** | 5d? | 2015-07-10 08:00 | 2015-07-16 17:00 |  | 3d |  |  | 80h | 80 |
| 178 | 13.1.2.1 | **Ejecución en Web Browser - IE9 (Principal)** | 3.75d? | 2015-07-10 08:00 | 2015-07-15 15:00 |  | 3d | 0d |  | 60h | 60 |
| 179 | 13.1.2.1.1 | Ejecución de casos de prueba funcionales | 2.25d? | 2015-07-10 08:00 | 2015-07-14 10:00 |  | 3d | 0d | Tester - 3; QAI - 3 | 36h | 36 |
| 180 | 13.1.2.1.2 | Reporte de errores | 0.5d? | 2015-07-14 10:00 | 2015-07-14 15:00 | 179 | 3d | 0d | QAI - 3; Tester - 3 | 8h | 8 |
| 181 | 13.1.2.1.3 | Verificación de errores | 0.5d? | 2015-07-14 15:00 | 2015-07-15 10:00 | 180 | 3d | 0d | QAI - 3; Tester - 3 | 8h | 8 |
| 182 | 13.1.2.1.4 | Pruebas exploratoria | 0.5d? | 2015-07-15 10:00 | 2015-07-15 15:00 | 181 | 3d |  | QAI - 3; Tester - 3 | 8h | 8 |
| 183 | 13.1.2.2 | Ejecución en Web Browser - Chrome 40 (Secundario) | 1.25d? | 2015-07-15 15:00 | 2015-07-16 17:00 | 178 | 3d |  | QAI - 3; Tester - 3 | 20h | 20 |
| 184 | 13.2 | **Soporte a Pruebas Funcionales (Resolución de Bugs)** | 8d? | 2015-07-10 08:00 | 2015-07-21 17:00 | 163SS | 4d |  |  | 64h | 64 |
| 185 | 13.2.1 | Móvil | 8d | 2015-07-10 08:00 | 2015-07-21 17:00 |  | 4d |  | SEII - Mobile [50%] | 32h | 32 |
| 186 | 13.2.2 | Web | 8d? | 2015-07-10 08:00 | 2015-07-21 17:00 |  | 4d |  | SEII - Web [50%] | 32h | 32 |
| 187 | 13.3 | **Pruebas de Rendimiento** | 8.5d? | 2015-07-15 13:00 | 2015-07-27 17:00 |  | 0d |  |  | 68h | 68 |
| 188 | 13.3.1 | Creación de Scripts (Flujo: 6WS) | 4.5d? | 2015-07-15 13:00 | 2015-07-22 08:00 | 189SF | 4d |  | QAII | 36h | 36 |
| 189 | 13.3.2 | **Ejecución de Pruebas** | 2.5d? | 2015-07-22 08:00 | 2015-07-24 12:00 | 162 | 0d |  |  | 20h | 20 |
| 190 | 13.3.2.1 | Preparación del Ambiente | 0.75d? | 2015-07-22 08:00 | 2015-07-22 15:00 |  | 0d |  | QAII | 6h | 6 |
| 191 | 13.3.2.2 | Prueba de Ambiente | 0.25d? | 2015-07-22 15:00 | 2015-07-22 17:00 | 190 | 0d |  | QAII | 2h | 2 |
| 192 | 13.3.2.3 | Ejecución prueba de carga | 1.5d? | 2015-07-23 08:00 | 2015-07-24 12:00 | 191 | 0d |  | QAII | 12h | 12 |
| 193 | 13.3.3 | **Documentación** | 1.5d? | 2015-07-24 13:00 | 2015-07-27 17:00 | 189 | 0d |  |  | 12h | 12 |
| 194 | 13.3.3.1 | Parsing Logs | 0.5d? | 2015-07-24 13:00 | 2015-07-24 17:00 |  | 0d |  | QAII | 4h | 4 |
| 195 | 13.3.3.2 | Análisis y Notas Iniciales | 0.5d? | 2015-07-27 08:00 | 2015-07-27 12:00 | 194 | 0d |  | QAII | 4h | 4 |
| 196 | 13.3.3.3 | Creación de documento de resultados | 0.5d? | 2015-07-27 13:00 | 2015-07-27 17:00 | 195 | 0d |  | QAII | 4h | 4 |
| 197 | 13.4 | Soporte a Pruebas de Rendimiento | 2.5d | 2015-07-22 08:00 | 2015-07-24 12:00 | 189SS | 1.5d |  | SEII - Web [50%] | 10h | 10 |
| 198 | 14 | **Documentación** | 11.5d? | 2015-07-10 08:00 | 2015-07-27 12:00 | 163SS | 2.5d |  |  | 100h | 100 |
| 199 | 14.1 | **Móvil** | 10d? | 2015-07-10 08:00 | 2015-07-23 17:00 |  | 4d |  |  | 48h | 48 |
| 200 | 14.1.1 | Release notes | 1d? | 2015-07-10 08:00 | 2015-07-10 17:00 |  | 4d | 0d | SEII - Mobile [50%] | 4h | 4 |
| 201 | 14.1.2 | Manual de soporte | 3d? | 2015-07-13 08:00 | 2015-07-15 17:00 | 200 | 4d | 0d | SEII - Mobile [50%] | 12h | 12 |
| 202 | 14.1.3 | Manual de instalación | 4d? | 2015-07-16 08:00 | 2015-07-21 17:00 | 201 | 4d | 0d | SEII - Mobile [50%] | 16h | 16 |
| 203 | 14.1.4 | Manual de usuario | 2d? | 2015-07-22 08:00 | 2015-07-23 17:00 | 202 | 4d |  | SEII - Mobile | 16h | 16 |

| ID | WBS | Task | Duration | Start | Finish | Predecessors | Total slack | Free slack | Resources | Work | Cost |
| --- | --- | --- | --- | --- | --- | --- | --- | --- | --- | --- | --- |
| 204 | 14.2 | **Web** | 11.5d? | 2015-07-10 08:00 | 2015-07-27 12:00 |  | 2.5d |  |  | 52h | 52 |
| 205 | 14.2.1 | Release notes | 1d? | 2015-07-10 08:00 | 2015-07-10 17:00 |  | 2.5d | 0d | SEII - Web [50%] | 4h | 4 |
| 206 | 14.2.2 | Manual de usuario | 6d? | 2015-07-13 08:00 | 2015-07-20 17:00 | 205 | 2.5d | 0d | SEII - Web [50%] | 24h | 24 |
| 207 | 14.2.3 | Manual de soporte | 3d? | 2015-07-21 08:00 | 2015-07-23 17:00 | 206 | 2.5d | 0d | SEII - Web [50%] | 12h | 12 |
| 208 | 14.2.4 | Manual de instalación | 1.5d? | 2015-07-24 08:00 | 2015-07-27 12:00 | 207 | 2.5d |  | SEII - Web | 12h | 12 |
| 209 | 15 | **Generación de Binarios** | 1d? | 2015-07-30 08:00 | 2015-07-30 17:00 | 161 | 0d |  |  | 16h | 16 |
| 210 | 15.1 | Portal Web / Web Services | 1d? | 2015-07-30 08:00 | 2015-07-30 17:00 |  | 0d |  | SEII - Web | 8h | 8 |
| 211 | 15.2 | Aplicaciones Moviles (iOS, Android, Windows Phone) | 1d? | 2015-07-30 08:00 | 2015-07-30 17:00 |  | 0d |  | SEII - Mobile | 8h | 8 |
| 212 | 16 | Despliegue Certificación Yanbal | 1d? | 2015-07-31 08:00 | 2015-07-31 17:00 | 209 | 0d |  | SEII - Web; SEII - Mobile | 16h | 16 |
