# Yanbal PhoneGap - Web

Schedule from MS Project, 2015-04-14 to 2015-08-10, status date 2008-01-09, costs in $, A marks actual dates.
Avantica Technologies

## Calendars

- Standard: Mon-Fri 08:00-12:00, 13:00-17:00; Sat-Sun off. Exceptions (off unless hours are given): 2015-05-01 (Dia del Trabajo), 2015-06-29 (Día de San Pedro y San Pablo), 2015-07-28 to 2015-07-29 (Fiestas Patrias).

## Resources

| Resource | Rate |
| --- | --- |
| QAII | 1 |
| PM | 1 |
| UX | 1 |
| SEII - Mobile | 1 |
| SEII - Web | 1 |
| QAI - 1 | 1 |
| QAI - 2 | 1 |
| Tester - 1 | 1 |
| Tester - 2 | 1 |
| Yanbal | 1 |
| UX1 | 1 |
| QAI - 3 | 1 |
| Tester - 3 | 1 |
| ARQ | 1 |

## Schedule

| ID | WBS | Task | Type | Duration | Start | Finish | Predecessors | Complete | Remaining | Baseline start | Baseline finish | Baseline duration | Total slack | Constraint | Resources | Work | Actual work | Cost | Baseline cost | Actual cost |
| --- | --- | --- | --- | --- | --- | --- | --- | --- | --- | --- | --- | --- | --- | --- | --- | --- | --- | --- | --- | --- |
| 1 | 1 | Gestión del proyecto |  | 81d | 2015-04-14 08:00 A | 2015-08-10 17:00 |  | 41% | 47.88d |  |  |  | 0d |  | PM [40%] | 240h | 106h | 240 |  | 106 |
| 2 | 2 | Sesión de Inicio de Proyecto (KickOff) |  | 4h | 2015-04-14 08:00 A | 2015-04-14 12:00 A |  | 100% |  | 2015-04-14 08:00 | 2015-04-14 12:00 | 4h |  |  | SEII - Mobile; SEII - Web | 8h | 8h | 8 | 8 | 8 |
| 3 | 3 | **Análisis** |  | 16d? | 2015-04-14 13:00 A | 2015-05-07 12:00 A | 2 | 100% |  | 2015-04-14 13:00 | 2015-04-23 10:00 | 6.75d |  |  |  | 216h | 216h | 216 | 108 | 216 |
| 4 | 3.1 | Reuniones (124) |  | 2d | 2015-04-14 13:00 A | 2015-04-16 12:00 A |  | 100% |  | 2015-04-14 13:00 | 2015-04-16 12:00 | 2d |  |  | SEII - Mobile; SEII - Web | 32h | 32h | 32 | 32 | 32 |
| 5 | 3.2 | Especificación de requerimientos funcionales (125) |  | 1d | 2015-04-16 13:00 A | 2015-04-17 12:00 A | 4 | 100% |  | 2015-04-16 13:00 | 2015-04-16 17:00 | 0.5d |  |  | SEII - Mobile; SEII - Web | 16h | 16h | 16 | 8 | 16 |
| 6 | 3.3 | Creación de Wireframes (126) |  | 4d | 2015-04-17 13:00 A | 2015-04-23 12:00 A | 5 | 100% |  | 2015-04-17 08:00 | 2015-04-20 17:00 | 2d |  |  | SEII - Mobile; SEII - Web | 64h | 64h | 64 | 32 | 64 |
| 7 | 3.4 | Especificación de casos de uso (127) |  | 3d | 2015-04-21 13:00 A | 2015-04-24 12:00 A | 6 | 100% |  | 2015-04-21 08:00 | 2015-04-22 17:00 | 2d |  |  | SEII - Mobile; SEII - Web | 48h | 48h | 48 | 32 | 48 |
| 8 | 3.5 | Matriz de trazabilidad: requerimientos / casos de uso (128) |  | 0.25d | 2015-04-28 13:00 A | 2015-04-28 15:00 A | 7 | 100% |  | 2015-04-23 08:00 | 2015-04-23 10:00 | 0.25d |  |  | SEII - Mobile; SEII - Web | 4h | 4h | 4 | 4 | 4 |
| 9 | 3.6 | Aprobación Yanbal |  | 2.5d? | 2015-04-30 08:00 A | 2015-05-05 12:00 A | 8 | 100% |  |  |  |  |  |  | Yanbal | 20h | 20h | 20 |  | 20 |
| 10 | 3.7 | Modificación de documentos |  | 2d? | 2015-05-05 13:00 A | 2015-05-07 12:00 A | 9 | 100% |  |  |  |  |  |  | SEII - Mobile; SEII - Web | 32h | 32h | 32 |  | 32 |
| 11 | 4 | Entregable Analisis | milestone | 0d | 2015-05-14 08:00 A | 2015-05-14 08:00 A | 3 | 100% |  |  |  |  |  | start no earlier than 2015-05-14 08:00 |  |  |  |  |  |  |
| 12 | 5 | **Diseño Técnico** |  | 34d? | 2015-04-14 08:00 A | 2015-06-01 17:00 |  | 92% | 2.81d? | 2015-04-23 10:00 | 2015-05-06 10:00 | 8d | 0d |  |  | 339h | 323h | 339 | 128 | 323 |
| 13 | 5.1 | Catalogo de servicios web a crear / consumir (137) |  | 1.5d | 2015-04-30 08:00 A | 2015-05-04 12:00 A | 9SS | 100% |  | 2015-05-04 10:00 | 2015-05-06 10:00 | 2d |  |  | SEII - Mobile; SEII - Web | 24h | 24h | 24 | 32 | 24 |
| 14 | 5.2 | Reuniones (129) |  | 2d | 2015-05-07 10:00 A | 2015-05-11 10:00 A | 13, 10 | 100% |  | 2015-04-23 10:00 | 2015-04-24 10:00 | 1d |  |  | SEII - Mobile; SEII - Web | 32h | 32h | 32 | 16 | 32 |
| 15 | 5.3 | Configurar ambiente de desarrollo (141 y 142) |  | 2.5d? | 2015-04-14 08:00 A | 2015-05-11 12:00 A | 14 | 100% |  |  |  |  |  |  | SEII - Mobile; SEII - Web | 40h | 40h | 40 |  | 40 |
| 16 | 5.4 | Revisión documentación Yanbal (143) |  | 0.25d? | 2015-05-11 13:00 A | 2015-05-11 15:00 A | 15 | 100% |  |  |  |  |  |  | SEII - Mobile; SEII - Web | 4h | 4h | 4 |  | 4 |
| 17 | 5.5 | Definir estándares de desarrollo (130 y 161) |  | 0.19d | 2015-05-08 10:00 A | 2015-05-08 11:30 A | 16 | 100% |  | 2015-04-24 10:00 | 2015-04-24 15:00 | 0.5d |  |  | SEII - Mobile; SEII - Web | 3h | 3h | 3 | 8 | 3 |
| 18 | 5.6 | Requerimientos no funcionales (131 y 162) |  | 0.31d | 2015-05-08 15:00 A | 2015-05-18 08:30 A | 17 | 100% |  | 2015-04-24 15:00 | 2015-04-27 10:00 | 0.5d |  |  | SEII - Mobile; SEII - Web | 5h | 5h | 5 | 8 | 5 |
| 19 | 5.7 | Arquitectura (132) |  | 0.88d | 2015-05-11 10:00 A | 2015-05-12 09:00 A | 18 | 100% |  | 2015-04-27 10:00 | 2015-04-27 12:00 | 0.25d |  |  | SEII - Mobile; SEII - Web | 14h | 14h | 14 | 4 | 14 |
| 20 | 5.8 | Base de Datos (136 y 160) |  | 0.88d | 2015-05-11 15:00 A | 2015-05-12 14:00 A | 19 | 100% |  | 2015-04-27 13:00 | 2015-04-27 17:00 | 0.5d |  |  | SEII - Mobile; SEII - Web | 14h | 14h | 14 | 8 | 14 |
| 21 | 5.9 | Especificación Técnica de la Solución (151 y 156) |  | 2d | 2015-05-12 10:00 A | 2015-05-14 10:00 A | 20 | 100% |  | 2015-04-28 08:00 | 2015-04-28 10:00 | 0.25d |  |  | SEII - Mobile; SEII - Web | 32h | 32h | 32 | 4 | 32 |
| 22 | 5.10 | Diagrama de Clases (148 y 149) |  | 0.62d | 2015-05-14 10:00 A | 2015-05-14 16:00 A | 21 | 100% |  | 2015-04-28 10:00 | 2015-04-30 10:00 | 2d |  |  | SEII - Mobile; SEII - Web | 10h | 10h | 10 | 32 | 10 |
| 23 | 5.11 | Mapa de Navegación (150 y 155) |  | 0.19d | 2015-05-15 08:00 A | 2015-05-15 09:30 A | 22 | 100% |  | 2015-04-30 10:00 | 2015-05-04 10:00 | 1d |  |  | SEII - Mobile; SEII - Web | 3h | 3h | 3 | 16 | 3 |
| 24 | 5.12 | Perfiles del sistema (153 y 158) |  | 0.12d? | 2015-05-15 09:30 A | 2015-05-15 10:30 A | 23 | 100% |  |  |  |  |  |  | SEII - Mobile; SEII - Web | 2h | 2h | 2 |  | 2 |
| 25 | 5.13 | Especificación de pantallas (152 y 157) |  | 0.75d? | 2015-05-15 10:30 A | 2015-05-18 08:30 A | 24 | 100% |  |  |  |  |  |  | SEII - Mobile; SEII - Web | 12h | 12h | 12 |  | 12 |
| 26 | 5.14 | Aprobación Yanbal |  | 2d? | 2015-05-19 15:00 A | 2015-05-21 15:00 A | 25 | 100% |  |  |  |  |  |  | Yanbal | 16h | 16h | 16 |  | 16 |
| 27 | 5.15 | Modificación de documentos (205 y 206) |  | 6d? | 2015-05-19 15:00 A | 2015-05-27 15:00 A | 26SS | 100% |  |  |  |  |  |  | SEII - Mobile; SEII - Web | 96h | 96h | 96 |  | 96 |
| 28 | 5.16 | Aprobación Yanbal |  | 2d? | 2015-05-27 08:00 A | 2015-05-28 17:00 A | 26 | 100% |  |  |  |  |  |  | Yanbal | 16h | 16h | 16 |  | 16 |
| 29 | 5.17 | Revisión de entregable por Aquitectura Avantica |  | 2d? | 2015-05-29 08:00 | 2015-06-01 17:00 | 28 |  |  |  |  |  | 0d |  | ARQ | 16h |  | 16 |  |  |
| 30 | 6 | Entregable Diseño Técnico | milestone | 0d | 2015-05-27 15:00 A | 2015-05-27 15:00 A | 12 | 100% |  |  |  |  |  |  | ARQ |  |  |  |  |  |
| 31 | 7 | Disponibilidad UX | milestone | 0d | 2015-04-29 08:00 A | 2015-04-29 08:00 A |  | 100% |  |  |  |  |  | start no earlier than 2015-04-29 08:00 |  |  |  |  |  |  |

| ID | WBS | Task | Type | Duration | Start | Finish | Predecessors | Complete | Baseline start | Baseline finish | Baseline duration | Constraint | Resources | Work | Actual work | Cost | Baseline cost | Actual cost |
| --- | --- | --- | --- | --- | --- | --- | --- | --- | --- | --- | --- | --- | --- | --- | --- | --- | --- | --- |
| 32 | 8 | **Diseño Gráfico** |  | 17d? | 2015-04-29 08:00 A | 2015-05-22 17:00 A | 31 | 100% | 2015-04-21 08:00 | 2015-05-18 10:00 | 18.25d |  |  | 142h | 142h | 142 | 146 | 142 |
| 33 | 8.1 | **Preparación de propuesta** |  | 8d | 2015-04-29 08:00 A | 2015-05-11 17:00 A |  | 100% | 2015-04-21 08:00 | 2015-04-30 10:00 | 7.25d |  |  | 82h | 82h | 82 | 58 | 82 |
| 34 | 8.1.1 | Reuniones con el cliente (información inicial) |  | 0.75d | 2015-04-29 08:00 A | 2015-04-29 15:00 A |  | 100% | 2015-04-21 08:00 | 2015-04-21 15:00 | 0.75d |  | UX | 6h | 6h | 6 | 6 | 6 |
| 35 | 8.1.2 | Elaboración de propuesta grafica (2 Pág. Maestras) Móvil |  | 3.5d | 2015-04-29 15:00 A | 2015-05-06 10:00 A | 34 | 100% | 2015-04-21 15:00 | 2015-04-24 10:00 | 2.5d |  | UX | 28h | 28h | 28 | 20 | 28 |
| 36 | 8.1.3 | Elaboración de propuesta grafica (2 Pág. Maestras) Web |  | 3.5d | 2015-05-05 10:00 A | 2015-05-08 15:00 A | 35 | 100% | 2015-04-24 10:00 | 2015-04-28 12:00 | 2.25d |  | UX | 28h | 28h | 28 | 18 | 28 |
| 37 | 8.1.4 | Elaboración de assets y cortes de imágenes |  | 2.5d | 2015-05-07 13:00 A | 2015-05-11 17:00 A | 36 | 100% | 2015-04-28 13:00 | 2015-04-30 10:00 | 1.75d |  | UX | 20h | 20h | 20 | 14 | 20 |
| 38 | 8.2 | **Preparación de maquetas y assets** |  | 9d? | 2015-05-12 08:00 A | 2015-05-22 17:00 A | 33 | 100% | 2015-04-30 10:00 | 2015-05-18 10:00 | 11d |  |  | 60h | 60h | 60 | 88 | 60 |
| 39 | 8.2.1 | **Kiosko Móvil** |  | 6d? | 2015-05-12 08:00 A | 2015-05-19 17:00 A |  | 100% | 2015-05-13 10:00 | 2015-05-18 10:00 | 3d |  |  | 36h | 36h | 36 | 24 | 36 |
| 40 | 8.2.1.1 | Login |  | 1d | 2015-05-12 08:00 A | 2015-05-12 17:00 A |  | 100% | 2015-05-13 10:00 | 2015-05-13 17:00 | 0.75d |  | UX [50%] | 6h | 6h | 6 | 6 | 6 |
| 41 | 8.2.1.2 | Página Principal |  | 1d | 2015-05-13 08:00 A | 2015-05-13 17:00 A | 40 | 100% | 2015-05-14 08:00 | 2015-05-14 15:00 | 0.75d |  | UX [50%] | 6h | 6h | 6 | 6 | 6 |
| 42 | 8.2.1.3 | Ver Colección |  | 1d | 2015-05-14 08:00 A | 2015-05-14 17:00 A | 41 | 100% | 2015-05-14 15:00 | 2015-05-15 12:00 | 0.75d |  | UX [50%] | 6h | 6h | 6 | 6 | 6 |
| 43 | 8.2.1.4 | Notificaciones |  | 1d | 2015-05-15 08:00 A | 2015-05-15 17:00 A | 42 | 100% | 2015-05-15 13:00 | 2015-05-18 10:00 | 0.75d |  | UX [50%] | 6h | 6h | 6 | 6 | 6 |
| 44 | 8.2.1.5 | Configuración |  | 1d? | 2015-05-18 08:00 A | 2015-05-18 17:00 A | 43 | 100% |  |  |  |  | UX [50%] | 6h | 6h | 6 |  | 6 |
| 45 | 8.2.1.6 | Ver/Descargar/Eliminar Archivo |  | 1d? | 2015-05-19 08:00 A | 2015-05-19 17:00 A | 44 | 100% |  |  |  |  |  | 6h | 6h | 6 |  | 6 |
| 46 | 8.2.2 | **Kisoko Web** |  | 3d? | 2015-05-20 08:00 A | 2015-05-22 17:00 A | 39 | 100% | 2015-04-30 10:00 | 2015-05-13 10:00 | 8d |  |  | 24h | 24h | 24 | 64 | 24 |
| 47 | 8.2.2.1 | Login |  | 0.38d | 2015-05-20 08:00 A | 2015-05-20 11:00 A |  | 100% | 2015-04-30 10:00 | 2015-05-04 10:00 | 1d |  | UX | 3h | 3h | 3 | 8 | 3 |
| 48 | 8.2.2.2 | Pantalla Principal |  | 0.38d? | 2015-05-20 11:00 A | 2015-05-20 15:00 A | 47 | 100% |  |  |  |  | UX | 3h | 3h | 3 |  | 3 |
| 49 | 8.2.2.3 | Administración de Colecciones |  | 0.38d | 2015-05-20 15:00 A | 2015-05-21 09:00 A | 48 | 100% | 2015-05-08 10:00 | 2015-05-08 17:00 | 0.75d |  | UX | 3h | 3h | 3 | 6 | 3 |
| 50 | 8.2.2.4 | Crear/Editar Colecciones |  | 0.38d? | 2015-05-21 09:00 A | 2015-05-21 12:00 A | 49 | 100% |  |  |  |  | UX | 3h | 3h | 3 |  | 3 |
| 51 | 8.2.2.5 | Cargar Archivos |  | 0.38d? | 2015-05-21 13:00 A | 2015-05-21 16:00 A | 50 | 100% |  |  |  |  | UX | 3h | 3h | 3 |  | 3 |
| 52 | 8.2.2.6 | Publicar Archivos |  | 0.38d? | 2015-05-21 16:00 A | 2015-05-22 10:00 A | 51 | 100% |  |  |  |  | UX | 3h | 3h | 3 |  | 3 |
| 53 | 8.2.2.7 | Mover Archivos |  | 0.38d? | 2015-05-22 10:00 A | 2015-05-22 14:00 A | 52 | 100% |  |  |  |  | UX | 3h | 3h | 3 |  | 3 |
| 54 | 8.2.2.8 | Configuración de límites de carga y descarga |  | 0.38d | 2015-05-22 14:00 A | 2015-05-22 17:00 A | 53 | 100% | 2015-05-11 08:00 | 2015-05-11 15:00 | 0.75d |  | UX | 3h | 3h | 3 | 6 | 3 |
| 55 | 9 | Entregable de Diseño Gráfico |  | 1d? | 2015-05-25 08:00 A | 2015-05-25 17:00 A | 32 | 100% |  |  |  |  |  |  |  |  |  |  |
| 56 | 10 | Disponibilidad QA | milestone | 0d | 2015-05-18 08:00 A | 2015-05-18 08:00 A |  | 100% |  |  |  | start no earlier than 2015-05-18 08:00 |  |  |  |  |  |  |

| ID | WBS | Task | Duration | Start | Finish | Predecessors | Complete | Remaining | Baseline start | Baseline finish | Baseline duration | Total slack | Free slack | Resources | Work | Actual work | Cost | Baseline cost | Actual cost |
| --- | --- | --- | --- | --- | --- | --- | --- | --- | --- | --- | --- | --- | --- | --- | --- | --- | --- | --- | --- |
| 57 | 11 | **Planificación y Especificación de Pruebas** | 10d? | 2015-05-18 08:00 A | 2015-05-29 17:00 | 56 | 91% | 0.91d? |  |  |  | 48d |  |  | 88h | 80h | 88 |  | 80 |
| 58 | 11.1 | Plan de Pruebas | 1d? | 2015-05-18 08:00 | 2015-05-18 17:00 |  |  |  |  |  |  | 57d |  | QAI - 1 | 8h |  | 8 |  |  |
| 59 | 11.2 | LCP | 2d? | 2015-05-19 08:00 A | 2015-05-20 17:00 A | 58 | 100% |  |  |  |  |  |  | QAI - 1 | 16h | 16h | 16 |  | 16 |
| 60 | 11.3 | ECP | 8d? | 2015-05-20 08:00 A | 2015-05-29 17:00 A | 59 | 100% |  |  |  |  |  |  | QAI - 1 | 64h | 64h | 64 |  | 64 |
| 61 | 12 | Soporte UX a Desarrollo | 9d? | 2015-06-02 08:00 | 2015-06-12 17:00 | 63SS |  |  |  |  |  | 38d |  | UX [25%] | 18h |  | 18 |  |  |
| 62 | 13 | **Desarrollo** | 30d? | 2015-06-02 08:00 | 2015-07-14 17:00 |  |  |  | 2015-05-06 10:00 | 2015-07-02 15:00 | 40.5d? | 0d |  |  | 440h |  | 440 | 548 |  |
| 63 | 13.1 | **HTML** | 9d? | 2015-06-02 08:00 | 2015-06-12 17:00 | 12 |  |  | 2015-05-07 15:00 | 2015-05-13 15:00 | 4d? | 2d | 0d |  | 72h |  | 72 | 32 |  |
| 64 | 13.1.1 | **Estructura base HTML** | 2d? | 2015-06-02 08:00 | 2015-06-03 17:00 |  |  |  |  |  |  | 2d | 0d |  | 16h |  | 16 |  |  |
| 65 | 13.1.1.1 | Móvil | 1d? | 2015-06-02 08:00 | 2015-06-02 17:00 |  |  |  |  |  |  | 2d | 0d | SEII - Mobile | 8h |  | 8 |  |  |
| 66 | 13.1.1.2 | Web | 1d? | 2015-06-03 08:00 | 2015-06-03 17:00 | 65 |  |  |  |  |  | 2d |  | SEII - Mobile | 8h |  | 8 |  |  |
| 67 | 13.1.2 | **Páginas Móvil** | 3d? | 2015-06-04 08:00 | 2015-06-08 17:00 | 64 |  |  |  |  |  | 2d | 0d |  | 24h |  | 24 |  |  |
| 68 | 13.1.2.1 | Inicio Session | 0.38d? | 2015-06-04 08:00 | 2015-06-04 11:00 |  |  |  |  |  |  | 2d | 0d | SEII - Mobile | 3h |  | 3 |  |  |
| 69 | 13.1.2.2 | Pagina Principal | 0.38d? | 2015-06-04 11:00 | 2015-06-04 15:00 | 68 |  |  |  |  |  | 2d | 0d | SEII - Mobile | 3h |  | 3 |  |  |
| 70 | 13.1.2.3 | Coleccion seleccionada | 0.12d? | 2015-06-04 15:00 | 2015-06-04 16:00 | 69 |  |  |  |  |  | 2d | 0d | SEII - Mobile | 1h |  | 1 |  |  |
| 71 | 13.1.2.4 | Opciones del archivo | 0.25d? | 2015-06-04 16:00 | 2015-06-05 09:00 | 70 |  |  |  |  |  | 2d | 0d | SEII - Mobile | 2h |  | 2 |  |  |
| 72 | 13.1.2.5 | Página de configuración | 0.12d? | 2015-06-05 09:00 | 2015-06-05 10:00 | 71 |  |  |  |  |  | 2d | 0d | SEII - Mobile | 1h |  | 1 |  |  |
| 73 | 13.1.2.6 | Panel de notificaciones | 0.75d? | 2015-06-05 10:00 | 2015-06-05 17:00 | 72 |  |  |  |  |  | 2d | 0d | SEII - Mobile | 6h |  | 6 |  |  |
| 74 | 13.1.2.7 | Sincronización | 0.5d? | 2015-06-08 08:00 | 2015-06-08 12:00 | 73 |  |  |  |  |  | 2d | 0d | SEII - Mobile | 4h |  | 4 |  |  |
| 75 | 13.1.2.8 | Revisión/Corrección con UX | 0.5d? | 2015-06-08 13:00 | 2015-06-08 17:00 | 74 |  |  |  |  |  | 2d |  | SEII - Mobile | 4h |  | 4 |  |  |
| 76 | 13.1.3 | **Páginas Web** | 4d? | 2015-06-09 08:00 | 2015-06-12 17:00 | 67 |  |  |  |  |  | 2d |  |  | 32h |  | 32 |  |  |
| 77 | 13.1.3.1 | Página Principal | 0.5d? | 2015-06-09 08:00 | 2015-06-09 12:00 |  |  |  |  |  |  | 2d | 0d | SEII - Mobile | 4h |  | 4 |  |  |
| 78 | 13.1.3.2 | Inicio Session | 0.5d? | 2015-06-09 13:00 | 2015-06-09 17:00 | 77 |  |  |  |  |  | 2d | 0d | SEII - Mobile | 4h |  | 4 |  |  |
| 79 | 13.1.3.3 | Mantener Colecciones | 1.5d? | 2015-06-10 08:00 | 2015-06-11 12:00 | 78 |  |  |  |  |  | 2d | 0d | SEII - Mobile | 12h |  | 12 |  |  |
| 80 | 13.1.3.4 | Configurar limite de descarga | 0.5d? | 2015-06-11 13:00 | 2015-06-11 17:00 | 79 |  |  |  |  |  | 2d | 0d | SEII - Mobile | 4h |  | 4 |  |  |
| 81 | 13.1.3.5 | Revisión/Corrección con UX | 1d? | 2015-06-12 08:00 | 2015-06-12 17:00 | 80 |  |  |  |  |  | 2d |  | SEII - Mobile | 8h |  | 8 |  |  |

| ID | WBS | Task | Duration | Start | Finish | Predecessors | Baseline start | Baseline finish | Baseline duration | Total slack | Free slack | Resources | Work | Cost | Baseline cost |
| --- | --- | --- | --- | --- | --- | --- | --- | --- | --- | --- | --- | --- | --- | --- | --- |
| 82 | 13.2 | **PhoneGap** | 16d? | 2015-06-15 08:00 | 2015-07-07 17:00 | 63 | 2015-05-13 15:00 | 2015-06-12 10:00 | 21.5d? | 5d |  |  | 128h | 128 | 172 |
| 83 | 13.2.1 | Creación proyecto base | 1d? | 2015-06-15 08:00 | 2015-06-15 17:00 |  |  |  |  | 5d | 0d | SEII - Mobile | 8h | 8 |  |
| 84 | 13.2.2 | Revisión de pares | 1d? | 2015-06-16 08:00 | 2015-06-16 17:00 | 83 |  |  |  | 5d | 0d | SEII - Mobile | 8h | 8 |  |
| 85 | 13.2.3 | Creación archivo de propiedades | 0.75d? | 2015-06-17 08:00 | 2015-06-17 15:00 | 84 |  |  |  | 5d | 0d | SEII - Mobile | 6h | 6 |  |
| 86 | 13.2.4 | Listener para eventos Back | 1.5d? | 2015-06-17 15:00 | 2015-06-19 10:00 | 85 | 2015-05-13 15:00 | 2015-05-14 10:00 | 0.5d? | 5d | 0d | SEII - Mobile | 12h | 12 | 4 |
| 87 | 13.2.5 | **CUM-001: Autenticar usuario** | 1d? | 2015-06-19 10:00 | 2015-06-22 10:00 | 86 |  |  |  | 5d | 0d |  | 8h | 8 |  |
| 88 | 13.2.5.1 | Consumir servicio | 0.25d? | 2015-06-19 10:00 | 2015-06-19 12:00 |  |  |  |  | 5d | 0d | SEII - Mobile | 2h | 2 |  |
| 89 | 13.2.5.2 | Crear token | 0.25d? | 2015-06-19 13:00 | 2015-06-19 15:00 | 88 |  |  |  | 5d | 0d | SEII - Mobile | 2h | 2 |  |
| 90 | 13.2.5.3 | Guardar sesión | 0.5d? | 2015-06-19 15:00 | 2015-06-22 10:00 | 89 |  |  |  | 5d |  | SEII - Mobile | 4h | 4 |  |
| 91 | 13.2.6 | **CUM-002: Sincronizar Contenido y CUM-006: Mostrar notificación** | 3.75d? | 2015-06-22 10:00 | 2015-06-25 17:00 | 87 |  |  |  | 5d | 0d |  | 30h | 30 |  |
| 92 | 13.2.6.1 | Consumir servicio (sincronización al inicio y a demanda) | 0.5d? | 2015-06-22 10:00 | 2015-06-22 15:00 |  |  |  |  | 5d | 0d | SEII - Mobile | 4h | 4 |  |
| 93 | 13.2.6.2 | Guardar datos en cache | 0.75d? | 2015-06-22 15:00 | 2015-06-23 12:00 | 92 |  |  |  | 5d | 0d | SEII - Mobile | 6h | 6 |  |
| 94 | 13.2.6.3 | Actualizar panel de notificacion | 0.5d? | 2015-06-23 13:00 | 2015-06-23 17:00 | 93 |  |  |  | 5d | 0d | SEII - Mobile | 4h | 4 |  |
| 95 | 13.2.6.4 | Actualizar panel de configuración (ultima sync y cant max descarga) | 0.25d? | 2015-06-24 08:00 | 2015-06-24 10:00 | 94 |  |  |  | 5d | 0d | SEII - Mobile | 2h | 2 |  |
| 96 | 13.2.6.5 | Actualizar panel de notificacion para eliminar visto | 0.5d? | 2015-06-24 10:00 | 2015-06-24 15:00 | 95 |  |  |  | 5d | 0d | SEII - Mobile | 4h | 4 |  |
| 97 | 13.2.6.6 | Configuración para notificaciones push (panel nativo) | 1d? | 2015-06-24 15:00 | 2015-06-25 15:00 | 96 |  |  |  | 5d | 0d | SEII - Mobile | 8h | 8 |  |
| 98 | 13.2.6.7 | Mensaje confirmación éxito/error sincronización por conexión de internet | 0.25d? | 2015-06-25 15:00 | 2015-06-25 17:00 | 97 |  |  |  | 5d |  | SEII - Mobile | 2h | 2 |  |
| 99 | 13.2.7 | **CUM-003: Visualizar Contenido** | 2.25d? | 2015-06-26 08:00 | 2015-07-01 10:00 | 91 |  |  |  | 5d | 0d |  | 18h | 18 |  |
| 100 | 13.2.7.1 | Consumir servicio | 0.5d? | 2015-06-26 08:00 | 2015-06-26 12:00 |  |  |  |  | 5d | 0d | SEII - Mobile | 4h | 4 |  |
| 101 | 13.2.7.2 | Manejo de nagevabilidad | 0.5d? | 2015-06-26 13:00 | 2015-06-26 17:00 | 100 |  |  |  | 5d | 0d | SEII - Mobile | 4h | 4 |  |
| 102 | 13.2.7.3 | Ver archivo | 1d? | 2015-06-30 08:00 | 2015-06-30 17:00 | 101 |  |  |  | 5d | 0d | SEII - Mobile | 8h | 8 |  |
| 103 | 13.2.7.4 | Mostrar mensaje de confirmación para descargar con red movil (validacion peso máximo) | 0.25d? | 2015-07-01 08:00 | 2015-07-01 10:00 | 102 |  |  |  | 5d |  | SEII - Mobile | 2h | 2 |  |
| 104 | 13.2.8 | **CUM-004: Descargar Archivo** | 0.75d? | 2015-07-01 10:00 | 2015-07-01 17:00 | 99 |  |  |  | 5d | 0d |  | 6h | 6 |  |
| 105 | 13.2.8.1 | Consumir servicio | 0.25d? | 2015-07-01 10:00 | 2015-07-01 12:00 |  |  |  |  | 5d | 0d | SEII - Mobile | 2h | 2 |  |
| 106 | 13.2.8.2 | Marcar contenido como descargado | 0.25d? | 2015-07-01 13:00 | 2015-07-01 15:00 | 105 |  |  |  | 5d | 0d | SEII - Mobile | 2h | 2 |  |
| 107 | 13.2.8.3 | Mostrar mensaje de confirmación para descargar con red movil (validacion peso máximo) | 0.25d? | 2015-07-01 15:00 | 2015-07-01 17:00 | 106 |  |  |  | 5d |  | SEII - Mobile | 2h | 2 |  |

Notes:
- 86: Incluye envío de datos cuando haya internet. / Considerar caso en que se muere la app.

| ID | WBS | Task | Duration | Start | Finish | Predecessors | Baseline start | Baseline finish | Baseline duration | Total slack | Free slack | Resources | Work | Cost | Baseline cost |
| --- | --- | --- | --- | --- | --- | --- | --- | --- | --- | --- | --- | --- | --- | --- | --- |
| 108 | 13.2.9 | **CUM-005: Eliminar Archivos** | 1d? | 2015-07-02 08:00 | 2015-07-02 17:00 | 104 |  |  |  | 5d | 0d |  | 8h | 8 |  |
| 109 | 13.2.9.1 | Consumir servicio | 0.5d? | 2015-07-02 08:00 | 2015-07-02 12:00 |  |  |  |  | 5d | 0d | SEII - Mobile | 4h | 4 |  |
| 110 | 13.2.9.2 | Guardar datos en cache | 0.5d? | 2015-07-02 13:00 | 2015-07-02 17:00 | 109 |  |  |  | 5d |  | SEII - Mobile | 4h | 4 |  |
| 111 | 13.2.10 | **CUM-007: Enviar métricas** | 1d? | 2015-07-03 08:00 | 2015-07-03 17:00 | 108 |  |  |  | 5d | 0d |  | 8h | 8 |  |
| 112 | 13.2.10.1 | Enviar parametro de log en los servicios | 0.5d? | 2015-07-03 08:00 | 2015-07-03 12:00 |  |  |  |  | 5d | 0d | SEII - Mobile | 4h | 4 |  |
| 113 | 13.2.10.2 | Colocar url de google analytics en las acciones | 0.5d? | 2015-07-03 13:00 | 2015-07-03 17:00 | 112 |  |  |  | 5d |  | SEII - Mobile | 4h | 4 |  |
| 114 | 13.2.11 | **CUM-008: Permitir uso de red móvil en descarga** | 0.5d? | 2015-07-06 08:00 | 2015-07-06 12:00 | 111 |  |  |  | 5d | 0d |  | 4h | 4 |  |
| 115 | 13.2.11.1 | Grabar en cache | 0.5d? | 2015-07-06 08:00 | 2015-07-06 12:00 |  |  |  |  | 5d |  | SEII - Mobile | 4h | 4 |  |
| 116 | 13.2.12 | Pruebas desarrollador | 1d? | 2015-07-06 13:00 | 2015-07-07 12:00 | 114 |  |  |  | 5d | 0d | SEII - Mobile | 8h | 8 |  |
| 117 | 13.2.13 | Revisión de pares | 0.5d? | 2015-07-07 13:00 | 2015-07-07 17:00 | 116 |  |  |  | 5d |  | SEII - Mobile | 4h | 4 |  |
| 118 | 13.3 | **Web Services** | 11d? | 2015-06-02 08:00 | 2015-06-16 17:00 | 12 | 2015-05-07 15:00 | 2015-06-10 15:00 | 24d? | 0d |  |  | 88h | 88 | 192 |
| 119 | 13.3.1 | Reuniones | 1d? | 2015-06-02 08:00 | 2015-06-02 17:00 |  | 2015-05-07 15:00 | 2015-05-11 15:00 | 2d? | 0d |  | SEII - Web | 8h | 8 | 16 |
| 120 | 13.3.2 | Creación servicio web y estructura base | 1d | 2015-06-03 08:00 | 2015-06-03 17:00 | 119 | 2015-05-11 15:00 | 2015-05-13 15:00 | 2d | 0d |  | SEII - Web | 8h | 8 | 16 |
| 121 | 13.3.3 | Implementación log (bitácora) | 0.5d | 2015-06-04 08:00 | 2015-06-04 12:00 | 120 | 2015-05-13 15:00 | 2015-05-18 15:00 | 3d | 0d |  | SEII - Web | 4h | 4 | 24 |
| 122 | 13.3.4 | Implementación utilitarios base (parseo, conversión) | 1d | 2015-06-04 13:00 | 2015-06-05 12:00 | 121 | 2015-05-18 15:00 | 2015-05-20 15:00 | 2d | 0d |  | SEII - Web | 8h | 8 | 16 |
| 123 | 13.3.5 | Seguridad (SSL) | 1d? | 2015-06-05 13:00 | 2015-06-08 12:00 | 122 | 2015-05-20 15:00 | 2015-05-22 15:00 | 2d? | 0d |  | SEII - Web | 8h | 8 | 16 |
| 124 | 13.3.6 | Autenticar usuario movil | 1d | 2015-06-08 13:00 | 2015-06-09 12:00 | 123 | 2015-05-22 15:00 | 2015-05-25 15:00 | 1d | 0d |  | SEII - Web | 8h | 8 | 8 |
| 125 | 13.3.7 | ObtenerColeccionesContenido | 1d | 2015-06-09 13:00 | 2015-06-10 12:00 | 124 | 2015-05-25 15:00 | 2015-05-26 15:00 | 1d | 0d |  | SEII - Web | 8h | 8 | 8 |
| 126 | 13.3.8 | ObtenerArchivo | 1d | 2015-06-10 13:00 | 2015-06-11 12:00 | 125 | 2015-05-26 15:00 | 2015-05-27 12:00 | 0.75d | 0d |  | SEII - Web | 8h | 8 | 6 |
| 127 | 13.3.9 | ObtenerNotificaciones | 1d | 2015-06-11 13:00 | 2015-06-12 12:00 | 126 | 2015-05-27 13:00 | 2015-05-28 10:00 | 0.75d | 0d |  | SEII - Web | 8h | 8 | 6 |
| 128 | 13.3.10 | ActualizarNotificacion | 1d | 2015-06-12 13:00 | 2015-06-15 12:00 | 127 | 2015-05-28 10:00 | 2015-06-01 10:00 | 2d | 0d |  | SEII - Web | 8h | 8 | 16 |
| 129 | 13.3.11 | AutenticacionWeb | 0.5d | 2015-06-15 13:00 | 2015-06-15 17:00 | 128 | 2015-06-01 10:00 | 2015-06-02 10:00 | 1d | 0d |  | SEII - Web | 4h | 4 | 8 |
| 130 | 13.3.12 | Pruebas de desarrollador | 0.5d | 2015-06-16 08:00 | 2015-06-16 12:00 | 129 | 2015-06-02 10:00 | 2015-06-03 10:00 | 1d | 0d |  | SEII - Web | 4h | 4 | 8 |
| 131 | 13.3.13 | Revisión de pares | 0.5d | 2015-06-16 13:00 | 2015-06-16 17:00 | 130 | 2015-06-03 10:00 | 2015-06-04 10:00 | 1d | 0d |  | SEII - Web | 4h | 4 | 8 |

| ID | WBS | Task | Duration | Start | Finish | Predecessors | Baseline start | Baseline finish | Baseline duration | Total slack | Resources | Work | Cost | Baseline cost |
| --- | --- | --- | --- | --- | --- | --- | --- | --- | --- | --- | --- | --- | --- | --- |
| 132 | 13.4 | **Portal Web** | 19d? | 2015-06-17 08:00 | 2015-07-14 17:00 | 118, 63 | 2015-06-10 15:00 | 2015-07-02 15:00 | 15d? | 0d |  | 152h | 152 | 120 |
| 133 | 13.4.1 | Creación proyecto base | 1d | 2015-06-17 08:00 | 2015-06-17 17:00 |  | 2015-06-10 15:00 | 2015-06-11 15:00 | 1d | 0d | SEII - Web | 8h | 8 | 8 |
| 134 | 13.4.2 | **CUW-001: Iniciar sesión** | 1.5d | 2015-06-18 08:00 | 2015-06-19 12:00 | 133 | 2015-06-11 15:00 | 2015-06-12 10:00 | 0.5d | 0d |  | 12h | 12 | 4 |
| 135 | 13.4.2.1 | Consumir servicio Yanbal | 1d | 2015-06-18 08:00 | 2015-06-18 17:00 |  | 2015-06-12 10:00 | 2015-06-15 10:00 | 1d | 0d | SEII - Web | 8h | 8 | 8 |
| 136 | 13.4.2.2 | Validar Rol obtenido | 0.5d | 2015-06-19 08:00 | 2015-06-19 12:00 | 135 | 2015-06-15 10:00 | 2015-06-16 10:00 | 1d | 0d | SEII - Web | 4h | 4 | 8 |
| 137 | 13.4.3 | **CUW-002: Configurar tamaño de Carga y Descarga** | 1d? | 2015-06-19 13:00 | 2015-06-22 12:00 | 136, 134 | 2015-06-16 10:00 | 2015-06-18 10:00 | 2d | 0d |  | 8h | 8 | 16 |
| 138 | 13.4.3.1 | Listar Limites de Carga y Descarga | 0.5d | 2015-06-19 13:00 | 2015-06-19 17:00 |  | 2015-06-18 10:00 | 2015-06-19 10:00 | 1d | 0d | SEII - Web | 4h | 4 | 8 |
| 139 | 13.4.3.2 | Editar Limite Carga y Descarga | 0.5d? | 2015-06-22 08:00 | 2015-06-22 12:00 | 138 |  |  |  | 0d | SEII - Web | 4h | 4 |  |
| 140 | 13.4.4 | **CUW-003: Gestionar Colecciones** | 3.25d? | 2015-06-22 13:00 | 2015-06-25 15:00 | 137 |  |  |  | 0d |  | 26h | 26 |  |
| 141 | 13.4.4.1 | Listar Coleccion | 0.75d? | 2015-06-22 13:00 | 2015-06-23 10:00 |  |  |  |  | 0d | SEII - Web | 6h | 6 |  |
| 142 | 13.4.4.2 | Buscar Coleccion | 0.5d? | 2015-06-23 10:00 | 2015-06-23 15:00 | 141 |  |  |  | 0d | SEII - Web | 4h | 4 |  |
| 143 | 13.4.4.3 | Crear Coleccion | 0.75d? | 2015-06-23 15:00 | 2015-06-24 12:00 | 142 |  |  |  | 0d | SEII - Web | 6h | 6 |  |
| 144 | 13.4.4.4 | Editar Coleccion | 0.75d? | 2015-06-24 13:00 | 2015-06-25 10:00 | 143 |  |  |  | 0d | SEII - Web | 6h | 6 |  |
| 145 | 13.4.4.5 | Eliminar Coleccion | 0.5d? | 2015-06-25 10:00 | 2015-06-25 15:00 | 144 |  |  |  | 0d | SEII - Web | 4h | 4 |  |
| 146 | 13.4.5 | **CUW-004: Gestionar Archivos** | 3.75d? | 2015-06-25 15:00 | 2015-07-02 12:00 | 140 |  |  |  | 0d |  | 30h | 30 |  |
| 147 | 13.4.5.1 | Listar Archivo | 0.75d? | 2015-06-25 15:00 | 2015-06-26 12:00 |  |  |  |  | 0d | SEII - Web | 6h | 6 |  |
| 148 | 13.4.5.2 | Crear Archivo | 0.75d? | 2015-06-26 13:00 | 2015-06-30 10:00 | 147 |  |  |  | 0d | SEII - Web | 6h | 6 |  |
| 149 | 13.4.5.3 | Editar Archivo | 0.75d? | 2015-06-30 10:00 | 2015-06-30 17:00 | 148 |  |  |  | 0d | SEII - Web | 6h | 6 |  |
| 150 | 13.4.5.4 | Cargar Archivo | 0.5d? | 2015-07-01 08:00 | 2015-07-01 12:00 | 149 |  |  |  | 0d | SEII - Web | 4h | 4 |  |
| 151 | 13.4.5.5 | Validar limite de Carga de archivo | 0.25d? | 2015-07-01 13:00 | 2015-07-01 15:00 | 150 |  |  |  | 0d | SEII - Web | 2h | 2 |  |
| 152 | 13.4.5.6 | Eliminar Archivo | 0.75d? | 2015-07-01 15:00 | 2015-07-02 12:00 | 151 |  |  |  | 0d | SEII - Web | 6h | 6 |  |
| 153 | 13.4.6 | **CUW-005 Publicar Archivo** | 4.75d? | 2015-07-02 13:00 | 2015-07-09 10:00 | 146 |  |  |  | 0d |  | 38h | 38 |  |
| 154 | 13.4.6.1 | Listar Roles | 0.75d? | 2015-07-02 13:00 | 2015-07-03 10:00 |  |  |  |  | 0d | SEII - Web | 6h | 6 |  |
| 155 | 13.4.6.2 | Listar Pais | 0.5d? | 2015-07-03 10:00 | 2015-07-03 15:00 | 154 |  |  |  | 0d | SEII - Web | 4h | 4 |  |
| 156 | 13.4.6.3 | Remover Rol asignado | 0.5d? | 2015-07-03 15:00 | 2015-07-06 10:00 | 155 |  |  |  | 0d | SEII - Web | 4h | 4 |  |
| 157 | 13.4.6.4 | Guardar Publicacion | 1d? | 2015-07-06 10:00 | 2015-07-07 10:00 | 156 |  |  |  | 0d | SEII - Web | 8h | 8 |  |
| 158 | 13.4.6.5 | Enviar Push Notificaction a Servidores (Iphone, Android, WinPhone) | 2d? | 2015-07-07 10:00 | 2015-07-09 10:00 | 157 |  |  |  | 0d | SEII - Web | 16h | 16 |  |

| ID | WBS | Task | Duration | Start | Finish | Predecessors | Total slack | Free slack | Resources | Work | Cost |
| --- | --- | --- | --- | --- | --- | --- | --- | --- | --- | --- | --- |
| 159 | 13.4.7 | **CUW-006 Mover Archivos** | 1.25d? | 2015-07-09 10:00 | 2015-07-10 12:00 | 153 | 0d |  |  | 10h | 10 |
| 160 | 13.4.7.1 | Listar Coleccion | 0.75d? | 2015-07-09 10:00 | 2015-07-09 17:00 |  | 0d |  | SEII - Web | 6h | 6 |
| 161 | 13.4.7.2 | Mover Archivo | 0.5d? | 2015-07-10 08:00 | 2015-07-10 12:00 | 160 | 0d |  | SEII - Web | 4h | 4 |
| 162 | 13.4.8 | **CUW-007 Enviar Notificaciones** | 1.25d? | 2015-07-10 13:00 | 2015-07-13 15:00 | 159 | 0d |  |  | 10h | 10 |
| 163 | 13.4.8.1 | Registrar Notificacion por Archivo y usuario | 1.25d? | 2015-07-10 13:00 | 2015-07-13 15:00 |  | 0d |  | SEII - Web | 10h | 10 |
| 164 | 13.4.9 | Pruebas de desarrollador | 0.75d? | 2015-07-13 15:00 | 2015-07-14 12:00 | 162 | 0d |  | SEII - Web | 6h | 6 |
| 165 | 13.4.10 | Revisión de pares | 0.5d? | 2015-07-14 13:00 | 2015-07-14 17:00 | 164 | 0d |  | SEII - Web | 4h | 4 |
| 166 | 14 | Configuración ambiente QA | 1d? | 2015-07-15 08:00 | 2015-07-15 17:00 | 62 | 0d |  | SEII - Web; SEII - Mobile | 16h | 16 |
| 167 | 15 | Pruebas exploratorias | 2d? | 2015-07-16 08:00 | 2015-07-17 17:00 | 166 | 0d |  | QAI - 1; SEII - Web; SEII - Mobile | 48h | 48 |
| 168 | 16 | **Aseguramiento de la calidad** | 12d? | 2015-07-20 08:00 | 2015-08-06 17:00 | 167 | 0d |  |  | 462h | 462 |
| 169 | 16.1 | **Pruebas Funcionales** | 8d? | 2015-07-20 08:00 | 2015-07-31 17:00 |  | 0d |  |  | 320h | 320 |
| 170 | 16.1.1 | **Móvil** | 8d? | 2015-07-20 08:00 | 2015-07-31 17:00 |  | 0d |  |  | 240h | 240 |
| 171 | 16.1.1.1 | **Ejecución en Tablet** | 7d? | 2015-07-20 08:00 | 2015-07-30 17:00 |  | 1d |  |  | 112h | 112 |
| 172 | 16.1.1.1.1 | Ejecución en Samsung de 10.1" /SO Android 4.1.2 (Principal) | 3d? | 2015-07-20 08:00 | 2015-07-22 17:00 |  | 1d | 0d | QAI - 1; Tester - 1 | 48h | 48 |
| 173 | 16.1.1.1.2 | Ejecución en Lenovo 7" / SO Android 4.2.2 (Secundario) | 1d? | 2015-07-23 08:00 | 2015-07-23 17:00 | 172 | 1d | 0d | QAI - 1; Tester - 1 | 16h | 16 |
| 174 | 16.1.1.1.3 | Tablet AOC / SO: Android 4.1.1 (Secundario) | 1d? | 2015-07-24 08:00 | 2015-07-24 17:00 | 173 | 1d | 0d | QAI - 1; Tester - 1 | 16h | 16 |
| 175 | 16.1.1.1.4 | Ejecución en Ipad SO 7 (Secundario) | 1d? | 2015-07-27 08:00 | 2015-07-27 17:00 | 174 | 1d | 0d | QAI - 1; Tester - 1 | 16h | 16 |
| 176 | 16.1.1.1.5 | Ejecución en Ipad SO 8 (Secundario) | 1d? | 2015-07-30 08:00 | 2015-07-30 17:00 | 175 | 1d |  | QAI - 1; Tester - 1 | 16h | 16 |
| 177 | 16.1.1.2 | **Ejecución en SmartPhone** | 8d? | 2015-07-20 08:00 | 2015-07-31 17:00 |  | 0d |  |  | 128h | 128 |
| 178 | 16.1.1.2.1 | Nokia Lumia 520 / SO: Windows Phone 8.0 (Principal) | 3d? | 2015-07-20 08:00 | 2015-07-22 17:00 |  | 0d |  | QAI - 2; Tester - 2 | 48h | 48 |
| 179 | 16.1.1.2.2 | Ejecución en Samsung Galaxy Chat/SO -SO Android 4.1.2 (secundario) | 1d? | 2015-07-23 08:00 | 2015-07-23 17:00 | 178 | 0d |  | QAI - 2; Tester - 2 | 16h | 16 |
| 180 | 16.1.1.2.3 | Samsung Galaxy S III Mini / SO: Android 4.1.2 (Principal) | 1d? | 2015-07-24 08:00 | 2015-07-24 17:00 | 179 | 0d |  | QAI - 2; Tester - 2 | 16h | 16 |
| 181 | 16.1.1.2.4 | Ejecución en Iphone 4 / iSO 7 (Principal) | 1d? | 2015-07-27 08:00 | 2015-07-27 17:00 | 180 | 0d |  | QAI - 2; Tester - 2 | 16h | 16 |
| 182 | 16.1.1.2.5 | Ejecución en Iphone 5 / iSO 7 (Secundario) | 1d? | 2015-07-30 08:00 | 2015-07-30 17:00 | 181 | 0d |  | QAI - 2; Tester - 2 | 16h | 16 |
| 183 | 16.1.1.2.6 | Ejecución en Iphone 6 / iSO 7 (Secundario) | 1d? | 2015-07-31 08:00 | 2015-07-31 17:00 | 182 | 0d |  | QAI - 2; Tester - 2 | 16h | 16 |

| ID | WBS | Task | Duration | Start | Finish | Predecessors | Total slack | Free slack | Resources | Work | Cost |
| --- | --- | --- | --- | --- | --- | --- | --- | --- | --- | --- | --- |
| 184 | 16.1.2 | **Web** | 5d? | 2015-07-20 08:00 | 2015-07-24 17:00 |  | 3d |  |  | 80h | 80 |
| 185 | 16.1.2.1 | **Ejecución en Web Browser - IE9 (Principal)** | 3.75d? | 2015-07-20 08:00 | 2015-07-23 15:00 |  | 3d | 0d |  | 60h | 60 |
| 186 | 16.1.2.1.1 | Ejecución de casos de prueba funcionales | 2.25d? | 2015-07-20 08:00 | 2015-07-22 10:00 |  | 3d | 0d | Tester - 3; QAI - 3 | 36h | 36 |
| 187 | 16.1.2.1.2 | Reporte de errores | 0.5d? | 2015-07-22 10:00 | 2015-07-22 15:00 | 186 | 3d | 0d | QAI - 3; Tester - 3 | 8h | 8 |
| 188 | 16.1.2.1.3 | Verificación de errores | 0.5d? | 2015-07-22 15:00 | 2015-07-23 10:00 | 187 | 3d | 0d | QAI - 3; Tester - 3 | 8h | 8 |
| 189 | 16.1.2.1.4 | Pruebas exploratoria | 0.5d? | 2015-07-23 10:00 | 2015-07-23 15:00 | 188 | 3d |  | QAI - 3; Tester - 3 | 8h | 8 |
| 190 | 16.1.2.2 | Ejecución en Web Browser - Chrome 40 (Secundario) | 1.25d? | 2015-07-23 15:00 | 2015-07-24 17:00 | 185 | 3d |  | QAI - 3; Tester - 3 | 20h | 20 |
| 191 | 16.2 | **Soporte a Pruebas Funcionales (Resolución de Bugs)** | 8d? | 2015-07-20 08:00 | 2015-07-31 17:00 | 170SS | 4d |  |  | 64h | 64 |
| 192 | 16.2.1 | Móvil | 8d | 2015-07-20 08:00 | 2015-07-31 17:00 |  | 4d |  | SEII - Mobile [50%] | 32h | 32 |
| 193 | 16.2.2 | Web | 8d? | 2015-07-20 08:00 | 2015-07-31 17:00 |  | 4d |  | SEII - Web [50%] | 32h | 32 |
| 194 | 16.3 | **Pruebas de Rendimiento** | 8.5d? | 2015-07-23 13:00 | 2015-08-06 17:00 |  | 0d |  |  | 68h | 68 |
| 195 | 16.3.1 | Creación de Scripts (Flujo: 6WS) | 4.5d? | 2015-07-23 13:00 | 2015-08-03 08:00 | 196SF | 4d |  | QAII | 36h | 36 |
| 196 | 16.3.2 | **Ejecución de Pruebas** | 2.5d? | 2015-08-03 08:00 | 2015-08-05 12:00 | 169 | 0d |  |  | 20h | 20 |
| 197 | 16.3.2.1 | Preparación del Ambiente | 0.75d? | 2015-08-03 08:00 | 2015-08-03 15:00 |  | 0d |  | QAII | 6h | 6 |
| 198 | 16.3.2.2 | Prueba de Ambiente | 0.25d? | 2015-08-03 15:00 | 2015-08-03 17:00 | 197 | 0d |  | QAII | 2h | 2 |
| 199 | 16.3.2.3 | Ejecución prueba de carga | 1.5d? | 2015-08-04 08:00 | 2015-08-05 12:00 | 198 | 0d |  | QAII | 12h | 12 |
| 200 | 16.3.3 | **Documentación** | 1.5d? | 2015-08-05 13:00 | 2015-08-06 17:00 | 196 | 0d |  |  | 12h | 12 |
| 201 | 16.3.3.1 | Parsing Logs | 0.5d? | 2015-08-05 13:00 | 2015-08-05 17:00 |  | 0d |  | QAII | 4h | 4 |
| 202 | 16.3.3.2 | Análisis y Notas Iniciales | 0.5d? | 2015-08-06 08:00 | 2015-08-06 12:00 | 201 | 0d |  | QAII | 4h | 4 |
| 203 | 16.3.3.3 | Creación de documento de resultados | 0.5d? | 2015-08-06 13:00 | 2015-08-06 17:00 | 202 | 0d |  | QAII | 4h | 4 |
| 204 | 16.4 | Soporte a Pruebas de Rendimiento | 2.5d | 2015-08-03 08:00 | 2015-08-05 12:00 | 196SS | 1.5d |  | SEII - Web [50%] | 10h | 10 |
| 205 | 17 | **Documentación** | 11.5d? | 2015-07-20 08:00 | 2015-08-06 12:00 | 170SS | 2.5d |  |  | 100h | 100 |
| 206 | 17.1 | **Móvil** | 10d? | 2015-07-20 08:00 | 2015-08-04 17:00 |  | 4d |  |  | 48h | 48 |
| 207 | 17.1.1 | Release notes | 1d? | 2015-07-20 08:00 | 2015-07-20 17:00 |  | 4d | 0d | SEII - Mobile [50%] | 4h | 4 |
| 208 | 17.1.2 | Manual de soporte | 3d? | 2015-07-21 08:00 | 2015-07-23 17:00 | 207 | 4d | 0d | SEII - Mobile [50%] | 12h | 12 |
| 209 | 17.1.3 | Manual de instalación | 4d? | 2015-07-24 08:00 | 2015-07-31 17:00 | 208 | 4d | 0d | SEII - Mobile [50%] | 16h | 16 |
| 210 | 17.1.4 | Manual de usuario | 2d? | 2015-08-03 08:00 | 2015-08-04 17:00 | 209 | 4d |  | SEII - Mobile | 16h | 16 |

| ID | WBS | Task | Duration | Start | Finish | Predecessors | Total slack | Free slack | Resources | Work | Cost |
| --- | --- | --- | --- | --- | --- | --- | --- | --- | --- | --- | --- |
| 211 | 17.2 | **Web** | 11.5d? | 2015-07-20 08:00 | 2015-08-06 12:00 |  | 2.5d |  |  | 52h | 52 |
| 212 | 17.2.1 | Release notes | 1d? | 2015-07-20 08:00 | 2015-07-20 17:00 |  | 2.5d | 0d | SEII - Web [50%] | 4h | 4 |
| 213 | 17.2.2 | Manual de usuario | 6d? | 2015-07-21 08:00 | 2015-07-30 17:00 | 212 | 2.5d | 0d | SEII - Web [50%] | 24h | 24 |
| 214 | 17.2.3 | Manual de soporte | 3d? | 2015-07-31 08:00 | 2015-08-04 17:00 | 213 | 2.5d | 0d | SEII - Web [50%] | 12h | 12 |
| 215 | 17.2.4 | Manual de instalación | 1.5d? | 2015-08-05 08:00 | 2015-08-06 12:00 | 214 | 2.5d |  | SEII - Web | 12h | 12 |
| 216 | 18 | **Generación de Binarios** | 1d? | 2015-08-07 08:00 | 2015-08-07 17:00 | 168 | 0d |  |  | 16h | 16 |
| 217 | 18.1 | Portal Web / Web Services | 1d? | 2015-08-07 08:00 | 2015-08-07 17:00 |  | 0d |  | SEII - Web | 8h | 8 |
| 218 | 18.2 | Aplicaciones Moviles (iOS, Android, Windows Phone) | 1d? | 2015-08-07 08:00 | 2015-08-07 17:00 |  | 0d |  | SEII - Mobile | 8h | 8 |
| 219 | 19 | Despliegue Certificación Yanbal | 1d? | 2015-08-10 08:00 | 2015-08-10 17:00 | 216 | 0d |  | SEII - Web; SEII - Mobile | 16h | 16 |
