# Yanbal PhoneGap - Web

Schedule from MS Project, 2015-04-14 to 2015-07-31, status date 2008-01-09, costs in $, A marks actual dates.
Avantica Technologies

## Calendars

- Standard: Mon-Fri 08:00-12:00, 13:00-17:00; Sat-Sun off. Exceptions (off unless hours are given): 2015-05-01 (Dia del Trabajo), 2015-06-29 (Día de San Pedro y San Pablo), 2015-07-28 to 2015-07-29 (Fiestas Patrias).

## Resources

| Resource | Rate |
| --- | --- |
| QAII | 1 |
| PM | 1 |
| UX | 1 |
| SEII - Mobile | 1 |
| SEII - Web | 1 |
| QAI - 1 | 1 |
| QAI - 2 | 1 |
| Tester - 1 | 1 |
| Tester - 2 | 1 |
| Yanbal | 1 |
| UX1 | 1 |
| QAI - 3 | 1 |
| Tester - 3 | 1 |
| ARQ | 1 |
| SEI - Web | 1 |

## Schedule

| ID | WBS | Task | Type | Duration | Start | Finish | Predecessors | Complete | Baseline start | Baseline finish | Baseline duration | Constraint | Resources | Work | Actual work | Cost | Baseline cost | Actual cost |
| --- | --- | --- | --- | --- | --- | --- | --- | --- | --- | --- | --- | --- | --- | --- | --- | --- | --- | --- |
| 1 | 1 | Gestión del proyecto |  | 1d? | 2015-04-14 08:00 A | 2015-04-14 17:00 A |  | 100% |  |  |  |  | PM [1325%] | 106h | 106h | 106 |  | 106 |
| 2 | 2 | Sesión de Inicio de Proyecto (KickOff) |  | 4h | 2015-04-14 08:00 A | 2015-04-14 12:00 A |  | 100% | 2015-04-14 08:00 | 2015-04-14 12:00 | 4h |  | SEII - Mobile; SEII - Web | 8h | 8h | 8 | 8 | 8 |
| 3 | 3 | **Análisis** |  | 16d? | 2015-04-14 13:00 A | 2015-05-07 12:00 A | 2 | 100% | 2015-04-14 13:00 | 2015-04-23 10:00 | 6.75d |  |  | 216h | 216h | 216 | 108 | 216 |
| 4 | 3.1 | Reuniones (124) |  | 2d | 2015-04-14 13:00 A | 2015-04-16 12:00 A |  | 100% | 2015-04-14 13:00 | 2015-04-16 12:00 | 2d |  | SEII - Mobile; SEII - Web | 32h | 32h | 32 | 32 | 32 |
| 5 | 3.2 | Especificación de requerimientos funcionales (125) |  | 1d | 2015-04-16 13:00 A | 2015-04-17 12:00 A | 4 | 100% | 2015-04-16 13:00 | 2015-04-16 17:00 | 0.5d |  | SEII - Mobile; SEII - Web | 16h | 16h | 16 | 8 | 16 |
| 6 | 3.3 | Creación de Wireframes (126) |  | 4d | 2015-04-17 13:00 A | 2015-04-23 12:00 A | 5 | 100% | 2015-04-17 08:00 | 2015-04-20 17:00 | 2d |  | SEII - Mobile; SEII - Web | 64h | 64h | 64 | 32 | 64 |
| 7 | 3.4 | Especificación de casos de uso (127) |  | 3d | 2015-04-21 13:00 A | 2015-04-24 12:00 A | 6 | 100% | 2015-04-21 08:00 | 2015-04-22 17:00 | 2d |  | SEII - Mobile; SEII - Web | 48h | 48h | 48 | 32 | 48 |
| 8 | 3.5 | Matriz de trazabilidad: requerimientos / casos de uso (128) |  | 0.25d | 2015-04-28 13:00 A | 2015-04-28 15:00 A | 7 | 100% | 2015-04-23 08:00 | 2015-04-23 10:00 | 0.25d |  | SEII - Mobile; SEII - Web | 4h | 4h | 4 | 4 | 4 |
| 9 | 3.6 | Aprobación Yanbal |  | 2.5d? | 2015-04-30 08:00 A | 2015-05-05 12:00 A | 8 | 100% |  |  |  |  | Yanbal | 20h | 20h | 20 |  | 20 |
| 10 | 3.7 | Modificación de documentos |  | 2d? | 2015-05-05 13:00 A | 2015-05-07 12:00 A | 9 | 100% |  |  |  |  | SEII - Mobile; SEII - Web | 32h | 32h | 32 |  | 32 |
| 11 | 4 | Entregable Analisis | milestone | 0d | 2015-05-14 08:00 A | 2015-05-14 08:00 A | 3 | 100% |  |  |  | start no earlier than 2015-05-14 08:00 |  |  |  |  |  |  |
| 12 | 5 | **Diseño Técnico** |  | 34d? | 2015-04-14 08:00 A | 2015-06-01 17:00 A |  | 100% | 2015-04-23 10:00 | 2015-05-06 10:00 | 8d |  |  | 339h | 339h | 339 | 128 | 339 |
| 13 | 5.1 | Catalogo de servicios web a crear / consumir (137) |  | 1.5d | 2015-04-30 08:00 A | 2015-05-04 12:00 A | 9SS | 100% | 2015-05-04 10:00 | 2015-05-06 10:00 | 2d |  | SEII - Mobile; SEII - Web | 24h | 24h | 24 | 32 | 24 |
| 14 | 5.2 | Reuniones (129) |  | 2d | 2015-05-07 10:00 A | 2015-05-11 10:00 A | 13, 10 | 100% | 2015-04-23 10:00 | 2015-04-24 10:00 | 1d |  | SEII - Mobile; SEII - Web | 32h | 32h | 32 | 16 | 32 |
| 15 | 5.3 | Configurar ambiente de desarrollo (141 y 142) |  | 2.5d? | 2015-04-14 08:00 A | 2015-05-11 12:00 A | 14 | 100% |  |  |  |  | SEII - Mobile; SEII - Web | 40h | 40h | 40 |  | 40 |
| 16 | 5.4 | Revisión documentación Yanbal (143) |  | 0.25d? | 2015-05-11 13:00 A | 2015-05-11 15:00 A | 15 | 100% |  |  |  |  | SEII - Mobile; SEII - Web | 4h | 4h | 4 |  | 4 |
| 17 | 5.5 | Definir estándares de desarrollo (130 y 161) |  | 0.19d | 2015-05-08 10:00 A | 2015-05-08 11:30 A | 16 | 100% | 2015-04-24 10:00 | 2015-04-24 15:00 | 0.5d |  | SEII - Mobile; SEII - Web | 3h | 3h | 3 | 8 | 3 |
| 18 | 5.6 | Requerimientos no funcionales (131 y 162) |  | 0.31d | 2015-05-08 15:00 A | 2015-05-18 08:30 A | 17 | 100% | 2015-04-24 15:00 | 2015-04-27 10:00 | 0.5d |  | SEII - Mobile; SEII - Web | 5h | 5h | 5 | 8 | 5 |
| 19 | 5.7 | Arquitectura (132) |  | 0.88d | 2015-05-11 10:00 A | 2015-05-12 09:00 A | 18 | 100% | 2015-04-27 10:00 | 2015-04-27 12:00 | 0.25d |  | SEII - Mobile; SEII - Web | 14h | 14h | 14 | 4 | 14 |
| 20 | 5.8 | Base de Datos (136 y 160) |  | 0.88d | 2015-05-11 15:00 A | 2015-05-12 14:00 A | 19 | 100% | 2015-04-27 13:00 | 2015-04-27 17:00 | 0.5d |  | SEII - Mobile; SEII - Web | 14h | 14h | 14 | 8 | 14 |
| 21 | 5.9 | Especificación Técnica de la Solución (151 y 156) |  | 2d | 2015-05-12 10:00 A | 2015-05-14 10:00 A | 20 | 100% | 2015-04-28 08:00 | 2015-04-28 10:00 | 0.25d |  | SEII - Mobile; SEII - Web | 32h | 32h | 32 | 4 | 32 |
| 22 | 5.10 | Diagrama de Clases (148 y 149) |  | 0.62d | 2015-05-14 10:00 A | 2015-05-14 16:00 A | 21 | 100% | 2015-04-28 10:00 | 2015-04-30 10:00 | 2d |  | SEII - Mobile; SEII - Web | 10h | 10h | 10 | 32 | 10 |
| 23 | 5.11 | Mapa de Navegación (150 y 155) |  | 0.19d | 2015-05-15 08:00 A | 2015-05-15 09:30 A | 22 | 100% | 2015-04-30 10:00 | 2015-05-04 10:00 | 1d |  | SEII - Mobile; SEII - Web | 3h | 3h | 3 | 16 | 3 |
| 24 | 5.12 | Perfiles del sistema (153 y 158) |  | 0.12d? | 2015-05-15 09:30 A | 2015-05-15 10:30 A | 23 | 100% |  |  |  |  | SEII - Mobile; SEII - Web | 2h | 2h | 2 |  | 2 |
| 25 | 5.13 | Especificación de pantallas (152 y 157) |  | 0.75d? | 2015-05-15 10:30 A | 2015-05-18 08:30 A | 24 | 100% |  |  |  |  | SEII - Mobile; SEII - Web | 12h | 12h | 12 |  | 12 |
| 26 | 5.14 | Aprobación Yanbal |  | 2d? | 2015-05-19 15:00 A | 2015-05-21 15:00 A | 25 | 100% |  |  |  |  | Yanbal | 16h | 16h | 16 |  | 16 |
| 27 | 5.15 | Modificación de documentos (205 y 206) |  | 6d? | 2015-05-19 15:00 A | 2015-05-27 15:00 A | 26SS | 100% |  |  |  |  | SEII - Mobile; SEII - Web | 96h | 96h | 96 |  | 96 |
| 28 | 5.16 | Aprobación Yanbal |  | 2d? | 2015-05-27 08:00 A | 2015-05-28 17:00 A | 26 | 100% |  |  |  |  | Yanbal | 16h | 16h | 16 |  | 16 |
| 29 | 5.17 | Revisión de entregable por Aquitectura Avantica |  | 2d? | 2015-05-29 08:00 A | 2015-06-01 17:00 A | 28 | 100% |  |  |  |  | ARQ | 16h | 16h | 16 |  | 16 |
| 30 | 6 | Entregable Diseño Técnico | milestone | 0d | 2015-05-27 15:00 A | 2015-05-27 15:00 A | 12 | 100% |  |  |  |  | ARQ |  |  |  |  |  |
| 31 | 7 | Disponibilidad UX | milestone | 0d | 2015-04-29 08:00 A | 2015-04-29 08:00 A |  | 100% |  |  |  | start no earlier than 2015-04-29 08:00 |  |  |  |  |  |  |

| ID | WBS | Task | Type | Duration | Start | Finish | Predecessors | Complete | Baseline start | Baseline finish | Baseline duration | Total slack | Free slack | Constraint | Resources | Work | Actual work | Cost | Baseline cost | Actual cost |
| --- | --- | --- | --- | --- | --- | --- | --- | --- | --- | --- | --- | --- | --- | --- | --- | --- | --- | --- | --- | --- |
| 32 | 8 | **Diseño Gráfico** |  | 17d? | 2015-04-29 08:00 A | 2015-05-22 17:00 A | 31 | 100% | 2015-04-21 08:00 | 2015-05-18 10:00 | 18.25d |  |  |  |  | 142h | 142h | 142 | 146 | 142 |
| 33 | 8.1 | **Preparación de propuesta** |  | 8d | 2015-04-29 08:00 A | 2015-05-11 17:00 A |  | 100% | 2015-04-21 08:00 | 2015-04-30 10:00 | 7.25d |  |  |  |  | 82h | 82h | 82 | 58 | 82 |
| 34 | 8.1.1 | Reuniones con el cliente (información inicial) |  | 0.75d | 2015-04-29 08:00 A | 2015-04-29 15:00 A |  | 100% | 2015-04-21 08:00 | 2015-04-21 15:00 | 0.75d |  |  |  | UX | 6h | 6h | 6 | 6 | 6 |
| 35 | 8.1.2 | Elaboración de propuesta grafica (2 Pág. Maestras) Móvil |  | 3.5d | 2015-04-29 15:00 A | 2015-05-06 10:00 A | 34 | 100% | 2015-04-21 15:00 | 2015-04-24 10:00 | 2.5d |  |  |  | UX | 28h | 28h | 28 | 20 | 28 |
| 36 | 8.1.3 | Elaboración de propuesta grafica (2 Pág. Maestras) Web |  | 3.5d | 2015-05-05 10:00 A | 2015-05-08 15:00 A | 35 | 100% | 2015-04-24 10:00 | 2015-04-28 12:00 | 2.25d |  |  |  | UX | 28h | 28h | 28 | 18 | 28 |
| 37 | 8.1.4 | Elaboración de assets y cortes de imágenes |  | 2.5d | 2015-05-07 13:00 A | 2015-05-11 17:00 A | 36 | 100% | 2015-04-28 13:00 | 2015-04-30 10:00 | 1.75d |  |  |  | UX | 20h | 20h | 20 | 14 | 20 |
| 38 | 8.2 | **Preparación de maquetas y assets** |  | 9d? | 2015-05-12 08:00 A | 2015-05-22 17:00 A | 33 | 100% | 2015-04-30 10:00 | 2015-05-18 10:00 | 11d |  |  |  |  | 60h | 60h | 60 | 88 | 60 |
| 39 | 8.2.1 | **Kiosko Móvil** |  | 6d? | 2015-05-12 08:00 A | 2015-05-19 17:00 A |  | 100% | 2015-05-13 10:00 | 2015-05-18 10:00 | 3d |  |  |  |  | 36h | 36h | 36 | 24 | 36 |
| 40 | 8.2.1.1 | Login |  | 1d | 2015-05-12 08:00 A | 2015-05-12 17:00 A |  | 100% | 2015-05-13 10:00 | 2015-05-13 17:00 | 0.75d |  |  |  | UX [50%] | 6h | 6h | 6 | 6 | 6 |
| 41 | 8.2.1.2 | Página Principal |  | 1d | 2015-05-13 08:00 A | 2015-05-13 17:00 A | 40 | 100% | 2015-05-14 08:00 | 2015-05-14 15:00 | 0.75d |  |  |  | UX [50%] | 6h | 6h | 6 | 6 | 6 |
| 42 | 8.2.1.3 | Ver Colección |  | 1d | 2015-05-14 08:00 A | 2015-05-14 17:00 A | 41 | 100% | 2015-05-14 15:00 | 2015-05-15 12:00 | 0.75d |  |  |  | UX [50%] | 6h | 6h | 6 | 6 | 6 |
| 43 | 8.2.1.4 | Notificaciones |  | 1d | 2015-05-15 08:00 A | 2015-05-15 17:00 A | 42 | 100% | 2015-05-15 13:00 | 2015-05-18 10:00 | 0.75d |  |  |  | UX [50%] | 6h | 6h | 6 | 6 | 6 |
| 44 | 8.2.1.5 | Configuración |  | 1d? | 2015-05-18 08:00 A | 2015-05-18 17:00 A | 43 | 100% |  |  |  |  |  |  | UX [50%] | 6h | 6h | 6 |  | 6 |
| 45 | 8.2.1.6 | Ver/Descargar/Eliminar Archivo |  | 1d? | 2015-05-19 08:00 A | 2015-05-19 17:00 A | 44 | 100% |  |  |  |  |  |  |  | 6h | 6h | 6 |  | 6 |
| 46 | 8.2.2 | **Kisoko Web** |  | 3d? | 2015-05-20 08:00 A | 2015-05-22 17:00 A | 39 | 100% | 2015-04-30 10:00 | 2015-05-13 10:00 | 8d |  |  |  |  | 24h | 24h | 24 | 64 | 24 |
| 47 | 8.2.2.1 | Login |  | 0.38d | 2015-05-20 08:00 A | 2015-05-20 11:00 A |  | 100% | 2015-04-30 10:00 | 2015-05-04 10:00 | 1d |  |  |  | UX | 3h | 3h | 3 | 8 | 3 |
| 48 | 8.2.2.2 | Pantalla Principal |  | 0.38d? | 2015-05-20 11:00 A | 2015-05-20 15:00 A | 47 | 100% |  |  |  |  |  |  | UX | 3h | 3h | 3 |  | 3 |
| 49 | 8.2.2.3 | Administración de Colecciones |  | 0.38d | 2015-05-20 15:00 A | 2015-05-21 09:00 A | 48 | 100% | 2015-05-08 10:00 | 2015-05-08 17:00 | 0.75d |  |  |  | UX | 3h | 3h | 3 | 6 | 3 |
| 50 | 8.2.2.4 | Crear/Editar Colecciones |  | 0.38d? | 2015-05-21 09:00 A | 2015-05-21 12:00 A | 49 | 100% |  |  |  |  |  |  | UX | 3h | 3h | 3 |  | 3 |
| 51 | 8.2.2.5 | Cargar Archivos |  | 0.38d? | 2015-05-21 13:00 A | 2015-05-21 16:00 A | 50 | 100% |  |  |  |  |  |  | UX | 3h | 3h | 3 |  | 3 |
| 52 | 8.2.2.6 | Publicar Archivos |  | 0.38d? | 2015-05-21 16:00 A | 2015-05-22 10:00 A | 51 | 100% |  |  |  |  |  |  | UX | 3h | 3h | 3 |  | 3 |
| 53 | 8.2.2.7 | Mover Archivos |  | 0.38d? | 2015-05-22 10:00 A | 2015-05-22 14:00 A | 52 | 100% |  |  |  |  |  |  | UX | 3h | 3h | 3 |  | 3 |
| 54 | 8.2.2.8 | Configuración de límites de carga y descarga |  | 0.38d | 2015-05-22 14:00 A | 2015-05-22 17:00 A | 53 | 100% | 2015-05-11 08:00 | 2015-05-11 15:00 | 0.75d |  |  |  | UX | 3h | 3h | 3 | 6 | 3 |
| 55 | 9 | Entregable de Diseño Gráfico |  | 1d? | 2015-05-25 08:00 A | 2015-05-25 17:00 A | 32 | 100% |  |  |  |  |  |  |  |  |  |  |  |  |
| 56 | 10 | Disponibilidad QA | milestone | 0d | 2015-05-18 08:00 A | 2015-05-18 08:00 A |  | 100% |  |  |  |  |  | start no earlier than 2015-05-18 08:00 |  |  |  |  |  |  |
| 57 | 11 | Fin Diseño Técnico |  | 1d? | 2015-06-03 08:00 | 2015-06-03 17:00 |  |  |  |  |  | 0.41d | 0d | finish no earlier than 2015-06-03 17:00 |  |  |  |  |  |  |

| ID | WBS | Task | Duration | Start | Finish | Predecessors | Complete | Remaining | Baseline start | Baseline finish | Baseline duration | Total slack | Free slack | Resources | Work | Actual work | Cost | Baseline cost | Actual cost |
| --- | --- | --- | --- | --- | --- | --- | --- | --- | --- | --- | --- | --- | --- | --- | --- | --- | --- | --- | --- |
| 58 | 12 | **Planificación y Especificación de Pruebas** | 35d? | 2015-04-14 08:00 A | 2015-06-02 17:00 |  | 75% | 8.75d? |  |  |  | 40d |  |  | 112h | 84h | 112 |  | 84 |
| 59 | 12.1 | Plan de Pruebas Funcionales y de Rendimiento (163) | 2d? | 2015-04-14 08:00 A | 2015-04-15 17:00 |  | 25% | 1.5d? |  |  |  | 73d |  | QAI - 1 | 16h | 4h | 16 |  | 4 |
| 60 | 12.2 | LCP - Listado de Casos de Prueba (164) | 2d? | 2015-05-19 08:00 A | 2015-05-20 17:00 A | 59 | 100% |  |  |  |  |  |  | QAI - 1 | 16h | 16h | 16 |  | 16 |
| 61 | 12.3 | ECP - Especificación de Casos de Prueba (165) | 8d? | 2015-05-20 08:00 A | 2015-05-29 17:00 A | 60 | 100% |  |  |  |  |  |  | QAI - 1 | 64h | 64h | 64 |  | 64 |
| 62 | 12.4 | Pruebas No Funcionales (236) | 1d? | 2015-06-01 08:00 | 2015-06-01 17:00 | 61 |  |  |  |  |  | 40d | 0d | QAI - 1 | 8h |  | 8 |  |  |
| 63 | 12.5 | Actualización de documentos de pruebas (237) | 1d? | 2015-06-02 08:00 | 2015-06-02 17:00 | 62 |  |  |  |  |  | 40d |  | QAI - 1 | 8h |  | 8 |  |  |
| 64 | 13 | **Desarrollo** | 30d? | 2015-05-28 08:00 A | 2015-07-09 17:00 | 57 | 15% | 25.42d? | 2015-05-06 10:00 | 2015-07-02 15:00 | 40.5d? | 2d | 0d |  | 571h | 38h | 571 | 548 | 38 |
| 65 | 13.1 | **HTML** | 11.5d? | 2015-05-28 08:00 A | 2015-06-12 12:00 |  | 55% | 5.21d? | 2015-05-07 15:00 | 2015-05-13 15:00 | 4d? | 4.5d | 0d |  | 71h | 18h | 71 | 32 | 18 |
| 66 | 13.1.1 | **Estructura base HTML** | 2d? | 2015-06-04 08:00 | 2015-06-05 17:00 |  |  |  |  |  |  | 3.89d | 0d |  | 16h |  | 16 |  |  |
| 67 | 13.1.1.1 | Móvil (166) | 1d? | 2015-06-04 08:00 | 2015-06-04 17:00 |  |  |  |  |  |  | 3.89d | 0d | SEII - Mobile | 8h |  | 8 |  |  |
| 68 | 13.1.1.2 | Web (167) | 1d? | 2015-06-05 08:00 | 2015-06-05 17:00 | 67 |  |  |  |  |  | 3.89d |  | SEII - Mobile | 8h |  | 8 |  |  |
| 69 | 13.1.2 | **Páginas Móvil** | 7.5d? | 2015-05-28 08:00 A | 2015-06-08 12:00 | 66 | 93% | 0.54d? |  |  |  | 4.5d | 0d |  | 23h | 18h | 23 |  | 18 |
| 70 | 13.1.2.1 | Inicio Session (169) | 2d? | 2015-06-01 08:00 A | 2015-06-02 17:00 A |  | 100% |  |  |  |  |  |  | SEII - Mobile | 3h | 3h | 3 |  | 3 |
| 71 | 13.1.2.2 | Pagina Principal (170) | 1d? | 2015-05-28 08:00 A | 2015-05-28 17:00 A | 70 | 100% |  |  |  |  |  |  | SEII - Mobile | 2h | 2h | 2 |  | 2 |
| 72 | 13.1.2.3 | Coleccion seleccionada (171) | 0.12d? | 2015-06-08 08:00 | 2015-06-08 09:00 | 71 |  |  |  |  |  | 4.88d |  | SEII - Mobile | 1h |  | 1 |  |  |
| 73 | 13.1.2.4 | Opciones del archivo (172) | 1d? | 2015-05-28 08:00 A | 2015-05-28 17:00 A | 72 | 100% |  |  |  |  |  |  | SEII - Mobile | 2h | 2h | 2 |  | 2 |
| 74 | 13.1.2.5 | Página de configuración (173) | 1d? | 2015-06-02 08:00 A | 2015-06-02 17:00 A | 73 | 100% |  |  |  |  |  |  | SEII - Mobile | 1h | 1h | 1 |  | 1 |
| 75 | 13.1.2.6 | Panel de notificaciones (174) | 2d? | 2015-06-02 08:00 A | 2015-06-04 17:00 A | 74 | 100% |  |  |  |  |  |  | SEII - Mobile [37.5%] | 6h | 6h | 6 |  | 6 |
| 76 | 13.1.2.7 | Sincronización (175) | 1d? | 2015-06-04 08:00 A | 2015-06-04 17:00 A | 75 | 100% |  |  |  |  |  |  | SEII - Mobile [50%] | 4h | 4h | 4 |  | 4 |
| 77 | 13.1.2.8 | Revisión/Corrección con UX (176) | 0.5d? | 2015-06-08 08:00 | 2015-06-08 12:00 | 76 |  |  |  |  |  | 4.5d |  | SEII - Mobile | 4h |  | 4 |  |  |
| 78 | 13.1.3 | **Páginas Web** | 4d? | 2015-06-08 13:00 | 2015-06-12 12:00 | 69 |  |  |  |  |  | 4.5d |  |  | 32h |  | 32 |  |  |
| 79 | 13.1.3.1 | Página Principal | 0.5d? | 2015-06-08 13:00 | 2015-06-08 17:00 |  |  |  |  |  |  | 4.5d | 0d | SEII - Mobile | 4h |  | 4 |  |  |
| 80 | 13.1.3.2 | Inicio Session | 0.5d? | 2015-06-09 08:00 | 2015-06-09 12:00 | 79 |  |  |  |  |  | 4.5d | 0d | SEII - Mobile | 4h |  | 4 |  |  |
| 81 | 13.1.3.3 | Mantener Colecciones | 1.5d? | 2015-06-09 13:00 | 2015-06-10 17:00 | 80 |  |  |  |  |  | 4.5d | 0d | SEII - Mobile | 12h |  | 12 |  |  |
| 82 | 13.1.3.4 | Configurar limite de descarga | 0.5d? | 2015-06-11 08:00 | 2015-06-11 12:00 | 81 |  |  |  |  |  | 4.5d | 0d | SEII - Mobile | 4h |  | 4 |  |  |
| 83 | 13.1.3.5 | Revisión/Corrección con UX | 1d? | 2015-06-11 13:00 | 2015-06-12 12:00 | 82 |  |  |  |  |  | 4.5d |  | SEII - Mobile | 8h |  | 8 |  |  |

| ID | WBS | Task | Duration | Start | Finish | Predecessors | Baseline start | Baseline finish | Baseline duration | Total slack | Free slack | Resources | Work | Cost | Baseline cost |
| --- | --- | --- | --- | --- | --- | --- | --- | --- | --- | --- | --- | --- | --- | --- | --- |
| 84 | 13.2 | **PhoneGap** | 16d? | 2015-06-12 13:00 | 2015-07-07 12:00 | 65 | 2015-05-13 15:00 | 2015-06-12 10:00 | 21.5d? | 4.5d |  |  | 128h | 128 | 172 |
| 85 | 13.2.1 | Creación proyecto base | 1d? | 2015-06-12 13:00 | 2015-06-15 12:00 |  |  |  |  | 4.5d | 0d | SEII - Mobile | 8h | 8 |  |
| 86 | 13.2.2 | Revisión de pares | 0.5d? | 2015-06-15 13:00 | 2015-06-15 17:00 | 85 |  |  |  | 4.5d | 0d | SEII - Mobile | 4h | 4 |  |
| 87 | 13.2.3 | Creación archivo de propiedades | 0.5d? | 2015-06-16 08:00 | 2015-06-16 12:00 | 86 |  |  |  | 4.5d | 0d | SEII - Mobile | 4h | 4 |  |
| 88 | 13.2.4 | Listener para eventos Back | 1.5d? | 2015-06-16 13:00 | 2015-06-17 17:00 | 87 | 2015-05-13 15:00 | 2015-05-14 10:00 | 0.5d? | 4.5d | 0d | SEII - Mobile | 12h | 12 | 4 |
| 89 | 13.2.5 | **CUM-001: Autenticar usuario, CUM-011: Cerrar Sesión** | 1.25d? | 2015-06-18 08:00 | 2015-06-19 10:00 | 88 |  |  |  | 4.5d | 0d |  | 10h | 10 |  |
| 90 | 13.2.5.1 | Consumir servicio | 0.25d? | 2015-06-18 08:00 | 2015-06-18 10:00 |  |  |  |  | 4.5d | 0d | SEII - Mobile | 2h | 2 |  |
| 91 | 13.2.5.2 | Crear token | 0.25d? | 2015-06-18 10:00 | 2015-06-18 12:00 | 90 |  |  |  | 4.5d | 0d | SEII - Mobile | 2h | 2 |  |
| 92 | 13.2.5.3 | Guardar sesión | 0.5d? | 2015-06-18 13:00 | 2015-06-18 17:00 | 91 |  |  |  | 4.5d | 0d | SEII - Mobile | 4h | 4 |  |
| 93 | 13.2.5.4 | Cerrar sesión | 0.25d? | 2015-06-19 08:00 | 2015-06-19 10:00 | 92 |  |  |  | 4.5d |  | SEII - Mobile | 2h | 2 |  |
| 94 | 13.2.6 | **CUM-002: Sincronizar Datos, CUM-003: Mostrar Nuevo Contenido, CUM-008: Mostrar Notificación Nativa** | 4.25d? | 2015-06-19 10:00 | 2015-06-25 12:00 | 89 |  |  |  | 4.5d | 0d |  | 34h | 34 |  |
| 95 | 13.2.6.1 | Consumir servicio (sincronización al inicio y a demanda) | 0.75d? | 2015-06-19 10:00 | 2015-06-19 17:00 |  |  |  |  | 4.5d | 0d | SEII - Mobile | 6h | 6 |  |
| 96 | 13.2.6.2 | Guardar datos | 1d? | 2015-06-22 08:00 | 2015-06-22 17:00 | 95 |  |  |  | 4.5d | 0d | SEII - Mobile | 8h | 8 |  |
| 97 | 13.2.6.3 | Actualizar panel de notificacion | 0.5d? | 2015-06-23 08:00 | 2015-06-23 12:00 | 96 |  |  |  | 4.5d | 0d | SEII - Mobile | 4h | 4 |  |
| 98 | 13.2.6.4 | Actualizar panel de configuración (fecha ultima sincronización) | 0.25d? | 2015-06-23 13:00 | 2015-06-23 15:00 | 97 |  |  |  | 4.5d | 0d | SEII - Mobile | 2h | 2 |  |
| 99 | 13.2.6.5 | Actualizar panel de notificacion para eliminar visto | 0.5d? | 2015-06-23 15:00 | 2015-06-24 10:00 | 98 |  |  |  | 4.5d | 0d | SEII - Mobile | 4h | 4 |  |
| 100 | 13.2.6.6 | Configuración para notificaciones push (panel nativo) | 1d? | 2015-06-24 10:00 | 2015-06-25 10:00 | 99 |  |  |  | 4.5d | 0d | SEII - Mobile | 8h | 8 |  |
| 101 | 13.2.6.7 | Mensaje confirmación éxito/error sincronización por conexión de internet | 0.25d? | 2015-06-25 10:00 | 2015-06-25 12:00 | 100 |  |  |  | 4.5d |  | SEII - Mobile | 2h | 2 |  |
| 102 | 13.2.7 | **CUM-004: Navegar por Colecciones y Archivos, CUM-005: Ver Archivos** | 2.25d? | 2015-06-25 13:00 | 2015-06-30 15:00 | 94 |  |  |  | 4.5d | 0d |  | 18h | 18 |  |
| 103 | 13.2.7.1 | Consumir servicio | 0.5d? | 2015-06-25 13:00 | 2015-06-25 17:00 |  |  |  |  | 4.5d | 0d | SEII - Mobile | 4h | 4 |  |
| 104 | 13.2.7.2 | Manejo de nagevabilidad | 0.5d? | 2015-06-26 08:00 | 2015-06-26 12:00 | 103 |  |  |  | 4.5d | 0d | SEII - Mobile | 4h | 4 |  |
| 105 | 13.2.7.3 | Ver archivo | 1d? | 2015-06-26 13:00 | 2015-06-30 12:00 | 104 |  |  |  | 4.5d | 0d | SEII - Mobile | 8h | 8 |  |
| 106 | 13.2.7.4 | Mostrar mensaje de confirmación para descargar con red movil (validacion peso máximo) | 0.25d? | 2015-06-30 13:00 | 2015-06-30 15:00 | 105 |  |  |  | 4.5d |  | SEII - Mobile | 2h | 2 |  |
| 107 | 13.2.8 | **CUM-006: Descargar Archivo** | 0.75d? | 2015-06-30 15:00 | 2015-07-01 12:00 | 102 |  |  |  | 4.5d | 0d |  | 6h | 6 |  |
| 108 | 13.2.8.1 | Consumir servicio | 0.25d? | 2015-06-30 15:00 | 2015-06-30 17:00 |  |  |  |  | 4.5d | 0d | SEII - Mobile | 2h | 2 |  |
| 109 | 13.2.8.2 | Marcar contenido como descargado | 0.25d? | 2015-07-01 08:00 | 2015-07-01 10:00 | 108 |  |  |  | 4.5d | 0d | SEII - Mobile | 2h | 2 |  |
| 110 | 13.2.8.3 | Mostrar mensaje de confirmación para descargar con red movil (validacion peso máximo) | 0.25d? | 2015-07-01 10:00 | 2015-07-01 12:00 | 109 |  |  |  | 4.5d |  | SEII - Mobile | 2h | 2 |  |

Notes:
- 88: Incluye envío de datos cuando haya internet. / Considerar caso en que se muere la app.

| ID | WBS | Task | Duration | Start | Finish | Predecessors | Complete | Remaining | Baseline start | Baseline finish | Baseline duration | Total slack | Free slack | Resources | Work | Actual work | Cost | Baseline cost | Actual cost |
| --- | --- | --- | --- | --- | --- | --- | --- | --- | --- | --- | --- | --- | --- | --- | --- | --- | --- | --- | --- |
| 111 | 13.2.9 | **CUM-007: Eliminar Archivos** | 1d? | 2015-07-01 13:00 | 2015-07-02 12:00 | 107 |  |  |  |  |  | 4.5d | 0d |  | 8h |  | 8 |  |  |
| 112 | 13.2.9.1 | Consumir servicio | 0.5d? | 2015-07-01 13:00 | 2015-07-01 17:00 |  |  |  |  |  |  | 4.5d | 0d | SEII - Mobile | 4h |  | 4 |  |  |
| 113 | 13.2.9.2 | Guardar datos en cache | 0.5d? | 2015-07-02 08:00 | 2015-07-02 12:00 | 112 |  |  |  |  |  | 4.5d |  | SEII - Mobile | 4h |  | 4 |  |  |
| 114 | 13.2.10 | **CUM-009: Enviar métricas** | 1d? | 2015-07-02 13:00 | 2015-07-03 12:00 | 111 |  |  |  |  |  | 4.5d | 0d |  | 8h |  | 8 |  |  |
| 115 | 13.2.10.1 | Enviar parametro de log en los servicios | 0.5d? | 2015-07-02 13:00 | 2015-07-02 17:00 |  |  |  |  |  |  | 4.5d | 0d | SEII - Mobile | 4h |  | 4 |  |  |
| 116 | 13.2.10.2 | Colocar url de google analytics en las acciones | 0.5d? | 2015-07-03 08:00 | 2015-07-03 12:00 | 115 |  |  |  |  |  | 4.5d |  | SEII - Mobile | 4h |  | 4 |  |  |
| 117 | 13.2.11 | **CUM-010: Permitir uso de red móvil en descarga** | 0.5d? | 2015-07-03 13:00 | 2015-07-03 17:00 | 114 |  |  |  |  |  | 4.5d | 0d |  | 4h |  | 4 |  |  |
| 118 | 13.2.11.1 | Grabar en cache | 0.5d? | 2015-07-03 13:00 | 2015-07-03 17:00 |  |  |  |  |  |  | 4.5d |  | SEII - Mobile | 4h |  | 4 |  |  |
| 119 | 13.2.12 | Pruebas desarrollador | 1d? | 2015-07-06 08:00 | 2015-07-06 17:00 | 117 |  |  |  |  |  | 4.5d | 0d | SEII - Mobile | 8h |  | 8 |  |  |
| 120 | 13.2.13 | Revisión de pares | 0.5d? | 2015-07-07 08:00 | 2015-07-07 12:00 | 119 |  |  |  |  |  | 4.5d |  | SEII - Mobile | 4h |  | 4 |  |  |
| 121 | 13.3 | **Web Services** | 17d? | 2015-05-28 08:00 A | 2015-06-19 17:00 |  | 18% | 13.91d? | 2015-05-07 15:00 | 2015-06-10 15:00 | 24d? | 15d |  |  | 164h | 20h | 164 | 192 | 20 |
| 122 | 13.3.1 | **Componentes Comunes** | 8d? | 2015-05-28 08:00 A | 2015-06-08 17:00 |  | 67% | 2.67d? |  |  |  | 2d | 0d |  | 36h | 20h | 36 |  | 20 |
| 123 | 13.3.1.1 | Creación servicio web y estructura base (184) | 4d | 2015-05-28 08:00 A | 2015-06-04 17:00 A |  | 100% |  | 2015-05-11 15:00 | 2015-05-13 15:00 | 2d |  |  | SEII - Web | 20h | 20h | 20 | 16 | 20 |
| 124 | 13.3.1.2 | Implementación log (bitácora) | 0.5d | 2015-06-05 08:00 | 2015-06-05 12:00 | 123 |  |  | 2015-05-13 15:00 | 2015-05-18 15:00 | 3d | 2d | 0d | SEII - Web | 4h |  | 4 | 24 |  |
| 125 | 13.3.1.3 | Implementación utilitarios base (parseo, conversión) | 0.5d | 2015-06-05 13:00 | 2015-06-05 17:00 | 124 |  |  | 2015-05-18 15:00 | 2015-05-20 15:00 | 2d | 2d | 0d | SEII - Web | 4h |  | 4 | 16 |  |
| 126 | 13.3.1.4 | Seguridad (SSL) | 1d? | 2015-06-08 08:00 | 2015-06-08 17:00 | 125 |  |  | 2015-05-20 15:00 | 2015-05-22 15:00 | 2d? | 2d |  | SEII - Web | 8h |  | 8 | 16 |  |
| 127 | 13.3.2 | **Móvil** | 9d? | 2015-06-09 08:00 | 2015-06-19 17:00 | 122 |  |  |  |  |  | 15d |  |  | 72h |  | 72 |  |  |
| 128 | 13.3.2.1 | Autenticar usuario movil | 1d | 2015-06-09 08:00 | 2015-06-09 17:00 |  |  |  | 2015-05-22 15:00 | 2015-05-25 15:00 | 1d | 15d | 0d | SEI - Web | 8h |  | 8 | 8 |  |
| 129 | 13.3.2.2 | ObtenerColeccionesContenido | 2d | 2015-06-10 08:00 | 2015-06-11 17:00 | 128 |  |  | 2015-05-25 15:00 | 2015-05-26 15:00 | 1d | 15d | 0d | SEI - Web | 16h |  | 16 | 8 |  |
| 130 | 13.3.2.3 | ObtenerArchivo | 2d | 2015-06-12 08:00 | 2015-06-15 17:00 | 129 |  |  | 2015-05-26 15:00 | 2015-05-27 12:00 | 0.75d | 15d | 0d | SEI - Web | 16h |  | 16 | 6 |  |
| 131 | 13.3.2.4 | ObtenerNotificaciones | 1.5d | 2015-06-16 08:00 | 2015-06-17 12:00 | 130 |  |  | 2015-05-27 13:00 | 2015-05-28 10:00 | 0.75d | 15d | 0d | SEI - Web | 12h |  | 12 | 6 |  |
| 132 | 13.3.2.5 | ActualizarNotificacion | 1d | 2015-06-17 13:00 | 2015-06-18 12:00 | 131 |  |  | 2015-05-28 10:00 | 2015-06-01 10:00 | 2d | 15d | 0d | SEI - Web | 8h |  | 8 | 16 |  |
| 133 | 13.3.2.6 | EnviarDetalleBitacora | 0.5d? | 2015-06-18 13:00 | 2015-06-18 17:00 | 132 |  |  |  |  |  | 15d | 0d | SEI - Web | 4h |  | 4 |  |  |
| 134 | 13.3.2.7 | Pruebas de desarrollador | 0.5d | 2015-06-19 08:00 | 2015-06-19 12:00 | 133 |  |  | 2015-06-02 10:00 | 2015-06-03 10:00 | 1d | 15d | 0d | SEI - Web | 4h |  | 4 | 8 |  |
| 135 | 13.3.2.8 | Revisión de pares | 0.5d | 2015-06-19 13:00 | 2015-06-19 17:00 | 134 |  |  | 2015-06-03 10:00 | 2015-06-04 10:00 | 1d | 15d |  | SEI - Web | 4h |  | 4 | 8 |  |

| ID | WBS | Task | Duration | Start | Finish | Predecessors | Baseline start | Baseline finish | Baseline duration | Total slack | Free slack | Resources | Work | Cost | Baseline cost |
| --- | --- | --- | --- | --- | --- | --- | --- | --- | --- | --- | --- | --- | --- | --- | --- |
| 136 | 13.3.3 | **Web** | 7d? | 2015-06-09 08:00 | 2015-06-17 17:00 | 122 |  |  |  | 2d | 0d |  | 56h | 56 |  |
| 137 | 13.3.3.1 | CUW-001: Iniciar sesión | 0.75d? | 2015-06-09 08:00 | 2015-06-09 15:00 |  |  |  |  | 2d | 0d | SEII - Web | 6h | 6 |  |
| 138 | 13.3.3.2 | CUW-002: Configurar tamaño de Carga y Descarga | 0.75d? | 2015-06-09 15:00 | 2015-06-10 12:00 | 137 |  |  |  | 2d | 0d | SEII - Web | 6h | 6 |  |
| 139 | 13.3.3.3 | CUW-003: Gestionar Colecciones | 2d? | 2015-06-10 13:00 | 2015-06-12 12:00 | 138 |  |  |  | 2d | 0d | SEII - Web | 16h | 16 |  |
| 140 | 13.3.3.4 | CUW-004: Gestionar Archivos | 2d? | 2015-06-12 13:00 | 2015-06-16 12:00 | 139 |  |  |  | 2d | 0d | SEII - Web | 16h | 16 |  |
| 141 | 13.3.3.5 | CUW-005 Mover Archivos | 0.75d? | 2015-06-16 13:00 | 2015-06-17 10:00 | 140 |  |  |  | 2d | 0d | SEII - Web | 6h | 6 |  |
| 142 | 13.3.3.6 | CUW-006 Enviar Notificaciones | 0.5d? | 2015-06-17 10:00 | 2015-06-17 15:00 | 141 |  |  |  | 2d | 0d | SEII - Web | 4h | 4 |  |
| 143 | 13.3.3.7 | CUW-007: Cerrar Sesión | 0.25d? | 2015-06-17 15:00 | 2015-06-17 17:00 | 142 |  |  |  | 2d |  | SEII - Web | 2h | 2 |  |
| 144 | 13.4 | **Portal Web** | 11.25d? | 2015-06-18 08:00 | 2015-07-06 10:00 |  | 2015-06-10 15:00 | 2015-07-02 15:00 | 15d? | 2d | 0d |  | 154h | 154 | 120 |
| 145 | 13.4.1 | Creación proyecto base | 2d | 2015-06-18 08:00 | 2015-06-19 17:00 | 136 | 2015-06-10 15:00 | 2015-06-11 15:00 | 1d | 2d | 0d | SEII - Web | 16h | 16 | 8 |
| 146 | 13.4.2 | **CUW-001: Iniciar sesión, CUW-007: Cerrar Sesión** | 2d? | 2015-06-22 08:00 | 2015-06-23 17:00 | 145 | 2015-06-11 15:00 | 2015-06-12 10:00 | 0.5d | 3.25d | 0d |  | 16h | 16 | 4 |
| 147 | 13.4.2.1 | Consumir servicio Yanbal | 1d | 2015-06-22 08:00 | 2015-06-22 17:00 |  | 2015-06-12 10:00 | 2015-06-15 10:00 | 1d | 3.25d | 0d | SEI - Web | 8h | 8 | 8 |
| 148 | 13.4.2.2 | Validar Rol obtenido | 0.75d | 2015-06-23 08:00 | 2015-06-23 15:00 | 147 | 2015-06-15 10:00 | 2015-06-16 10:00 | 1d | 3.25d | 0d | SEI - Web | 6h | 6 | 8 |
| 149 | 13.4.2.3 | Cerrar Sesión | 0.25d? | 2015-06-23 15:00 | 2015-06-23 17:00 | 148 |  |  |  | 3.25d |  | SEI - Web | 2h | 2 |  |
| 150 | 13.4.3 | **CUW-002: Configurar tamaño de Carga y Descarga** | 2d? | 2015-06-24 08:00 | 2015-06-25 17:00 | 146 | 2015-06-16 10:00 | 2015-06-18 10:00 | 2d | 3.25d |  |  | 16h | 16 | 16 |
| 151 | 13.4.3.1 | Listar Limites de Carga y Descarga | 1d | 2015-06-24 08:00 | 2015-06-24 17:00 |  | 2015-06-18 10:00 | 2015-06-19 10:00 | 1d | 3.25d | 0d | SEI - Web | 8h | 8 | 8 |
| 152 | 13.4.3.2 | Editar Limite Carga y Descarga | 1d? | 2015-06-25 08:00 | 2015-06-25 17:00 | 151 |  |  |  | 3.25d | 0d | SEI - Web | 8h | 8 |  |
| 153 | 13.4.4 | **CUW-006 Enviar Notificaciones** | 1.5d? | 2015-06-26 08:00 | 2015-06-30 12:00 | 152 |  |  |  | 3.25d | 0d |  | 12h | 12 |  |
| 154 | 13.4.4.1 | Indicador de publicaciones pendientes | 0.25d? | 2015-06-26 08:00 | 2015-06-26 10:00 |  |  |  |  | 3.25d | 0d | SEI - Web | 2h | 2 |  |
| 155 | 13.4.4.2 | Validar mensaje | 0.5d? | 2015-06-26 10:00 | 2015-06-26 15:00 | 154 |  |  |  | 3.25d | 0d | SEI - Web | 4h | 4 |  |
| 156 | 13.4.4.3 | Enviar notificación push | 0.75d? | 2015-06-26 15:00 | 2015-06-30 12:00 | 155 |  |  |  | 3.25d |  | SEI - Web | 6h | 6 |  |
| 157 | 13.4.5 | **CUW-005 Mover Archivos** | 2.5d? | 2015-06-30 13:00 | 2015-07-02 17:00 | 153 |  |  |  | 3.25d |  |  | 20h | 20 |  |
| 158 | 13.4.5.1 | Listar Coleccion | 1d? | 2015-06-30 13:00 | 2015-07-01 12:00 |  |  |  |  | 3.25d | 0d | SEI - Web | 8h | 8 |  |
| 159 | 13.4.5.2 | Mover Archivo | 1.5d? | 2015-07-01 13:00 | 2015-07-02 17:00 | 158 |  |  |  | 3.25d |  | SEI - Web | 12h | 12 |  |

| ID | WBS | Task | Duration | Start | Finish | Predecessors | Total slack | Free slack | Resources | Work | Cost |
| --- | --- | --- | --- | --- | --- | --- | --- | --- | --- | --- | --- |
| 160 | 13.4.6 | **CUW-003: Gestionar Colecciones** | 3.25d? | 2015-06-22 08:00 | 2015-06-25 10:00 | 145 | 2d | 0d |  | 26h | 26 |
| 161 | 13.4.6.1 | Listar Coleccion | 0.75d? | 2015-06-22 08:00 | 2015-06-22 15:00 |  | 2d | 0d | SEII - Web | 6h | 6 |
| 162 | 13.4.6.2 | Buscar Coleccion | 0.5d? | 2015-06-22 15:00 | 2015-06-23 10:00 | 161 | 2d | 0d | SEII - Web | 4h | 4 |
| 163 | 13.4.6.3 | Crear Coleccion | 0.75d? | 2015-06-23 10:00 | 2015-06-23 17:00 | 162 | 2d | 0d | SEII - Web | 6h | 6 |
| 164 | 13.4.6.4 | Editar Coleccion | 0.75d? | 2015-06-24 08:00 | 2015-06-24 15:00 | 163 | 2d | 0d | SEII - Web | 6h | 6 |
| 165 | 13.4.6.5 | Eliminar Coleccion | 0.5d? | 2015-06-24 15:00 | 2015-06-25 10:00 | 164 | 2d |  | SEII - Web | 4h | 4 |
| 166 | 13.4.7 | **CUW-004: Gestionar Archivos** | 4.75d? | 2015-06-25 10:00 | 2015-07-02 17:00 | 160 | 2d | 0d |  | 38h | 38 |
| 167 | 13.4.7.1 | Listar Archivo | 0.75d? | 2015-06-25 10:00 | 2015-06-25 17:00 |  | 2d | 0d | SEII - Web | 6h | 6 |
| 168 | 13.4.7.2 | Crear Archivo | 0.75d? | 2015-06-26 08:00 | 2015-06-26 15:00 | 167 | 2d | 0d | SEII - Web | 6h | 6 |
| 169 | 13.4.7.3 | Editar Archivo | 0.75d? | 2015-06-26 15:00 | 2015-06-30 12:00 | 168 | 2d | 0d | SEII - Web | 6h | 6 |
| 170 | 13.4.7.4 | Cargar Archivo | 0.5d? | 2015-06-30 13:00 | 2015-06-30 17:00 | 169 | 2d | 0d | SEII - Web | 4h | 4 |
| 171 | 13.4.7.5 | Listar Roles y Paises | 1d? | 2015-07-01 08:00 | 2015-07-01 17:00 | 170 | 2d | 0d | SEII - Web | 8h | 8 |
| 172 | 13.4.7.6 | Validar limite de Carga de archivo | 0.25d? | 2015-07-02 08:00 | 2015-07-02 10:00 | 171 | 2d | 0d | SEII - Web | 2h | 2 |
| 173 | 13.4.7.7 | Eliminar Archivo | 0.75d? | 2015-07-02 10:00 | 2015-07-02 17:00 | 172 | 2d |  | SEII - Web | 6h | 6 |
| 174 | 13.4.8 | Pruebas de desarrollador | 0.75d? | 2015-07-03 08:00 | 2015-07-03 15:00 | 166 | 2d | 0d | SEII - Web | 6h | 6 |
| 175 | 13.4.9 | Revisión de pares | 0.5d? | 2015-07-03 15:00 | 2015-07-06 10:00 | 174 | 2d |  | SEII - Web | 4h | 4 |
| 176 | 13.5 | Pruebas integración | 2d? | 2015-07-06 10:00 | 2015-07-08 10:00 | 144 | 2d | 0d | SEII - Web | 16h | 16 |
| 177 | 13.6 | Configuración Ambientes de QA | 1.75d? | 2015-07-08 10:00 | 2015-07-09 17:00 | 176 | 2d |  | SEII - Web | 14h | 14 |
| 178 | 13.7 | Pruebas exploratorias | 3d? | 2015-07-06 10:00 | 2015-07-09 10:00 | 176SS | 2.75d |  | QAI - 1 | 24h | 24 |
| 179 | 14 | **Aseguramiento de la calidad** | 12d? | 2015-07-10 08:00 | 2015-07-27 17:00 | 64 | 2d |  |  | 452h | 452 |
| 180 | 14.1 | **Pruebas Funcionales** | 8d? | 2015-07-10 08:00 | 2015-07-21 17:00 |  | 2d | 0d |  | 320h | 320 |
| 181 | 14.1.1 | **Móvil** | 8d? | 2015-07-10 08:00 | 2015-07-21 17:00 |  | 2d | 0d |  | 240h | 240 |
| 182 | 14.1.1.1 | **Ejecución en Tablet** | 7d? | 2015-07-10 08:00 | 2015-07-20 17:00 |  | 3d |  |  | 112h | 112 |
| 183 | 14.1.1.1.1 | Ejecución en Samsung de 10.1" /SO Android 4.1.2 (Principal) | 3d? | 2015-07-10 08:00 | 2015-07-14 17:00 |  | 3d | 0d | QAI - 1; Tester - 1 | 48h | 48 |
| 184 | 14.1.1.1.2 | Ejecución en Lenovo 7" / SO Android 4.2.2 (Secundario) | 1d? | 2015-07-15 08:00 | 2015-07-15 17:00 | 183 | 3d | 0d | QAI - 1; Tester - 1 | 16h | 16 |
| 185 | 14.1.1.1.3 | Tablet AOC / SO: Android 4.1.1 (Secundario) | 1d? | 2015-07-16 08:00 | 2015-07-16 17:00 | 184 | 3d | 0d | QAI - 1; Tester - 1 | 16h | 16 |
| 186 | 14.1.1.1.4 | Ejecución en Ipad SO 7 (Secundario) | 1d? | 2015-07-17 08:00 | 2015-07-17 17:00 | 185 | 3d | 0d | QAI - 1; Tester - 1 | 16h | 16 |
| 187 | 14.1.1.1.5 | Ejecución en Ipad SO 8 (Secundario) | 1d? | 2015-07-20 08:00 | 2015-07-20 17:00 | 186 | 3d |  | QAI - 1; Tester - 1 | 16h | 16 |

| ID | WBS | Task | Duration | Start | Finish | Predecessors | Total slack | Free slack | Resources | Work | Cost |
| --- | --- | --- | --- | --- | --- | --- | --- | --- | --- | --- | --- |
| 188 | 14.1.1.2 | **Ejecución en SmartPhone** | 8d? | 2015-07-10 08:00 | 2015-07-21 17:00 |  | 2d |  |  | 128h | 128 |
| 189 | 14.1.1.2.1 | Nokia Lumia 520 / SO: Windows Phone 8.0 (Principal) | 3d? | 2015-07-10 08:00 | 2015-07-14 17:00 |  | 2d | 0d | QAI - 2; Tester - 2 | 48h | 48 |
| 190 | 14.1.1.2.2 | Ejecución en Samsung Galaxy Chat/SO -SO Android 4.1.2 (secundario) | 1d? | 2015-07-15 08:00 | 2015-07-15 17:00 | 189 | 2d | 0d | QAI - 2; Tester - 2 | 16h | 16 |
| 191 | 14.1.1.2.3 | Samsung Galaxy S III Mini / SO: Android 4.1.2 (Principal) | 1d? | 2015-07-16 08:00 | 2015-07-16 17:00 | 190 | 2d | 0d | QAI - 2; Tester - 2 | 16h | 16 |
| 192 | 14.1.1.2.4 | Ejecución en Iphone 4 / iSO 7 (Principal) | 1d? | 2015-07-17 08:00 | 2015-07-17 17:00 | 191 | 2d | 0d | QAI - 2; Tester - 2 | 16h | 16 |
| 193 | 14.1.1.2.5 | Ejecución en Iphone 5 / iSO 7 (Secundario) | 1d? | 2015-07-20 08:00 | 2015-07-20 17:00 | 192 | 2d | 0d | QAI - 2; Tester - 2 | 16h | 16 |
| 194 | 14.1.1.2.6 | Ejecución en Iphone 6 / iSO 7 (Secundario) | 1d? | 2015-07-21 08:00 | 2015-07-21 17:00 | 193 | 2d |  | QAI - 2; Tester - 2 | 16h | 16 |
| 195 | 14.1.2 | **Web** | 5d? | 2015-07-10 08:00 | 2015-07-16 17:00 |  | 5d | 0d |  | 80h | 80 |
| 196 | 14.1.2.1 | **Ejecución en Web Browser - IE9 (Principal)** | 3.75d? | 2015-07-10 08:00 | 2015-07-15 15:00 |  | 5d | 0d |  | 60h | 60 |
| 197 | 14.1.2.1.1 | Ejecución de casos de prueba funcionales | 2.25d? | 2015-07-10 08:00 | 2015-07-14 10:00 |  | 5d | 0d | QAI - 3; Tester - 3 | 36h | 36 |
| 198 | 14.1.2.1.2 | Reporte de errores | 0.5d? | 2015-07-14 10:00 | 2015-07-14 15:00 | 197 | 5d | 0d | QAI - 3; Tester - 3 | 8h | 8 |
| 199 | 14.1.2.1.3 | Verificación de errores | 0.5d? | 2015-07-14 15:00 | 2015-07-15 10:00 | 198 | 5d | 0d | QAI - 3; Tester - 3 | 8h | 8 |
| 200 | 14.1.2.1.4 | Pruebas exploratoria | 0.5d? | 2015-07-15 10:00 | 2015-07-15 15:00 | 199 | 5d |  | QAI - 3; Tester - 3 | 8h | 8 |
| 201 | 14.1.2.2 | Ejecución en Web Browser - Chrome 40 (Secundario) | 1.25d? | 2015-07-15 15:00 | 2015-07-16 17:00 | 196 | 5d |  | QAI - 3; Tester - 3 | 20h | 20 |
| 202 | 14.2 | **Soporte a Pruebas Funcionales (Resolución de Bugs)** | 8d? | 2015-07-10 08:00 | 2015-07-21 17:00 |  | 6d | 0d |  | 64h | 64 |
| 203 | 14.2.1 | Móvil | 8d | 2015-07-10 08:00 | 2015-07-21 17:00 | 181SS | 6d |  | SEII - Mobile [50%] | 32h | 32 |
| 204 | 14.2.2 | Web | 8d? | 2015-07-10 08:00 | 2015-07-21 17:00 | 195SS | 6d |  | SEII - Web [50%] | 32h | 32 |
| 205 | 14.3 | **Pruebas de Rendimiento** | 8.5d? | 2015-07-15 13:00 | 2015-07-27 17:00 |  | 2d |  |  | 68h | 68 |
| 206 | 14.3.1 | Creación de Scripts (Flujo: 6WS) | 4.5d? | 2015-07-15 13:00 | 2015-07-22 08:00 | 207SF | 6d |  | QAII | 36h | 36 |
| 207 | 14.3.2 | **Ejecución de Pruebas** | 2.5d? | 2015-07-22 08:00 | 2015-07-24 12:00 | 180 | 2d | 0d |  | 20h | 20 |
| 208 | 14.3.2.1 | Preparación del Ambiente | 0.75d? | 2015-07-22 08:00 | 2015-07-22 15:00 |  | 2d | 0d | QAII | 6h | 6 |
| 209 | 14.3.2.2 | Prueba de Ambiente | 0.25d? | 2015-07-22 15:00 | 2015-07-22 17:00 | 208 | 2d | 0d | QAII | 2h | 2 |
| 210 | 14.3.2.3 | Ejecución prueba de carga | 1.5d? | 2015-07-23 08:00 | 2015-07-24 12:00 | 209 | 2d |  | QAII | 12h | 12 |
| 211 | 14.3.3 | **Documentación** | 1.5d? | 2015-07-24 13:00 | 2015-07-27 17:00 | 207 | 2d |  |  | 12h | 12 |
| 212 | 14.3.3.1 | Parsing Logs | 0.5d? | 2015-07-24 13:00 | 2015-07-24 17:00 |  | 2d | 0d | QAII | 4h | 4 |
| 213 | 14.3.3.2 | Análisis y Notas Iniciales | 0.5d? | 2015-07-27 08:00 | 2015-07-27 12:00 | 212 | 2d | 0d | QAII | 4h | 4 |
| 214 | 14.3.3.3 | Creación de documento de resultados | 0.5d? | 2015-07-27 13:00 | 2015-07-27 17:00 | 213 | 2d |  | QAII | 4h | 4 |
| 215 | 15 | Soporte a Pruebas de Rendimiento | 4d | 2015-07-22 08:00 | 2015-07-27 17:00 | 207SS | 2d |  | SEII - Web [50%] | 16h | 16 |

| ID | WBS | Task | Duration | Start | Finish | Predecessors | Total slack | Resources | Work | Cost |
| --- | --- | --- | --- | --- | --- | --- | --- | --- | --- | --- |
| 216 | 16 | **Documentación** | 12d? | 2015-07-10 08:00 | 2015-07-27 17:00 | 202SS | 0d |  | 96h | 96 |
| 217 | 16.1 | **Móvil** | 10d? | 2015-07-10 08:00 | 2015-07-23 17:00 |  | 0d |  | 48h | 48 |
| 218 | 16.1.1 | Release notes | 1d? | 2015-07-10 08:00 | 2015-07-10 17:00 |  | 0d | SEII - Mobile [50%] | 4h | 4 |
| 219 | 16.1.2 | Manual de soporte | 3d? | 2015-07-13 08:00 | 2015-07-15 17:00 | 218 | 0d | SEII - Mobile [50%] | 12h | 12 |
| 220 | 16.1.3 | Manual de instalación | 4d? | 2015-07-16 08:00 | 2015-07-21 17:00 | 219 | 0d | SEII - Mobile [50%] | 16h | 16 |
| 221 | 16.1.4 | Manual de usuario | 2d? | 2015-07-22 08:00 | 2015-07-23 17:00 | 220 | 0d | SEII - Mobile | 16h | 16 |
| 222 | 16.2 | **Web** | 12d? | 2015-07-10 08:00 | 2015-07-27 17:00 |  | 0d |  | 48h | 48 |
| 223 | 16.2.1 | Release notes | 1d? | 2015-07-10 08:00 | 2015-07-10 17:00 |  | 0d | SEII - Web [50%] | 4h | 4 |
| 224 | 16.2.2 | Manual de soporte | 3d? | 2015-07-13 08:00 | 2015-07-15 17:00 | 223 | 0d | SEII - Web [50%] | 12h | 12 |
| 225 | 16.2.3 | Manual de instalación | 4d? | 2015-07-16 08:00 | 2015-07-21 17:00 | 224 | 0d | SEII - Web [50%] | 16h | 16 |
| 226 | 16.2.4 | Manual de usuario | 4d? | 2015-07-22 08:00 | 2015-07-27 17:00 | 225 | 0d | SEII - Web [50%] | 16h | 16 |
| 227 | 17 | **Generación de Binarios** | 3d? | 2015-07-24 08:00 | 2015-07-30 17:00 |  | 0d |  | 16h | 16 |
| 228 | 17.1 | Portal Web / Web Services | 1d? | 2015-07-30 08:00 | 2015-07-30 17:00 | 222 | 0d | SEII - Web | 8h | 8 |
| 229 | 17.2 | Aplicaciones Moviles (iOS, Android, Windows Phone) | 1d? | 2015-07-24 08:00 | 2015-07-24 17:00 | 217 | 0d | SEII - Mobile | 8h | 8 |
| 230 | 18 | **Despliegue Certificación Yanbal** | 3d? | 2015-07-27 08:00 | 2015-07-31 17:00 |  | 0d |  | 32h | 32 |
| 231 | 18.1 | Móvil | 3d? | 2015-07-27 08:00 | 2015-07-31 17:00 | 229 | 0d | SEII - Mobile | 24h | 24 |
| 232 | 18.2 | Web | 1d? | 2015-07-31 08:00 | 2015-07-31 17:00 | 228 | 0d | SEII - Web | 8h | 8 |
