# Yanbal PhoneGap - Web

Schedule from MS Project, 2015-04-14 to 2015-08-12, status date 2008-01-09, costs in $, A marks actual dates.
Avantica Technologies

## Calendars

- Standard: Mon-Fri 08:00-12:00, 13:00-17:00; Sat-Sun off. Exceptions (off unless hours are given): 2015-05-01 (Dia del Trabajo), 2015-06-29 (Día de San Pedro y San Pablo), 2015-07-28 to 2015-07-29 (Fiestas Patrias).

## Resources

| Resource | Rate |
| --- | --- |
| QAII | 1 |
| PM | 1 |
| UX | 1 |
| SEII - Mobile | 1 |
| SEII - Web | 1 |
| QAI - 1 | 1 |
| QAI - 2 | 1 |
| Tester - 1 | 1 |
| Tester - 2 | 1 |
| Yanbal | 1 |
| UX1 | 1 |
| QAI - 3 | 1 |
| Tester - 3 | 1 |
| ARQ | 1 |
| SEI - Web | 1 |
| QAII - 2 | 1 |
| QAII - 3 | 1 |

## Schedule

| ID | WBS | Task | Type | Duration | Start | Finish | Predecessors | Complete | Remaining | Baseline start | Baseline finish | Baseline duration | Total slack | Free slack | Constraint | Resources | Work | Actual work | Cost | Baseline cost | Actual cost |
| --- | --- | --- | --- | --- | --- | --- | --- | --- | --- | --- | --- | --- | --- | --- | --- | --- | --- | --- | --- | --- | --- |
| 1 | 1 | Gestión del proyecto |  | 75d | 2015-04-14 A | 2015-07-31 |  | 51% | 37d |  |  |  | 7.12d |  |  | PM [40%] | 240h | 121.6h | 240 |  | 121.6 |
| 2 | 2 | Sesión de Inicio de Proyecto (KickOff) |  | 4h | 2015-04-14 A | 2015-04-14 A |  | 100% |  | 2015-04-14 | 2015-04-14 | 4h |  |  |  | SEII - Mobile; SEII - Web | 8h | 8h | 8 | 8 | 8 |
| 3 | 3 | **Análisis** |  | 17d? | 2015-04-14 A | 2015-05-08 A | 2 | 100% |  | 2015-04-14 | 2015-04-23 | 6.75d |  |  |  |  | 219h | 219h | 219 | 108 | 219 |
| 4 | 3.1 | Reuniones (124) |  | 2d | 2015-04-14 A | 2015-04-16 A |  | 100% |  | 2015-04-14 | 2015-04-16 | 2d |  |  |  | SEII - Mobile; SEII - Web | 32h | 32h | 32 | 32 | 32 |
| 5 | 3.2 | Especificación de requerimientos funcionales (125) |  | 1d | 2015-04-16 A | 2015-04-17 A | 4 | 100% |  | 2015-04-16 | 2015-04-16 | 0.5d |  |  |  | SEII - Mobile; SEII - Web | 16h | 16h | 16 | 8 | 16 |
| 6 | 3.3 | Creación de Wireframes (126) |  | 6d | 2015-04-17 A | 2015-04-27 A | 5 | 100% |  | 2015-04-17 | 2015-04-20 | 2d |  |  |  | SEII - Mobile; SEII - Web | 64h | 64h | 64 | 32 | 64 |
| 7 | 3.4 | Especificación de casos de uso (127) |  | 6d | 2015-04-21 A | 2015-04-29 A | 6 | 100% |  | 2015-04-21 | 2015-04-22 | 2d |  |  |  | SEII - Mobile; SEII - Web | 48h | 48h | 48 | 32 | 48 |
| 8 | 3.5 | Matriz de trazabilidad: requerimientos / casos de uso (128) |  | 1d | 2015-04-28 A | 2015-04-28 A | 7 | 100% |  | 2015-04-23 | 2015-04-23 | 0.25d |  |  |  | SEII - Mobile; SEII - Web | 4h | 4h | 4 | 4 | 4 |
| 9 | 3.6 | Aprobación Yanbal |  | 2.5d? | 2015-04-29 A | 2015-05-04 A | 8 | 100% |  |  |  |  |  |  |  | Yanbal | 20h | 20h | 20 |  | 20 |
| 10 | 3.7 | Modificación de documentos (144) |  | 3.5d? | 2015-05-05 A | 2015-05-08 A | 9 | 100% |  |  |  |  |  |  |  | SEII - Mobile; SEII - Web | 35h | 35h | 35 |  | 35 |
| 11 | 4 | Fin Analisis | milestone | 0d | 2015-05-14 A | 2015-05-14 A | 3 | 100% |  |  |  |  |  |  |  |  |  |  |  |  |  |
| 12 | 5 | **Diseño Técnico** |  | 30d? | 2015-04-27 A | 2015-06-08 A |  | 100% |  | 2015-04-23 | 2015-05-06 | 8d |  |  |  |  | 399h | 399h | 399 | 128 | 399 |
| 13 | 5.1 | Catalogo de servicios web a crear / consumir (137) |  | 3d | 2015-04-27 A | 2015-05-13 A | 9SS | 100% |  | 2015-05-04 | 2015-05-06 | 2d |  |  |  | SEII - Mobile; SEII - Web | 23h | 23h | 23 | 32 | 23 |
| 14 | 5.2 | Reuniones (129) |  | 7d | 2015-04-28 A | 2015-05-15 A | 13, 10 | 100% |  | 2015-04-23 | 2015-04-24 | 1d |  |  |  | SEII - Mobile; SEII - Web | 36h | 36h | 36 | 16 | 36 |
| 15 | 5.3 | Configurar ambiente de desarrollo (141 y 142) |  | 8d? | 2015-04-30 A | 2015-05-29 A | 14 | 100% |  |  |  |  |  |  |  | SEII - Mobile; SEII - Web | 31h | 31h | 31 |  | 31 |
| 16 | 5.4 | Revisión documentación Yanbal (143) |  | 1d? | 2015-04-30 A | 2015-04-30 A | 15 | 100% |  |  |  |  |  |  |  | SEII - Mobile; SEII - Web | 4h | 4h | 4 |  | 4 |
| 17 | 5.5 | Definir estándares de desarrollo (130 y 161) |  | 1d | 2015-05-18 A | 2015-05-18 A | 16 | 100% |  | 2015-04-24 | 2015-04-24 | 0.5d |  |  |  | SEII - Mobile; SEII - Web | 3h | 3h | 3 | 8 | 3 |
| 18 | 5.6 | Requerimientos no funcionales (131 y 162) |  | 2d | 2015-04-30 A | 2015-05-18 A | 17 | 100% |  | 2015-04-24 | 2015-04-27 | 0.5d |  |  |  | SEII - Mobile; SEII - Web | 5h | 5h | 5 | 8 | 5 |
| 19 | 5.7 | Arquitectura (132) |  | 4d | 2015-04-30 A | 2015-05-18 A | 18 | 100% |  | 2015-04-27 | 2015-04-27 | 0.25d |  |  |  | SEII - Mobile; SEII - Web | 14h | 14h | 14 | 4 | 14 |
| 20 | 5.8 | Base de Datos (136 y 160) |  | 4d | 2015-05-11 A | 2015-05-14 A | 19 | 100% |  | 2015-04-27 | 2015-04-27 | 0.5d |  |  |  | SEII - Mobile; SEII - Web | 14h | 14h | 14 | 8 | 14 |
| 21 | 5.9 | Especificación Técnica de la Solución (151 y 156) |  | 4d | 2015-05-13 A | 2015-05-18 A | 20 | 100% |  | 2015-04-28 | 2015-04-28 | 0.25d |  |  |  | SEII - Mobile; SEII - Web | 27h | 27h | 27 | 4 | 27 |
| 22 | 5.10 | Diagrama de Clases (148 y 149) |  | 4d | 2015-05-06 A | 2015-05-15 A | 21 | 100% |  | 2015-04-28 | 2015-04-30 | 2d |  |  |  | SEII - Mobile; SEII - Web | 14h | 14h | 14 | 32 | 14 |
| 23 | 5.11 | Mapa de Navegación (150 y 155) |  | 1d | 2015-05-15 A | 2015-05-15 A | 22 | 100% |  | 2015-04-30 | 2015-05-04 | 1d |  |  |  | SEII - Mobile; SEII - Web | 3h | 3h | 3 | 16 | 3 |
| 24 | 5.12 | Perfiles del sistema (153 y 158) |  | 2d? | 2015-05-14 A | 2015-05-15 A | 23 | 100% |  |  |  |  |  |  |  | SEII - Mobile; SEII - Web | 2h | 2h | 2 |  | 2 |
| 25 | 5.13 | Especificación de pantallas (152 y 157) |  | 1d? | 2015-05-18 A | 2015-05-19 A | 24 | 100% |  |  |  |  |  |  |  | SEII - Mobile; SEII - Web | 12h | 12h | 12 |  | 12 |
| 26 | 5.14 | Aprobación Yanbal |  | 2d? | 2015-05-19 A | 2015-05-21 A | 25 | 100% |  |  |  |  |  |  |  | Yanbal | 16h | 16h | 16 |  | 16 |
| 27 | 5.15 | Modificación de documentos (205 y 206) |  | 13.12d? | 2015-05-20 A | 2015-06-08 A | 26SS | 100% |  |  |  |  |  |  |  | SEII - Mobile [600%]; SEII - Web | 163h | 163h | 163 |  | 163 |
| 28 | 5.16 | Aprobación Yanbal |  | 2d? | 2015-05-21 A | 2015-05-25 A | 26 | 100% |  |  |  |  |  |  |  | Yanbal | 16h | 16h | 16 |  | 16 |
| 29 | 5.17 | Revisión de entregable por Aquitectura Avantica |  | 2d? | 2015-05-25 A | 2015-05-27 A | 28 | 100% |  |  |  |  |  |  |  | ARQ | 16h | 16h | 16 |  | 16 |
| 30 | 6 | Fin Diseño Técnico |  | 1d? | 2015-06-03 | 2015-06-03 |  |  |  |  |  |  | 4.18d | 0d | finish no earlier than 2015-06-03 |  |  |  |  |  |  |
| 31 | 7 | Disponibilidad UX | milestone | 0d | 2015-04-29 A | 2015-04-29 A |  | 100% |  |  |  |  |  |  |  |  |  |  |  |  |  |

| ID | WBS | Task | Type | Duration | Start | Finish | Predecessors | Complete | Baseline start | Baseline finish | Baseline duration | Constraint | Resources | Work | Actual work | Cost | Baseline cost | Actual cost |
| --- | --- | --- | --- | --- | --- | --- | --- | --- | --- | --- | --- | --- | --- | --- | --- | --- | --- | --- |
| 32 | 8 | **Diseño Gráfico** |  | 18d? | 2015-04-29 A | 2015-05-25 A | 31 | 100% | 2015-04-21 | 2015-05-18 | 18.25d |  |  | 142h | 142h | 136 | 146 | 136 |
| 33 | 8.1 | **Preparación de propuesta** |  | 10.25d | 2015-04-29 A | 2015-05-14 A |  | 100% | 2015-04-21 | 2015-04-30 | 7.25d |  |  | 82h | 82h | 82 | 58 | 82 |
| 34 | 8.1.1 | Reuniones con el cliente (información inicial) |  | 0.75d | 2015-04-29 A | 2015-04-29 A |  | 100% | 2015-04-21 | 2015-04-21 | 0.75d |  | UX | 6h | 6h | 6 | 6 | 6 |
| 35 | 8.1.2 | Elaboración de propuesta grafica (2 Pág. Maestras) Móvil |  | 3.5d | 2015-04-29 A | 2015-05-06 A | 34 | 100% | 2015-04-21 | 2015-04-24 | 2.5d |  | UX | 28h | 28h | 28 | 20 | 28 |
| 36 | 8.1.3 | Elaboración de propuesta grafica (2 Pág. Maestras) Web |  | 3.5d | 2015-05-06 A | 2015-05-11 A | 35 | 100% | 2015-04-24 | 2015-04-28 | 2.25d |  | UX | 28h | 28h | 28 | 18 | 28 |
| 37 | 8.1.4 | Elaboración de assets y cortes de imágenes |  | 2.5d | 2015-05-11 A | 2015-05-14 A | 36 | 100% | 2015-04-28 | 2015-04-30 | 1.75d |  | UX | 20h | 20h | 20 | 14 | 20 |
| 38 | 8.2 | **Preparación de maquetas y assets** |  | 7.75d? | 2015-05-14 A | 2015-05-25 A | 33 | 100% | 2015-04-30 | 2015-05-18 | 11d |  |  | 60h | 60h | 54 | 88 | 54 |
| 39 | 8.2.1 | **Kiosko Móvil** |  | 4.75d? | 2015-05-14 A | 2015-05-20 A |  | 100% | 2015-05-13 | 2015-05-18 | 3d |  |  | 36h | 36h | 30 | 24 | 30 |
| 40 | 8.2.1.1 | Login |  | 0.75d | 2015-05-14 A | 2015-05-14 A |  | 100% | 2015-05-13 | 2015-05-13 | 0.75d |  | UX | 6h | 6h | 6 | 6 | 6 |
| 41 | 8.2.1.2 | Página Principal |  | 0.75d | 2015-05-15 A | 2015-05-15 A | 40 | 100% | 2015-05-14 | 2015-05-14 | 0.75d |  | UX | 6h | 6h | 6 | 6 | 6 |
| 42 | 8.2.1.3 | Ver Colección |  | 0.75d | 2015-05-15 A | 2015-05-18 A | 41 | 100% | 2015-05-14 | 2015-05-15 | 0.75d |  | UX | 6h | 6h | 6 | 6 | 6 |
| 43 | 8.2.1.4 | Notificaciones |  | 0.75d | 2015-05-18 A | 2015-05-19 A | 42 | 100% | 2015-05-15 | 2015-05-18 | 0.75d |  | UX | 6h | 6h | 6 | 6 | 6 |
| 44 | 8.2.1.5 | Configuración |  | 0.75d? | 2015-05-19 A | 2015-05-19 A | 43 | 100% |  |  |  |  | UX | 6h | 6h | 6 |  | 6 |
| 45 | 8.2.1.6 | Ver/Descargar/Eliminar Archivo |  | 1d? | 2015-05-20 A | 2015-05-20 A | 44 | 100% |  |  |  |  |  | 6h | 6h |  |  |  |
| 46 | 8.2.2 | **Kisoko Web** |  | 3d? | 2015-05-21 A | 2015-05-25 A | 39 | 100% | 2015-04-30 | 2015-05-13 | 8d |  |  | 24h | 24h | 24 | 64 | 24 |
| 47 | 8.2.2.1 | Login |  | 0.38d | 2015-05-21 A | 2015-05-21 A |  | 100% | 2015-04-30 | 2015-05-04 | 1d |  | UX | 3h | 3h | 3 | 8 | 3 |
| 48 | 8.2.2.2 | Pantalla Principal |  | 0.38d? | 2015-05-21 A | 2015-05-21 A | 47 | 100% |  |  |  |  | UX | 3h | 3h | 3 |  | 3 |
| 49 | 8.2.2.3 | Administración de Colecciones |  | 0.38d | 2015-05-21 A | 2015-05-22 A | 48 | 100% | 2015-05-08 | 2015-05-08 | 0.75d |  | UX | 3h | 3h | 3 | 6 | 3 |
| 50 | 8.2.2.4 | Crear/Editar Colecciones |  | 0.38d? | 2015-05-22 A | 2015-05-22 A | 49 | 100% |  |  |  |  | UX | 3h | 3h | 3 |  | 3 |
| 51 | 8.2.2.5 | Cargar Archivos |  | 0.38d? | 2015-05-22 A | 2015-05-22 A | 50 | 100% |  |  |  |  | UX | 3h | 3h | 3 |  | 3 |
| 52 | 8.2.2.6 | Publicar Archivos |  | 0.38d? | 2015-05-22 A | 2015-05-25 A | 51 | 100% |  |  |  |  | UX | 3h | 3h | 3 |  | 3 |
| 53 | 8.2.2.7 | Mover Archivos |  | 0.38d? | 2015-05-25 A | 2015-05-25 A | 52 | 100% |  |  |  |  | UX | 3h | 3h | 3 |  | 3 |
| 54 | 8.2.2.8 | Configuración de límites de carga y descarga |  | 0.38d | 2015-05-25 A | 2015-05-25 A | 53 | 100% | 2015-05-11 | 2015-05-11 | 0.75d |  | UX | 3h | 3h | 3 | 6 | 3 |
| 55 | 9 | Fin Diseño Gráfico |  | 1d? | 2015-05-25 A | 2015-05-25 A | 32 | 100% |  |  |  |  |  |  |  |  |  |  |
| 56 | 10 | Disponibilidad QA | milestone | 0d | 2015-05-18 A | 2015-05-18 A |  | 100% |  |  |  | start no earlier than 2015-05-18 |  |  |  |  |  |  |

| ID | WBS | Task | Duration | Start | Finish | Predecessors | Complete | Remaining | Baseline start | Baseline finish | Baseline duration | Total slack | Free slack | Constraint | Resources | Work | Actual work | Cost | Baseline cost | Actual cost |
| --- | --- | --- | --- | --- | --- | --- | --- | --- | --- | --- | --- | --- | --- | --- | --- | --- | --- | --- | --- | --- |
| 57 | 11 | **Planificación y Especificación de Pruebas** | 21d? | 2015-05-18 A | 2015-06-15 |  | 57% | 9d? |  |  |  | 38.12d |  |  |  | 128h | 80h | 128 |  | 80 |
| 58 | 11.1 | Plan de Pruebas Funcionales y de Rendimiento (163) | 3.5d? | 2015-06-08 | 2015-06-11 |  |  |  |  |  |  | 40.12d |  | start no earlier than 2015-06-08 | QAII - 2 | 16h |  | 16 |  |  |
| 59 | 11.2 | LCP - Listado de Casos de Prueba (164) | 2d? | 2015-05-18 A | 2015-05-20 A | 58 | 100% |  |  |  |  |  |  |  | QAI - 1 | 16h | 16h | 16 |  | 16 |
| 60 | 11.3 | ECP - Especificación de Casos de Prueba (165) | 8d? | 2015-05-20 A | 2015-05-29 A | 59 | 100% |  |  |  |  |  |  |  | QAI - 1 | 64h | 64h | 64 |  | 64 |
| 61 | 11.4 | Actualización de documentos de pruebas (237) | 3d? | 2015-06-10 | 2015-06-12 |  |  |  |  |  |  | 39.12d |  | finish no earlier than 2015-06-12 | QAII - 3 | 24h |  | 24 |  |  |
| 62 | 11.5 | Pruebas No Funcionales (236) | 1d? | 2015-06-15 | 2015-06-15 |  |  |  |  |  |  | 38.12d |  | start no earlier than 2015-06-15 | QAII - 3 | 8h |  | 8 |  |  |
| 63 | 12 | **Desarrollo** | 40.12d? | 2015-05-25 A | 2015-07-21 | 30 | 26% | 29.83d? | 2015-05-06 | 2015-07-02 | 40.5d? | 2d | 0d |  |  | 617h | 72h | 617 | 548 | 72 |
| 64 | 12.1 | **HTML** | 16d? | 2015-05-25 A | 2015-06-15 |  | 78% | 3.53d? | 2015-05-07 | 2015-05-13 | 4d? | 11.12d | 0d |  |  | 77h | 41h | 77 | 32 | 41 |
| 65 | 12.1.1 | **Estructura base HTML** | 11.5d? | 2015-05-25 A | 2015-06-09 A |  | 100% |  |  |  |  |  |  |  |  | 17h | 17h | 17 |  | 17 |
| 66 | 12.1.1.1 | Móvil (166) | 2.38d? | 2015-05-25 A | 2015-06-08 A |  | 100% |  |  |  |  |  |  |  | SEII - Mobile | 9h | 9h | 9 |  | 9 |
| 67 | 12.1.1.2 | Web (167) | 2.5d? | 2015-06-05 A | 2015-06-09 A | 66 | 100% |  |  |  |  |  |  |  | SEII - Mobile | 8h | 8h | 8 |  | 8 |
| 68 | 12.1.2 | **Páginas Móvil** | 9d? | 2015-05-28 A | 2015-06-09 | 65 | 96% | 0.39d? |  |  |  | 11.12d | 0d |  |  | 28h | 24h | 28 |  | 24 |
| 69 | 12.1.2.1 | Inicio Session (169) | 3d? | 2015-06-01 A | 2015-06-09 A |  | 100% |  |  |  |  |  |  |  | SEII - Mobile [50%] | 7h | 7h | 7 |  | 7 |
| 70 | 12.1.2.2 | Pagina Principal (170) | 1d? | 2015-05-28 A | 2015-05-28 A | 69 | 100% |  |  |  |  |  |  |  | SEII - Mobile | 2h | 2h | 2 |  | 2 |
| 71 | 12.1.2.3 | Coleccion seleccionada (171) | 1d? | 2015-06-05 A | 2015-06-05 A | 70 | 100% |  |  |  |  |  |  |  | SEII - Mobile | 2h | 2h | 2 |  | 2 |
| 72 | 12.1.2.4 | Opciones del archivo (172) | 1d? | 2015-05-28 A | 2015-05-28 A | 71 | 100% |  |  |  |  |  |  |  | SEII - Mobile | 2h | 2h | 2 |  | 2 |
| 73 | 12.1.2.5 | Página de configuración (173) | 1d? | 2015-06-02 A | 2015-06-02 A | 72 | 100% |  |  |  |  |  |  |  | SEII - Mobile | 1h | 1h | 1 |  | 1 |
| 74 | 12.1.2.6 | Panel de notificaciones (174) | 2d? | 2015-06-02 A | 2015-06-04 A | 73 | 100% |  |  |  |  |  |  |  | SEII - Mobile | 6h | 6h | 6 |  | 6 |
| 75 | 12.1.2.7 | Sincronización (175) | 2d? | 2015-06-04 A | 2015-06-05 A | 74 | 100% |  |  |  |  |  |  |  | SEII - Mobile | 4h | 4h | 4 |  | 4 |
| 76 | 12.1.2.8 | Revisión/Corrección con UX (176) | 0.5d? | 2015-06-09 | 2015-06-09 | 75 |  |  |  |  |  | 11.12d |  |  | SEII - Mobile | 4h |  | 4 |  |  |
| 77 | 12.1.3 | **Páginas Web** | 4d? | 2015-06-10 | 2015-06-15 | 68 |  |  |  |  |  | 11.12d |  |  |  | 32h |  | 32 |  |  |
| 78 | 12.1.3.1 | Página Principal | 0.5d? | 2015-06-10 | 2015-06-10 |  |  |  |  |  |  | 11.12d | 0d |  | SEII - Mobile | 4h |  | 4 |  |  |
| 79 | 12.1.3.2 | Inicio Session | 0.5d? | 2015-06-10 | 2015-06-10 | 78 |  |  |  |  |  | 11.12d | 0d |  | SEII - Mobile | 4h |  | 4 |  |  |
| 80 | 12.1.3.3 | Mantener Colecciones | 1.5d? | 2015-06-11 | 2015-06-12 | 79 |  |  |  |  |  | 11.12d | 0d |  | SEII - Mobile | 12h |  | 12 |  |  |
| 81 | 12.1.3.4 | Configurar limite de descarga | 0.5d? | 2015-06-12 | 2015-06-12 | 80 |  |  |  |  |  | 11.12d | 0d |  | SEII - Mobile | 4h |  | 4 |  |  |
| 82 | 12.1.3.5 | Revisión/Corrección con UX | 1d? | 2015-06-15 | 2015-06-15 | 81 |  |  |  |  |  | 11.12d |  |  | SEII - Mobile | 8h |  | 8 |  |  |

| ID | WBS | Task | Duration | Start | Finish | Predecessors | Baseline start | Baseline finish | Baseline duration | Total slack | Free slack | Resources | Work | Cost | Baseline cost |
| --- | --- | --- | --- | --- | --- | --- | --- | --- | --- | --- | --- | --- | --- | --- | --- |
| 83 | 12.2 | **PhoneGap** | 15d? | 2015-06-16 | 2015-07-07 | 64 | 2015-05-13 | 2015-06-12 | 21.5d? | 11.12d |  |  | 120h | 120 | 172 |
| 84 | 12.2.1 | Creación proyecto base | 1d? | 2015-06-16 | 2015-06-16 |  |  |  |  | 11.12d | 0d | SEII - Mobile | 8h | 8 |  |
| 85 | 12.2.2 | Revisión de pares | 0.5d? | 2015-06-17 | 2015-06-17 | 84 |  |  |  | 11.12d | 0d | SEII - Mobile | 4h | 4 |  |
| 86 | 12.2.3 | Creación archivo de propiedades | 0.5d? | 2015-06-17 | 2015-06-17 | 85 |  |  |  | 11.12d | 0d | SEII - Mobile | 4h | 4 |  |
| 87 | 12.2.4 | **CUM-001: Autenticar usuario, CUM-011: Cerrar Sesión** | 2.5d? | 2015-06-18 | 2015-06-22 | 86 |  |  |  | 11.12d | 0d |  | 20h | 20 |  |
| 88 | 12.2.4.1 | Consumir servicio | 0.25d? | 2015-06-18 | 2015-06-18 |  |  |  |  | 11.12d | 0d | SEII - Mobile | 2h | 2 |  |
| 89 | 12.2.4.2 | **Crear BD local en el móvil** | 1.5d? | 2015-06-18 | 2015-06-19 | 88 |  |  |  | 11.12d |  |  | 12h | 12 |  |
| 90 | 12.2.4.2.1 | plugin sqlite | 0.5d? | 2015-06-18 | 2015-06-18 |  |  |  |  | 11.12d | 0d | SEII - Mobile | 4h | 4 |  |
| 91 | 12.2.4.2.2 | creación de estructura base | 0.5d? | 2015-06-18 | 2015-06-19 | 90 |  |  |  | 11.12d | 0d | SEII - Mobile | 4h | 4 |  |
| 92 | 12.2.4.2.3 | llenar paises con carga inicial / consumir servicio web de paises | 0.5d? | 2015-06-19 | 2015-06-19 | 91 |  |  |  | 11.12d | 0d | SEII - Mobile | 4h | 4 |  |
| 93 | 12.2.4.3 | Guardar sesión | 0.5d? | 2015-06-19 | 2015-06-22 | 92 |  |  |  | 11.12d | 0d | SEII - Mobile | 4h | 4 |  |
| 94 | 12.2.4.4 | Cerrar sesión | 0.25d? | 2015-06-22 | 2015-06-22 | 93 |  |  |  | 11.12d |  | SEII - Mobile | 2h | 2 |  |
| 95 | 12.2.5 | **CUM-002: Sincronizar Datos, CUM-003: Mostrar Nuevo Contenido, CUM-008: Mostrar Notificación Nativa** | 4d? | 2015-06-22 | 2015-06-26 | 87 |  |  |  | 11.12d | 0d |  | 32h | 32 |  |
| 96 | 12.2.5.1 | Consumir servicio (sincronización al inicio, primer plano y a demanda) | 0.75d? | 2015-06-22 | 2015-06-23 |  |  |  |  | 11.12d | 0d | SEII - Mobile | 6h | 6 |  |
| 97 | 12.2.5.2 | Guardar datos | 1d? | 2015-06-23 | 2015-06-24 | 96 |  |  |  | 11.12d | 0d | SEII - Mobile | 8h | 8 |  |
| 98 | 12.2.5.3 | Actualizar panel de notificacion | 0.5d? | 2015-06-24 | 2015-06-24 | 97 |  |  |  | 11.12d | 0d | SEII - Mobile | 4h | 4 |  |
| 99 | 12.2.5.4 | Actualizar panel de configuración (fecha ultima sincronización) | 0.25d? | 2015-06-24 | 2015-06-24 | 98 |  |  |  | 11.12d | 0d | SEII - Mobile | 2h | 2 |  |
| 100 | 12.2.5.5 | Configuración para notificaciones push (panel nativo) | 1d? | 2015-06-25 | 2015-06-25 | 99 |  |  |  | 11.12d | 0d | SEII - Mobile | 8h | 8 |  |
| 101 | 12.2.5.6 | Mensaje confirmación éxito/error sincronización por conexión de internet | 0.5d? | 2015-06-26 | 2015-06-26 | 100 |  |  |  | 11.12d |  | SEII - Mobile | 4h | 4 |  |
| 102 | 12.2.6 | **CUM-004: Navegar por Colecciones y Archivos, CUM-005: Ver Archivos** | 2.25d? | 2015-06-26 | 2015-07-01 | 95 |  |  |  | 11.12d | 0d |  | 18h | 18 |  |
| 103 | 12.2.6.1 | Manejo de nagevabilidad | 0.5d? | 2015-06-26 | 2015-06-26 |  |  |  |  | 11.12d | 0d | SEII - Mobile | 4h | 4 |  |
| 104 | 12.2.6.2 | Abrir archivo | 1d? | 2015-06-30 | 2015-06-30 | 103 |  |  |  | 11.12d | 0d | SEII - Mobile | 8h | 8 |  |
| 105 | 12.2.6.3 | Actualizar panel de notificacion para eliminar visto | 0.5d? | 2015-07-01 | 2015-07-01 | 104 |  |  |  | 11.12d | 0d | SEII - Mobile | 4h | 4 |  |
| 106 | 12.2.6.4 | Mostrar mensaje de confirmación para descargar con red movil (validacion peso máximo) | 0.25d? | 2015-07-01 | 2015-07-01 | 105 |  |  |  | 11.12d |  | SEII - Mobile | 2h | 2 |  |

Notes:
- 89: plugin sqlite / creación de estructura base / llenar paises con carga inicial / consumir servicio web de paises

| ID | WBS | Task | Duration | Start | Finish | Predecessors | Complete | Remaining | Baseline start | Baseline finish | Baseline duration | Total slack | Free slack | Resources | Work | Actual work | Cost | Baseline cost | Actual cost |
| --- | --- | --- | --- | --- | --- | --- | --- | --- | --- | --- | --- | --- | --- | --- | --- | --- | --- | --- | --- |
| 107 | 12.2.7 | **CUM-006: Descargar Archivo, CUM-010: Permitir uso de red móvil en descarga** | 0.75d? | 2015-07-01 | 2015-07-02 | 102 |  |  |  |  |  | 11.12d | 0d |  | 6h |  | 6 |  |  |
| 108 | 12.2.7.1 | Guardar archivo | 0.25d? | 2015-07-01 | 2015-07-01 |  |  |  |  |  |  | 11.12d | 0d | SEII - Mobile | 2h |  | 2 |  |  |
| 109 | 12.2.7.2 | Marcar contenido como descargado | 0.25d? | 2015-07-02 | 2015-07-02 | 108 |  |  |  |  |  | 11.12d | 0d | SEII - Mobile | 2h |  | 2 |  |  |
| 110 | 12.2.7.3 | Mostrar mensaje de confirmación para descargar con red movil (validacion umbral) | 0.25d? | 2015-07-02 | 2015-07-02 | 109 |  |  |  |  |  | 11.12d |  | SEII - Mobile | 2h |  | 2 |  |  |
| 111 | 12.2.8 | **CUM-007: Eliminar Archivos** | 0.5d? | 2015-07-02 | 2015-07-02 | 107 |  |  |  |  |  | 11.12d | 0d |  | 4h |  | 4 |  |  |
| 112 | 12.2.8.1 | Elimnar datos de BD y file system local | 0.5d? | 2015-07-02 | 2015-07-02 |  |  |  |  |  |  | 11.12d |  | SEII - Mobile | 4h |  | 4 |  |  |
| 113 | 12.2.9 | **CUM-009: Enviar métricas** | 1.5d? | 2015-07-03 | 2015-07-06 | 111 |  |  |  |  |  | 11.12d | 0d |  | 12h |  | 12 |  |  |
| 114 | 12.2.9.1 | Enviar bitacora | 0.5d? | 2015-07-03 | 2015-07-03 |  |  |  |  |  |  | 11.12d | 0d | SEII - Mobile | 4h |  | 4 |  |  |
| 115 | 12.2.9.2 | Configurar google analytics | 0.5d? | 2015-07-03 | 2015-07-03 | 114 |  |  |  |  |  | 11.12d | 0d | SEII - Mobile | 4h |  | 4 |  |  |
| 116 | 12.2.9.3 | Colocar url de google analytics en las acciones | 0.5d? | 2015-07-06 | 2015-07-06 | 115 |  |  |  |  |  | 11.12d |  | SEII - Mobile | 4h |  | 4 |  |  |
| 117 | 12.2.10 | Pruebas desarrollador | 1d? | 2015-07-06 | 2015-07-07 | 113 |  |  |  |  |  | 11.12d | 0d | SEII - Mobile | 8h |  | 8 |  |  |
| 118 | 12.2.11 | Revisión de pares | 0.5d? | 2015-07-07 | 2015-07-07 | 117 |  |  |  |  |  | 11.12d |  | SEII - Mobile | 4h |  | 4 |  |  |
| 119 | 12.3 | **Web Services** | 25.12d? | 2015-05-25 A | 2015-06-30 |  | 26% | 18.58d? | 2015-05-07 | 2015-06-10 | 24d? | 17d |  |  | 204h | 31h | 204 | 192 | 31 |
| 120 | 12.3.1 | **Componentes Comunes** | 13.88d? | 2015-05-25 A | 2015-06-11 |  | 90% | 1.43d? |  |  |  | 2d | 0d |  | 38h | 31h | 38 |  | 31 |
| 121 | 12.3.1.1 | Creación servicio web y estructura base (184) | 5d | 2015-05-25 A | 2015-06-04 A |  | 100% |  | 2015-05-11 | 2015-05-13 | 2d |  |  | SEII - Web | 17h | 17h | 17 | 16 | 17 |
| 122 | 12.3.1.2 | Implementación utilitarios base - parseo, conversión (186) | 1.62d | 2015-06-05 A | 2015-06-10 A | 121 | 100% |  | 2015-05-18 | 2015-05-20 | 2d |  |  | SEII - Web | 13h | 13h | 13 | 16 | 13 |
| 123 | 12.3.1.3 | WS Movil - EnviarBitacora (185) | 1.38d | 2015-06-09 A | 2015-06-11 | 122 | 73% | 0.38d | 2015-05-13 | 2015-05-18 | 3d | 2d | 0d | SEII - Web | 4h | 1h | 4 | 24 | 1 |
| 124 | 12.3.1.4 | Log Errores | 0.5d? | 2015-06-11 | 2015-06-11 | 123 |  |  |  |  |  | 2d |  | SEII - Web | 4h |  | 4 |  |  |
| 125 | 12.3.2 | **Móvil** | 3.5d? | 2015-06-11 | 2015-06-17 | 120 |  |  |  |  |  | 2d | 0d |  | 28h |  | 28 |  |  |
| 126 | 12.3.2.1 | ObtenerColeccionesArchivos | 2d | 2015-06-11 | 2015-06-15 |  |  |  | 2015-05-25 | 2015-05-26 | 1d | 2d | 0d | SEII - Web | 16h |  | 16 | 8 |  |
| 127 | 12.3.2.2 | Registrar Sesión | 1d | 2015-06-15 | 2015-06-16 | 126 |  |  | 2015-05-22 | 2015-05-25 | 1d | 2d | 0d | SEII - Web | 8h |  | 8 | 8 |  |
| 128 | 12.3.2.3 | CerrarSesión | 0.5d? | 2015-06-16 | 2015-06-17 | 127 |  |  |  |  |  | 2d |  | SEII - Web | 4h |  | 4 |  |  |
| 129 | 12.3.3 | **Web** | 10.25d? | 2015-06-11 | 2015-06-26 |  |  |  |  |  |  | 2d | 0d |  | 122h |  | 122 |  |  |
| 130 | 12.3.3.1 | RegistrarSesion | 0.5d? | 2015-06-17 | 2015-06-17 | 125 |  |  |  |  |  | 2d | 0d | SEII - Web | 4h |  | 4 |  |  |
| 131 | 12.3.3.2 | InsertarArchivo | 1.5d? | 2015-06-17 | 2015-06-19 | 130 |  |  |  |  |  | 2d | 0d | SEII - Web | 12h |  | 12 |  |  |
| 132 | 12.3.3.3 | EliminarArchivo | 1.5d? | 2015-06-19 | 2015-06-22 | 131 |  |  |  |  |  | 2d | 0d | SEII - Web | 12h |  | 12 |  |  |

| ID | WBS | Task | Duration | Start | Finish | Predecessors | Total slack | Free slack | Resources | Work | Cost |
| --- | --- | --- | --- | --- | --- | --- | --- | --- | --- | --- | --- |
| 133 | 12.3.3.4 | **EnviarNotificacionPush** | 3.25d? | 2015-06-22 | 2015-06-26 | 132 | 2d | 0d |  | 26h | 26 |
| 134 | 12.3.3.4.1 | Implementar módulo de notificaciones | 1d? | 2015-06-22 | 2015-06-23 |  | 2d | 0d | SEII - Web | 8h | 8 |
| 135 | 12.3.3.4.2 | Android | 0.75d? | 2015-06-23 | 2015-06-24 | 134 | 2d | 0d | SEII - Web | 6h | 6 |
| 136 | 12.3.3.4.3 | iOS | 0.75d? | 2015-06-24 | 2015-06-25 | 135 | 2d | 0d | SEII - Web | 6h | 6 |
| 137 | 12.3.3.4.4 | Windows Phone | 0.75d? | 2015-06-25 | 2015-06-26 | 136 | 2d |  | SEII - Web | 6h | 6 |
| 138 | 12.3.3.5 | ListarUmbrales | 0.5d? | 2015-06-11 | 2015-06-12 | 120 | 3.75d | 0d | SEI - Web | 4h | 4 |
| 139 | 12.3.3.6 | ObtenerUmbral | 0.5d? | 2015-06-12 | 2015-06-12 | 138 | 3.75d | 0d | SEI - Web | 4h | 4 |
| 140 | 12.3.3.7 | ActualizarUmbral | 0.5d? | 2015-06-12 | 2015-06-15 | 139 | 3.75d | 0d | SEI - Web | 4h | 4 |
| 141 | 12.3.3.8 | ListarColecciones | 0.5d? | 2015-06-15 | 2015-06-15 | 140 | 3.75d | 0d | SEI - Web | 4h | 4 |
| 142 | 12.3.3.9 | ListarArchivos | 0.5d? | 2015-06-15 | 2015-06-16 | 141 | 3.75d | 0d | SEI - Web | 4h | 4 |
| 143 | 12.3.3.10 | ObtenerColeccion | 0.5d? | 2015-06-16 | 2015-06-16 | 142 | 3.75d | 0d | SEI - Web | 4h | 4 |
| 144 | 12.3.3.11 | InsertarColeccion | 0.5d? | 2015-06-16 | 2015-06-17 | 143 | 3.75d | 0d | SEI - Web | 4h | 4 |
| 145 | 12.3.3.12 | ActualizarColeccion | 0.5d? | 2015-06-17 | 2015-06-17 | 144 | 3.75d | 0d | SEI - Web | 4h | 4 |
| 146 | 12.3.3.13 | EliminarColeccion | 0.5d? | 2015-06-17 | 2015-06-18 | 145 | 3.75d | 0d | SEI - Web | 4h | 4 |
| 147 | 12.3.3.14 | ObtenerArchivo | 0.5d? | 2015-06-18 | 2015-06-18 | 146 | 3.75d | 0d | SEI - Web | 4h | 4 |
| 148 | 12.3.3.15 | ActualizarArchivo | 0.5d? | 2015-06-18 | 2015-06-19 | 147 | 3.75d | 0d | SEI - Web | 4h | 4 |
| 149 | 12.3.3.16 | ObtenerRutaOrigen | 0.5d? | 2015-06-19 | 2015-06-19 | 148 | 3.75d | 0d | SEI - Web | 4h | 4 |
| 150 | 12.3.3.17 | ListarRoles | 0.75d? | 2015-06-19 | 2015-06-22 | 149 | 3.75d | 0d | SEI - Web | 6h | 6 |
| 151 | 12.3.3.18 | ListarPaises | 0.75d? | 2015-06-22 | 2015-06-23 | 150 | 3.75d | 0d | SEI - Web | 6h | 6 |
| 152 | 12.3.3.19 | MoverArchivo | 0.5d? | 2015-06-23 | 2015-06-23 | 151 | 3.75d | 0d | SEI - Web | 4h | 4 |
| 153 | 12.3.3.20 | CerrarSesion | 0.5d? | 2015-06-23 | 2015-06-24 | 152 | 3.75d | 0d | SEI - Web | 4h | 4 |
| 154 | 12.3.4 | Pruebas desarrollador 1 | 0.5d? | 2015-06-24 | 2015-06-24 | 153 | 18.75d | 0d | SEI - Web | 4h | 4 |
| 155 | 12.3.5 | Revisión de pares 1 | 0.5d? | 2015-06-24 | 2015-06-25 | 154 | 18.75d |  | SEI - Web | 4h | 4 |
| 156 | 12.3.6 | Pruebas desarrollador 2 | 0.5d? | 2015-06-26 | 2015-06-26 | 133 | 17d | 0d | SEII - Web | 4h | 4 |
| 157 | 12.3.7 | Revisión de pares 2 | 0.5d? | 2015-06-26 | 2015-06-30 | 156 | 17d |  | SEII - Web | 4h | 4 |

| ID | WBS | Task | Duration | Start | Finish | Predecessors | Baseline start | Baseline finish | Baseline duration | Total slack | Free slack | Resources | Work | Cost | Baseline cost |
| --- | --- | --- | --- | --- | --- | --- | --- | --- | --- | --- | --- | --- | --- | --- | --- |
| 158 | 12.4 | **Portal Web** | 11.25d? | 2015-06-26 | 2015-07-14 |  | 2015-06-10 | 2015-07-02 | 15d? | 2d | 0d |  | 154h | 154 | 120 |
| 159 | 12.4.1 | Creación proyecto base | 2d | 2015-06-26 | 2015-07-01 | 129 | 2015-06-10 | 2015-06-11 | 1d | 2d | 0d | SEII - Web | 16h | 16 | 8 |
| 160 | 12.4.2 | **CUW-001: Iniciar sesión, CUW-007: Cerrar Sesión** | 2d? | 2015-07-01 | 2015-07-03 | 159 | 2015-06-11 | 2015-06-12 | 0.5d | 3.25d | 0d |  | 16h | 16 | 4 |
| 161 | 12.4.2.1 | Consumir servicio Yanbal | 1d | 2015-07-01 | 2015-07-02 |  | 2015-06-12 | 2015-06-15 | 1d | 3.25d | 0d | SEI - Web | 8h | 8 | 8 |
| 162 | 12.4.2.2 | Validar Rol obtenido | 0.75d | 2015-07-02 | 2015-07-02 | 161 | 2015-06-15 | 2015-06-16 | 1d | 3.25d | 0d | SEI - Web | 6h | 6 | 8 |
| 163 | 12.4.2.3 | Cerrar Sesión | 0.25d? | 2015-07-02 | 2015-07-03 | 162 |  |  |  | 3.25d |  | SEI - Web | 2h | 2 |  |
| 164 | 12.4.3 | **CUW-002: Configurar tamaño de Carga y Descarga** | 2d? | 2015-07-03 | 2015-07-07 | 160 | 2015-06-16 | 2015-06-18 | 2d | 3.25d |  |  | 16h | 16 | 16 |
| 165 | 12.4.3.1 | Listar Limites de Carga y Descarga | 1d | 2015-07-03 | 2015-07-06 |  | 2015-06-18 | 2015-06-19 | 1d | 3.25d | 0d | SEI - Web | 8h | 8 | 8 |
| 166 | 12.4.3.2 | Editar Limite Carga y Descarga | 1d? | 2015-07-06 | 2015-07-07 | 165 |  |  |  | 3.25d | 0d | SEI - Web | 8h | 8 |  |
| 167 | 12.4.4 | **CUW-006 Enviar Notificaciones** | 1.5d? | 2015-07-07 | 2015-07-08 | 166 |  |  |  | 3.25d | 0d |  | 12h | 12 |  |
| 168 | 12.4.4.1 | Indicador de publicaciones pendientes | 0.25d? | 2015-07-07 | 2015-07-07 |  |  |  |  | 3.25d | 0d | SEI - Web | 2h | 2 |  |
| 169 | 12.4.4.2 | Validar mensaje | 0.5d? | 2015-07-07 | 2015-07-07 | 168 |  |  |  | 3.25d | 0d | SEI - Web | 4h | 4 |  |
| 170 | 12.4.4.3 | Enviar notificación push | 0.75d? | 2015-07-07 | 2015-07-08 | 169 |  |  |  | 3.25d |  | SEI - Web | 6h | 6 |  |
| 171 | 12.4.5 | **CUW-005 Mover Archivos** | 2.5d? | 2015-07-08 | 2015-07-13 | 167 |  |  |  | 3.25d |  |  | 20h | 20 |  |
| 172 | 12.4.5.1 | Listar Coleccion | 1d? | 2015-07-08 | 2015-07-09 |  |  |  |  | 3.25d | 0d | SEI - Web | 8h | 8 |  |
| 173 | 12.4.5.2 | Mover Archivo | 1.5d? | 2015-07-09 | 2015-07-13 | 172 |  |  |  | 3.25d |  | SEI - Web | 12h | 12 |  |
| 174 | 12.4.6 | **CUW-003: Gestionar Colecciones** | 3.25d? | 2015-07-01 | 2015-07-06 | 159 |  |  |  | 2d | 0d |  | 26h | 26 |  |
| 175 | 12.4.6.1 | Listar Coleccion | 0.75d? | 2015-07-01 | 2015-07-01 |  |  |  |  | 2d | 0d | SEII - Web | 6h | 6 |  |
| 176 | 12.4.6.2 | Buscar Coleccion | 0.5d? | 2015-07-01 | 2015-07-02 | 175 |  |  |  | 2d | 0d | SEII - Web | 4h | 4 |  |
| 177 | 12.4.6.3 | Crear Coleccion | 0.75d? | 2015-07-02 | 2015-07-03 | 176 |  |  |  | 2d | 0d | SEII - Web | 6h | 6 |  |
| 178 | 12.4.6.4 | Editar Coleccion | 0.75d? | 2015-07-03 | 2015-07-03 | 177 |  |  |  | 2d | 0d | SEII - Web | 6h | 6 |  |
| 179 | 12.4.6.5 | Eliminar Coleccion | 0.5d? | 2015-07-03 | 2015-07-06 | 178 |  |  |  | 2d |  | SEII - Web | 4h | 4 |  |
| 180 | 12.4.7 | **CUW-004: Gestionar Archivos** | 4.75d? | 2015-07-06 | 2015-07-13 | 174 |  |  |  | 2d | 0d |  | 38h | 38 |  |
| 181 | 12.4.7.1 | Listar Archivo | 0.75d? | 2015-07-06 | 2015-07-07 |  |  |  |  | 2d | 0d | SEII - Web | 6h | 6 |  |
| 182 | 12.4.7.2 | Crear Archivo | 0.75d? | 2015-07-07 | 2015-07-07 | 181 |  |  |  | 2d | 0d | SEII - Web | 6h | 6 |  |
| 183 | 12.4.7.3 | Editar Archivo | 0.75d? | 2015-07-07 | 2015-07-08 | 182 |  |  |  | 2d | 0d | SEII - Web | 6h | 6 |  |
| 184 | 12.4.7.4 | Cargar Archivo | 0.5d? | 2015-07-08 | 2015-07-09 | 183 |  |  |  | 2d | 0d | SEII - Web | 4h | 4 |  |
| 185 | 12.4.7.5 | Listar Roles y Paises | 1d? | 2015-07-09 | 2015-07-10 | 184 |  |  |  | 2d | 0d | SEII - Web | 8h | 8 |  |
| 186 | 12.4.7.6 | Validar limite de Carga de archivo | 0.25d? | 2015-07-10 | 2015-07-10 | 185 |  |  |  | 2d | 0d | SEII - Web | 2h | 2 |  |
| 187 | 12.4.7.7 | Eliminar Archivo | 0.75d? | 2015-07-10 | 2015-07-13 | 186 |  |  |  | 2d |  | SEII - Web | 6h | 6 |  |
| 188 | 12.4.8 | Pruebas de desarrollador | 0.75d? | 2015-07-13 | 2015-07-13 | 180 |  |  |  | 2d | 0d | SEII - Web | 6h | 6 |  |
| 189 | 12.4.9 | Revisión de pares | 0.5d? | 2015-07-13 | 2015-07-14 | 188 |  |  |  | 2d |  | SEII - Web | 4h | 4 |  |
| 190 | 12.5 | Seguridad (SSL) | 1d? | 2015-07-14 | 2015-07-15 | 158 | 2015-05-20 | 2015-05-22 | 2d? | 2d | 0d | SEII - Web | 8h | 8 | 16 |
| 191 | 12.6 | Pruebas integración | 2d? | 2015-07-15 | 2015-07-17 | 190 |  |  |  | 2d | 0d | SEII - Web | 16h | 16 |  |
| 192 | 12.7 | Configuración Ambientes de QA | 1.75d? | 2015-07-17 | 2015-07-21 | 191 |  |  |  | 2d |  | SEII - Web | 14h | 14 |  |
| 193 | 12.8 | Pruebas exploratorias | 3d? | 2015-07-15 | 2015-07-20 | 191SS |  |  |  | 2.75d |  | QAI - 1 | 24h | 24 |  |

| ID | WBS | Task | Duration | Start | Finish | Predecessors | Total slack | Free slack | Resources | Work | Cost |
| --- | --- | --- | --- | --- | --- | --- | --- | --- | --- | --- | --- |
| 194 | 13 | **Aseguramiento de la calidad** | 12d? | 2015-07-21 | 2015-08-10 | 63 | 2d |  |  | 452h | 452 |
| 195 | 13.1 | **Pruebas Funcionales** | 8d? | 2015-07-21 | 2015-08-04 |  | 2d | 0d |  | 320h | 320 |
| 196 | 13.1.1 | **Móvil** | 8d? | 2015-07-21 | 2015-08-04 |  | 2d | 0d |  | 240h | 240 |
| 197 | 13.1.1.1 | **Ejecución en Tablet** | 7d? | 2015-07-21 | 2015-08-03 |  | 3d |  |  | 112h | 112 |
| 198 | 13.1.1.1.1 | Ejecución en Samsung de 10.1" /SO Android 4.1.2 (Principal) | 3d? | 2015-07-21 | 2015-07-24 |  | 3d | 0d | QAI - 1; Tester - 1 | 48h | 48 |
| 199 | 13.1.1.1.2 | Ejecución en Lenovo 7" / SO Android 4.2.2 (Secundario) | 1d? | 2015-07-24 | 2015-07-27 | 198 | 3d | 0d | QAI - 1; Tester - 1 | 16h | 16 |
| 200 | 13.1.1.1.3 | Tablet AOC / SO: Android 4.1.1 (Secundario) | 1d? | 2015-07-27 | 2015-07-30 | 199 | 3d | 0d | QAI - 1; Tester - 1 | 16h | 16 |
| 201 | 13.1.1.1.4 | Ejecución en Ipad SO 7 (Secundario) | 1d? | 2015-07-30 | 2015-07-31 | 200 | 3d | 0d | QAI - 1; Tester - 1 | 16h | 16 |
| 202 | 13.1.1.1.5 | Ejecución en Ipad SO 8 (Secundario) | 1d? | 2015-07-31 | 2015-08-03 | 201 | 3d |  | QAI - 1; Tester - 1 | 16h | 16 |
| 203 | 13.1.1.2 | **Ejecución en SmartPhone** | 8d? | 2015-07-21 | 2015-08-04 |  | 2d |  |  | 128h | 128 |
| 204 | 13.1.1.2.1 | Nokia Lumia 520 / SO: Windows Phone 8.0 (Principal) | 3d? | 2015-07-21 | 2015-07-24 |  | 2d | 0d | QAI - 2; Tester - 2 | 48h | 48 |
| 205 | 13.1.1.2.2 | Ejecución en Samsung Galaxy Chat/SO -SO Android 4.1.2 (secundario) | 1d? | 2015-07-24 | 2015-07-27 | 204 | 2d | 0d | QAI - 2; Tester - 2 | 16h | 16 |
| 206 | 13.1.1.2.3 | Samsung Galaxy S III Mini / SO: Android 4.1.2 (Principal) | 1d? | 2015-07-27 | 2015-07-30 | 205 | 2d | 0d | QAI - 2; Tester - 2 | 16h | 16 |
| 207 | 13.1.1.2.4 | Ejecución en Iphone 4 / iSO 7 (Principal) | 1d? | 2015-07-30 | 2015-07-31 | 206 | 2d | 0d | QAI - 2; Tester - 2 | 16h | 16 |
| 208 | 13.1.1.2.5 | Ejecución en Iphone 5 / iSO 7 (Secundario) | 1d? | 2015-07-31 | 2015-08-03 | 207 | 2d | 0d | QAI - 2; Tester - 2 | 16h | 16 |
| 209 | 13.1.1.2.6 | Ejecución en Iphone 6 / iSO 7 (Secundario) | 1d? | 2015-08-03 | 2015-08-04 | 208 | 2d |  | QAI - 2; Tester - 2 | 16h | 16 |
| 210 | 13.1.2 | **Web** | 5d? | 2015-07-21 | 2015-07-30 |  | 5d | 0d |  | 80h | 80 |
| 211 | 13.1.2.1 | **Ejecución en Web Browser - IE9 (Principal)** | 3.75d? | 2015-07-21 | 2015-07-24 |  | 5d | 0d |  | 60h | 60 |
| 212 | 13.1.2.1.1 | Ejecución de casos de prueba funcionales | 2.25d? | 2015-07-21 | 2015-07-23 |  | 5d | 0d | QAI - 3; Tester - 3 | 36h | 36 |
| 213 | 13.1.2.1.2 | Reporte de errores | 0.5d? | 2015-07-23 | 2015-07-23 | 212 | 5d | 0d | QAI - 3; Tester - 3 | 8h | 8 |
| 214 | 13.1.2.1.3 | Verificación de errores | 0.5d? | 2015-07-23 | 2015-07-24 | 213 | 5d | 0d | QAI - 3; Tester - 3 | 8h | 8 |
| 215 | 13.1.2.1.4 | Pruebas exploratoria | 0.5d? | 2015-07-24 | 2015-07-24 | 214 | 5d |  | QAI - 3; Tester - 3 | 8h | 8 |
| 216 | 13.1.2.2 | Ejecución en Web Browser - Chrome 40 (Secundario) | 1.25d? | 2015-07-24 | 2015-07-30 | 211 | 5d |  | QAI - 3; Tester - 3 | 20h | 20 |
| 217 | 13.2 | **Soporte a Pruebas Funcionales (Resolución de Bugs)** | 8d? | 2015-07-21 | 2015-08-04 |  | 6d | 0d |  | 64h | 64 |
| 218 | 13.2.1 | Móvil | 8d | 2015-07-21 | 2015-08-04 | 196SS | 6d |  | SEII - Mobile [50%] | 32h | 32 |
| 219 | 13.2.2 | Web | 8d? | 2015-07-21 | 2015-08-04 | 210SS | 6d |  | SEII - Web [50%] | 32h | 32 |

| ID | WBS | Task | Duration | Start | Finish | Predecessors | Total slack | Free slack | Resources | Work | Cost |
| --- | --- | --- | --- | --- | --- | --- | --- | --- | --- | --- | --- |
| 220 | 13.3 | **Pruebas de Rendimiento** | 8.5d? | 2015-07-24 | 2015-08-10 |  | 2d |  |  | 68h | 68 |
| 221 | 13.3.1 | Creación de Scripts (Flujo: 6WS) | 4.5d? | 2015-07-24 | 2015-08-04 | 222SF | 6d |  | QAII | 36h | 36 |
| 222 | 13.3.2 | **Ejecución de Pruebas** | 2.5d? | 2015-08-04 | 2015-08-06 | 195 | 2d | 0d |  | 20h | 20 |
| 223 | 13.3.2.1 | Preparación del Ambiente | 0.75d? | 2015-08-04 | 2015-08-04 |  | 2d | 0d | QAII | 6h | 6 |
| 224 | 13.3.2.2 | Prueba de Ambiente | 0.25d? | 2015-08-04 | 2015-08-05 | 223 | 2d | 0d | QAII | 2h | 2 |
| 225 | 13.3.2.3 | Ejecución prueba de carga | 1.5d? | 2015-08-05 | 2015-08-06 | 224 | 2d |  | QAII | 12h | 12 |
| 226 | 13.3.3 | **Documentación** | 1.5d? | 2015-08-06 | 2015-08-10 | 222 | 2d |  |  | 12h | 12 |
| 227 | 13.3.3.1 | Parsing Logs | 0.5d? | 2015-08-06 | 2015-08-07 |  | 2d | 0d | QAII | 4h | 4 |
| 228 | 13.3.3.2 | Análisis y Notas Iniciales | 0.5d? | 2015-08-07 | 2015-08-07 | 227 | 2d | 0d | QAII | 4h | 4 |
| 229 | 13.3.3.3 | Creación de documento de resultados | 0.5d? | 2015-08-07 | 2015-08-10 | 228 | 2d |  | QAII | 4h | 4 |
| 230 | 14 | Soporte a Pruebas de Rendimiento | 4d | 2015-08-04 | 2015-08-10 | 222SS | 2d |  | SEII - Web [50%] | 16h | 16 |
| 231 | 15 | **Documentación** | 12d? | 2015-07-21 | 2015-08-10 | 217SS | 0d |  |  | 96h | 96 |
| 232 | 15.1 | **Móvil** | 10d? | 2015-07-21 | 2015-08-06 |  | 0d |  |  | 48h | 48 |
| 233 | 15.1.1 | Release notes | 1d? | 2015-07-21 | 2015-07-22 |  | 0d |  | SEII - Mobile [50%] | 4h | 4 |
| 234 | 15.1.2 | Manual de soporte | 3d? | 2015-07-22 | 2015-07-27 | 233 | 0d |  | SEII - Mobile [50%] | 12h | 12 |
| 235 | 15.1.3 | Manual de instalación | 4d? | 2015-07-27 | 2015-08-04 | 234 | 0d |  | SEII - Mobile [50%] | 16h | 16 |
| 236 | 15.1.4 | Manual de usuario | 2d? | 2015-08-04 | 2015-08-06 | 235 | 0d |  | SEII - Mobile | 16h | 16 |
| 237 | 15.2 | **Web** | 12d? | 2015-07-21 | 2015-08-10 |  | 0d |  |  | 48h | 48 |
| 238 | 15.2.1 | Release notes | 1d? | 2015-07-21 | 2015-07-22 |  | 0d |  | SEII - Web [50%] | 4h | 4 |
| 239 | 15.2.2 | Manual de soporte | 3d? | 2015-07-22 | 2015-07-27 | 238 | 0d |  | SEII - Web [50%] | 12h | 12 |
| 240 | 15.2.3 | Manual de instalación | 4d? | 2015-07-27 | 2015-08-04 | 239 | 0d |  | SEII - Web [50%] | 16h | 16 |
| 241 | 15.2.4 | Manual de usuario | 4d? | 2015-08-04 | 2015-08-10 | 240 | 0d |  | SEII - Web [50%] | 16h | 16 |
| 242 | 16 | **Generación de Binarios** | 3d? | 2015-08-06 | 2015-08-11 |  | 0d |  |  | 16h | 16 |
| 243 | 16.1 | Portal Web / Web Services | 1d? | 2015-08-10 | 2015-08-11 | 237 | 0d |  | SEII - Web | 8h | 8 |
| 244 | 16.2 | Aplicaciones Moviles (iOS, Android, Windows Phone) | 1d? | 2015-08-06 | 2015-08-07 | 232 | 0d |  | SEII - Mobile | 8h | 8 |

| ID | WBS | Task | Duration | Start | Finish | Predecessors | Total slack | Resources | Work | Cost |
| --- | --- | --- | --- | --- | --- | --- | --- | --- | --- | --- |
| 245 | 17 | **Despliegue Certificación Yanbal** | 3d? | 2015-08-07 | 2015-08-12 |  | 0d |  | 32h | 32 |
| 246 | 17.1 | Móvil | 3d? | 2015-08-07 | 2015-08-12 | 244 | 0d | SEII - Mobile | 24h | 24 |
| 247 | 17.2 | Web | 1d? | 2015-08-11 | 2015-08-12 | 243 | 0d | SEII - Web | 8h | 8 |
