# Yanbal PhoneGap - Web

Schedule from MS Project, 2015-04-14 to 2015-07-31, status date 2008-01-09, costs in $, A marks actual dates.
Avantica Technologies

## Calendars

- Standard: Mon-Fri 08:00-12:00, 13:00-17:00; Sat-Sun off. Exceptions (off unless hours are given): 2015-05-01 (Dia del Trabajo), 2015-06-29 (Día de San Pedro y San Pablo), 2015-07-28 to 2015-07-29 (Fiestas Patrias).

## Resources

| Resource | Rate |
| --- | --- |
| QAII | 1 |
| PM | 1 |
| UX | 1 |
| SEII - Mobile | 1 |
| SEII - Web | 1 |
| QAI - 1 | 1 |
| QAI - 2 | 1 |
| Tester - 1 | 1 |
| Tester - 2 | 1 |
| Yanbal | 1 |
| QAI - 3 | 1 |
| Tester - 3 | 1 |
| SEI - Web | 1 |
| QAII - 2 | 1 |

## Schedule

| ID | WBS | Task | Type | Duration | Start | Finish | Predecessors | Complete | Remaining | Baseline start | Baseline finish | Baseline duration | Total slack | Constraint | Resources | Work | Actual work | Cost | Baseline cost | Actual cost |
| --- | --- | --- | --- | --- | --- | --- | --- | --- | --- | --- | --- | --- | --- | --- | --- | --- | --- | --- | --- | --- |
| 1 | 1 | Gestión del proyecto |  | 75d | 2015-04-14 08:00 A | 2015-07-31 17:00 |  | 55% | 34d |  |  |  | 0d |  | PM [40%] | 240h | 131.2h | 240 |  | 131.2 |
| 2 | 2 | Sesión de Inicio de Proyecto (KickOff) |  | 4h | 2015-04-14 08:00 A | 2015-04-14 12:00 A |  | 100% |  | 2015-04-14 08:00 | 2015-04-14 12:00 | 4h |  |  | SEII - Mobile; SEII - Web | 8h | 8h | 8 | 8 | 8 |
| 3 | 3 | **Análisis** |  | 15.25d? | 2015-04-14 13:00 A | 2015-05-06 15:00 A | 2 | 100% |  | 2015-04-14 13:00 | 2015-04-23 10:00 | 6.75d |  |  |  | 204h | 204h | 204 | 108 | 204 |
| 4 | 3.1 | Reuniones (124) |  | 2d? | 2015-04-14 13:00 A | 2015-04-16 12:00 A |  | 100% |  | 2015-04-14 13:00 | 2015-04-16 12:00 | 2d |  |  | SEII - Mobile; SEII - Web | 32h | 32h | 32 | 32 | 32 |
| 5 | 3.2 | Especificación de requerimientos funcionales (125) |  | 1d? | 2015-04-16 13:00 A | 2015-04-17 12:00 A | 4 | 100% |  | 2015-04-16 13:00 | 2015-04-16 17:00 | 0.5d |  |  | SEII - Mobile; SEII - Web | 16h | 16h | 16 | 8 | 16 |
| 6 | 3.3 | Creación de Wireframes (126) |  | 4d? | 2015-04-17 13:00 A | 2015-04-23 12:00 A | 5 | 100% |  | 2015-04-17 08:00 | 2015-04-20 17:00 | 2d |  |  | SEII - Mobile; SEII - Web | 64h | 64h | 64 | 32 | 64 |
| 7 | 3.4 | Especificación de casos de uso (127) |  | 3d? | 2015-04-23 13:00 A | 2015-04-28 12:00 A | 6 | 100% |  | 2015-04-21 08:00 | 2015-04-22 17:00 | 2d |  |  | SEII - Mobile; SEII - Web | 48h | 48h | 48 | 32 | 48 |
| 8 | 3.5 | Matriz de trazabilidad: requerimientos / casos de uso (128) |  | 0.25d? | 2015-04-28 13:00 A | 2015-04-28 15:00 A | 7 | 100% |  | 2015-04-23 08:00 | 2015-04-23 10:00 | 0.25d |  |  | SEII - Mobile; SEII - Web | 4h | 4h | 4 | 4 | 4 |
| 9 | 3.6 | Modificación de documentos (144) |  | 5d? | 2015-04-28 15:00 A | 2015-05-06 15:00 A | 8 | 100% |  |  |  |  |  |  | SEII - Mobile [50%]; SEII - Web [50%] | 40h | 40h | 40 |  | 40 |
| 10 | 4 | Fin Analisis |  | 1d? | 2015-05-14 08:00 | 2015-05-14 17:00 |  |  |  |  |  |  | 53d | start no earlier than 2015-05-14 08:00 |  |  |  |  |  |  |
| 11 | 5 | **Diseño Técnico** |  | 25d? | 2015-04-28 15:00 A | 2015-06-03 15:00 A |  | 100% |  | 2015-04-23 10:00 | 2015-05-06 10:00 | 8d |  |  |  | 320h | 320h | 320 | 128 | 320 |
| 12 | 5.1 | Reuniones (129) |  | 5d? | 2015-04-28 15:00 A | 2015-05-06 15:00 A | 9SS | 100% |  | 2015-04-23 10:00 | 2015-04-24 10:00 | 1d |  |  | SEII - Mobile [50%]; SEII - Web [50%] | 40h | 40h | 40 | 16 | 40 |
| 13 | 5.2 | Catalogo de servicios web a crear / consumir (137) |  | 1.5d? | 2015-05-06 15:00 A | 2015-05-08 10:00 A | 12 | 100% |  | 2015-05-04 10:00 | 2015-05-06 10:00 | 2d |  |  | SEII - Mobile; SEII - Web | 24h | 24h | 24 | 32 | 24 |
| 14 | 5.3 | Configurar ambiente de desarrollo (141 y 142) |  | 2d? | 2015-05-08 10:00 A | 2015-05-12 10:00 A | 13 | 100% |  |  |  |  |  |  | SEII - Mobile; SEII - Web | 32h | 32h | 32 |  | 32 |
| 15 | 5.4 | Revisión documentación Yanbal (143) |  | 0.25d? | 2015-05-12 10:00 A | 2015-05-12 12:00 A | 14 | 100% |  |  |  |  |  |  | SEII - Mobile; SEII - Web | 4h | 4h | 4 |  | 4 |
| 16 | 5.5 | Definir estándares de desarrollo (130 y 161) |  | 0.25d? | 2015-05-12 13:00 A | 2015-05-12 15:00 A | 15 | 100% |  | 2015-04-24 10:00 | 2015-04-24 15:00 | 0.5d |  |  | SEII - Mobile; SEII - Web | 4h | 4h | 4 | 8 | 4 |
| 17 | 5.6 | Requerimientos no funcionales (131 y 162) |  | 0.25d? | 2015-05-12 15:00 A | 2015-05-12 17:00 A | 16 | 100% |  | 2015-04-24 15:00 | 2015-04-27 10:00 | 0.5d |  |  | SEII - Mobile; SEII - Web | 4h | 4h | 4 | 8 | 4 |
| 18 | 5.7 | Arquitectura (132) |  | 1d? | 2015-05-13 08:00 A | 2015-05-13 17:00 A | 17 | 100% |  | 2015-04-27 10:00 | 2015-04-27 12:00 | 0.25d |  |  | SEII - Mobile; SEII - Web | 16h | 16h | 16 | 4 | 16 |
| 19 | 5.8 | Base de Datos (136 y 160) |  | 1d? | 2015-05-14 08:00 A | 2015-05-14 17:00 A | 18 | 100% |  | 2015-04-27 13:00 | 2015-04-27 17:00 | 0.5d |  |  | SEII - Mobile; SEII - Web | 16h | 16h | 16 | 8 | 16 |
| 20 | 5.9 | Especificación Técnica de la Solución (151 y 156) |  | 1.75d? | 2015-05-15 08:00 A | 2015-05-18 15:00 A | 19 | 100% |  | 2015-04-28 08:00 | 2015-04-28 10:00 | 0.25d |  |  | SEII - Mobile; SEII - Web | 28h | 28h | 28 | 4 | 28 |
| 21 | 5.10 | Diagrama de Clases (148 y 149) |  | 1d? | 2015-05-18 15:00 A | 2015-05-19 15:00 A | 20 | 100% |  | 2015-04-28 10:00 | 2015-04-30 10:00 | 2d |  |  | SEII - Mobile; SEII - Web | 16h | 16h | 16 | 32 | 16 |
| 22 | 5.11 | Mapa de Navegación (150 y 155) |  | 0.12d? | 2015-05-19 15:00 A | 2015-05-19 16:00 A | 21 | 100% |  | 2015-04-30 10:00 | 2015-05-04 10:00 | 1d |  |  | SEII - Mobile; SEII - Web | 2h | 2h | 2 | 16 | 2 |
| 23 | 5.12 | Perfiles del sistema (153 y 158) |  | 0.12d? | 2015-05-19 16:00 A | 2015-05-19 17:00 A | 22 | 100% |  |  |  |  |  |  | SEII - Mobile; SEII - Web | 2h | 2h | 2 |  | 2 |
| 24 | 5.13 | Especificación de pantallas (152 y 157) |  | 0.75d? | 2015-05-20 08:00 A | 2015-05-20 15:00 A | 23 | 100% |  |  |  |  |  |  | SEII - Mobile; SEII - Web | 12h | 12h | 12 |  | 12 |
| 25 | 5.14 | Modificación de documentos (205 y 206) |  | 10d? | 2015-05-20 15:00 A | 2015-06-03 15:00 A | 24 | 100% |  |  |  |  |  |  | SEII - Mobile [75%]; SEII - Web [75%] | 120h | 120h | 120 |  | 120 |
| 26 | 6 | Configuración Ambiente local de desarrollo |  | 10d? | 2015-05-20 15:00 A | 2015-06-03 15:00 A | 25SS | 100% |  |  |  |  |  |  | SEII - Mobile [25%]; SEII - Web [25%] | 40h | 40h | 40 |  | 40 |
| 27 | 7 | Fin Diseño Tecnico | milestone | 0d | 2015-06-09 08:00 | 2015-06-09 08:00 |  |  |  |  |  |  | 36d | start no earlier than 2015-06-09 08:00 |  |  |  |  |  |  |
| 28 | 8 | Disponibilidad UX | milestone | 0d | 2015-04-29 08:00 | 2015-04-29 08:00 |  |  |  |  |  |  | 64d | start no earlier than 2015-04-29 08:00 |  |  |  |  |  |  |

| ID | WBS | Task | Type | Duration | Start | Finish | Predecessors | Complete | Baseline start | Baseline finish | Baseline duration | Total slack | Constraint | Resources | Work | Actual work | Cost | Baseline cost | Actual cost |
| --- | --- | --- | --- | --- | --- | --- | --- | --- | --- | --- | --- | --- | --- | --- | --- | --- | --- | --- | --- |
| 29 | 9 | **Diseño Gráfico** |  | 18d | 2015-04-29 08:00 A | 2015-05-25 17:00 A | 28 | 100% | 2015-04-21 08:00 | 2015-05-18 10:00 | 18.25d |  |  |  | 142h | 142h | 142 | 146 | 142 |
| 30 | 9.1 | **Preparación de propuesta** |  | 10.25d | 2015-04-29 08:00 A | 2015-05-14 10:00 A |  | 100% | 2015-04-21 08:00 | 2015-04-30 10:00 | 7.25d |  |  |  | 82h | 82h | 82 | 58 | 82 |
| 31 | 9.1.1 | Reuniones con el cliente (información inicial) |  | 0.75d | 2015-04-29 08:00 A | 2015-04-29 15:00 A |  | 100% | 2015-04-21 08:00 | 2015-04-21 15:00 | 0.75d |  |  | UX | 6h | 6h | 6 | 6 | 6 |
| 32 | 9.1.2 | Elaboración de propuesta grafica (2 Pág. Maestras) Móvil |  | 3.5d | 2015-04-29 15:00 A | 2015-05-06 10:00 A | 31 | 100% | 2015-04-21 15:00 | 2015-04-24 10:00 | 2.5d |  |  | UX | 28h | 28h | 28 | 20 | 28 |
| 33 | 9.1.3 | Elaboración de propuesta grafica (2 Pág. Maestras) Web |  | 3.5d | 2015-05-06 10:00 A | 2015-05-11 15:00 A | 32 | 100% | 2015-04-24 10:00 | 2015-04-28 12:00 | 2.25d |  |  | UX | 28h | 28h | 28 | 18 | 28 |
| 34 | 9.1.4 | Elaboración de assets y cortes de imágenes |  | 2.5d | 2015-05-11 15:00 A | 2015-05-14 10:00 A | 33 | 100% | 2015-04-28 13:00 | 2015-04-30 10:00 | 1.75d |  |  | UX | 20h | 20h | 20 | 14 | 20 |
| 35 | 9.2 | **Preparación de maquetas y assets** |  | 7.75d | 2015-05-14 10:00 A | 2015-05-25 17:00 A | 30 | 100% | 2015-04-30 10:00 | 2015-05-18 10:00 | 11d |  |  |  | 60h | 60h | 60 | 88 | 60 |
| 36 | 9.2.1 | **Kiosko Móvil** |  | 4.75d | 2015-05-14 10:00 A | 2015-05-20 17:00 A |  | 100% | 2015-05-13 10:00 | 2015-05-18 10:00 | 3d |  |  |  | 36h | 36h | 36 | 24 | 36 |
| 37 | 9.2.1.1 | Login |  | 0.75d | 2015-05-14 10:00 A | 2015-05-14 17:00 A |  | 100% | 2015-05-13 10:00 | 2015-05-13 17:00 | 0.75d |  |  | UX | 6h | 6h | 6 | 6 | 6 |
| 38 | 9.2.1.2 | Página Principal |  | 0.75d | 2015-05-15 08:00 A | 2015-05-15 15:00 A | 37 | 100% | 2015-05-14 08:00 | 2015-05-14 15:00 | 0.75d |  |  | UX | 6h | 6h | 6 | 6 | 6 |
| 39 | 9.2.1.3 | Ver Colección |  | 0.75d | 2015-05-15 15:00 A | 2015-05-18 12:00 A | 38 | 100% | 2015-05-14 15:00 | 2015-05-15 12:00 | 0.75d |  |  | UX | 6h | 6h | 6 | 6 | 6 |
| 40 | 9.2.1.4 | Notificaciones |  | 0.75d | 2015-05-18 13:00 A | 2015-05-19 10:00 A | 39 | 100% | 2015-05-15 13:00 | 2015-05-18 10:00 | 0.75d |  |  | UX | 6h | 6h | 6 | 6 | 6 |
| 41 | 9.2.1.5 | Configuración |  | 0.75d | 2015-05-19 10:00 A | 2015-05-19 17:00 A | 40 | 100% |  |  |  |  |  | UX | 6h | 6h | 6 |  | 6 |
| 42 | 9.2.1.6 | Ver/Descargar/Eliminar Archivo |  | 1d | 2015-05-20 08:00 A | 2015-05-20 17:00 A | 41 | 100% |  |  |  |  |  | UX | 6h | 6h | 6 |  | 6 |
| 43 | 9.2.2 | **Kiosko Web** |  | 3d | 2015-05-21 08:00 A | 2015-05-25 17:00 A | 36 | 100% | 2015-04-30 10:00 | 2015-05-13 10:00 | 8d |  |  |  | 24h | 24h | 24 | 64 | 24 |
| 44 | 9.2.2.1 | Login |  | 0.38d | 2015-05-21 08:00 A | 2015-05-21 11:00 A |  | 100% | 2015-04-30 10:00 | 2015-05-04 10:00 | 1d |  |  | UX | 3h | 3h | 3 | 8 | 3 |
| 45 | 9.2.2.2 | Pantalla Principal |  | 0.38d | 2015-05-21 11:00 A | 2015-05-21 15:00 A | 44 | 100% |  |  |  |  |  | UX | 3h | 3h | 3 |  | 3 |
| 46 | 9.2.2.3 | Administración de Colecciones |  | 0.38d | 2015-05-21 15:00 A | 2015-05-22 09:00 A | 45 | 100% | 2015-05-08 10:00 | 2015-05-08 17:00 | 0.75d |  |  | UX | 3h | 3h | 3 | 6 | 3 |
| 47 | 9.2.2.4 | Crear/Editar Colecciones |  | 0.38d | 2015-05-22 09:00 A | 2015-05-22 12:00 A | 46 | 100% |  |  |  |  |  | UX | 3h | 3h | 3 |  | 3 |
| 48 | 9.2.2.5 | Cargar Archivos |  | 0.38d | 2015-05-22 13:00 A | 2015-05-22 16:00 A | 47 | 100% |  |  |  |  |  | UX | 3h | 3h | 3 |  | 3 |
| 49 | 9.2.2.6 | Publicar Archivos |  | 0.38d | 2015-05-22 16:00 A | 2015-05-25 10:00 A | 48 | 100% |  |  |  |  |  | UX | 3h | 3h | 3 |  | 3 |
| 50 | 9.2.2.7 | Mover Archivos |  | 0.38d | 2015-05-25 10:00 A | 2015-05-25 14:00 A | 49 | 100% |  |  |  |  |  | UX | 3h | 3h | 3 |  | 3 |
| 51 | 9.2.2.8 | Configuración de límites de carga y descarga |  | 0.38d | 2015-05-25 14:00 A | 2015-05-25 17:00 A | 50 | 100% | 2015-05-11 08:00 | 2015-05-11 15:00 | 0.75d |  |  | UX | 3h | 3h | 3 | 6 | 3 |
| 52 | 10 | Fin Diseño Gráfico | milestone | 0d | 2015-05-25 17:00 | 2015-05-25 17:00 | 29 |  |  |  |  | 46d |  |  |  |  |  |  |  |
| 53 | 11 | Disponibilidad QA | milestone | 0d | 2015-05-18 08:00 | 2015-05-18 08:00 |  |  |  |  |  | 52d | start no earlier than 2015-05-18 08:00 |  |  |  |  |  |  |

| ID | WBS | Task | Duration | Start | Finish | Predecessors | Complete | Remaining | Baseline start | Baseline finish | Baseline duration | Total slack | Free slack | Constraint | Resources | Work | Actual work | Cost | Baseline cost | Actual cost |
| --- | --- | --- | --- | --- | --- | --- | --- | --- | --- | --- | --- | --- | --- | --- | --- | --- | --- | --- | --- | --- |
| 54 | 12 | **Planificación y Especificación de Pruebas** | 27.5d? | 2015-05-18 08:00 A | 2015-06-24 12:00 |  | 54% | 12.74d? |  |  |  | 24.5d |  |  |  | 164h | 88h | 164 |  | 88 |
| 55 | 12.1 | LCP - Listado de Casos de Prueba (164) | 2d? | 2015-05-18 08:00 A | 2015-05-19 17:00 A |  | 100% |  |  |  |  |  |  |  |  | 16h | 16h | 16 |  | 16 |
| 56 | 12.2 | ECP - Especificación de Casos de Prueba (165) | 8d? | 2015-05-20 08:00 A | 2015-05-29 17:00 A | 55 | 100% |  |  |  |  |  |  |  | QAI - 1 | 64h | 64h | 64 |  | 64 |
| 57 | 12.3 | Actualización de LCP (237) | 2.5d | 2015-06-10 08:00 A | 2015-06-12 12:00 |  | 40% | 1.5d |  |  |  | 24.5d | 0d | start no earlier than 2015-06-10 08:00 | QAII - 2 | 20h | 8h | 20 |  | 8 |
| 58 | 12.4 | Actualización de ECP | 5d? | 2015-06-12 13:00 | 2015-06-19 12:00 | 57 |  |  |  |  |  | 24.5d | 0d |  | QAII - 2 | 40h |  | 40 |  |  |
| 59 | 12.5 | Plan de Pruebas Funcionales y de Rendimiento (163) | 2d? | 2015-06-19 13:00 | 2015-06-23 12:00 | 58 |  |  |  |  |  | 24.5d | 0d | start no earlier than 2015-06-08 08:00 | QAII - 2 | 16h |  | 16 |  |  |
| 60 | 12.6 | Pruebas No Funcionales (236) | 1d | 2015-06-23 13:00 | 2015-06-24 12:00 | 59 |  |  |  |  |  | 24.5d |  | start no earlier than 2015-06-15 08:00 | QAII - 2 | 8h |  | 8 |  |  |
| 61 | 13 | **Desarrollo** | 26.25d? | 2015-06-03 15:00 A | 2015-07-10 17:00 | 11 | 15% | 22.24d? | 2015-05-06 10:00 | 2015-07-02 15:00 | 40.5d? | 5d | 0d |  |  | 574h | 84h | 574 | 548 | 84 |
| 62 | 13.1 | **HTML** | 11.25d? | 2015-06-03 15:00 A | 2015-06-18 17:00 |  | 47% | 6d? | 2015-05-07 15:00 | 2015-05-13 15:00 | 4d? | 5d | 0d |  |  | 90h | 42h | 90 | 32 | 42 |
| 63 | 13.1.1 | **Estructura base HTML** | 2d? | 2015-06-03 15:00 A | 2015-06-05 15:00 A |  | 100% |  |  |  |  |  |  |  |  | 16h | 16h | 16 |  | 16 |
| 64 | 13.1.1.1 | Móvil (166) | 1d? | 2015-06-03 15:00 A | 2015-06-04 15:00 A |  | 100% |  |  |  |  |  |  |  | SEII - Mobile | 8h | 8h | 8 |  | 8 |
| 65 | 13.1.1.2 | Web (167) | 1d? | 2015-06-04 15:00 A | 2015-06-05 15:00 A | 64 | 100% |  |  |  |  |  |  |  | SEII - Mobile | 8h | 8h | 8 |  | 8 |
| 66 | 13.1.2 | **Páginas Móvil** | 3.75d? | 2015-06-05 15:00 A | 2015-06-11 12:00 | 63 | 87% | 0.5d? |  |  |  | 10.5d | 0d |  |  | 30h | 26h | 30 |  | 26 |
| 67 | 13.1.2.1 | Inicio Session (169) | 1d? | 2015-06-05 15:00 A | 2015-06-08 15:00 A |  | 100% |  |  |  |  |  |  |  | SEII - Mobile | 8h | 8h | 8 |  | 8 |
| 68 | 13.1.2.2 | Pagina Principal (170) | 0.25d? | 2015-06-08 15:00 A | 2015-06-08 17:00 A | 67 | 100% |  |  |  |  |  |  |  | SEII - Mobile | 2h | 2h | 2 |  | 2 |
| 69 | 13.1.2.3 | Coleccion seleccionada (171) | 0.25d? | 2015-06-09 08:00 A | 2015-06-09 10:00 A | 68 | 100% |  |  |  |  |  |  |  | SEII - Mobile | 2h | 2h | 2 |  | 2 |
| 70 | 13.1.2.4 | Opciones del archivo (172) | 0.25d? | 2015-06-09 10:00 A | 2015-06-09 12:00 A | 69 | 100% |  |  |  |  |  |  |  | SEII - Mobile | 2h | 2h | 2 |  | 2 |
| 71 | 13.1.2.5 | Página de configuración (173) | 0.25d? | 2015-06-09 13:00 A | 2015-06-09 15:00 A | 70 | 100% |  |  |  |  |  |  |  | SEII - Mobile | 2h | 2h | 2 |  | 2 |
| 72 | 13.1.2.6 | Panel de notificaciones (174) | 0.75d? | 2015-06-09 15:00 A | 2015-06-10 12:00 A | 71 | 100% |  |  |  |  |  |  |  | SEII - Mobile | 6h | 6h | 6 |  | 6 |
| 73 | 13.1.2.7 | Sincronización (175) | 0.5d? | 2015-06-10 13:00 A | 2015-06-10 17:00 A | 72 | 100% |  |  |  |  |  |  |  | SEII - Mobile | 4h | 4h | 4 |  | 4 |
| 74 | 13.1.2.8 | Revisión/Corrección con UX (176) | 0.5d? | 2015-06-11 08:00 | 2015-06-11 12:00 | 73 |  |  |  |  |  | 10.5d |  |  | SEII - Mobile | 4h |  | 4 |  |  |
| 75 | 13.1.3 | **Páginas Web** | 3.5d? | 2015-06-11 13:00 | 2015-06-16 17:00 | 66 |  |  |  |  |  | 5d | 0d |  |  | 28h |  | 28 |  |  |
| 76 | 13.1.3.1 | Página Principal | 0.5d? | 2015-06-11 13:00 | 2015-06-11 17:00 |  |  |  |  |  |  | 5d | 0d |  | SEII - Mobile | 4h |  | 4 |  |  |
| 77 | 13.1.3.2 | Inicio Session | 0.5d? | 2015-06-12 08:00 | 2015-06-12 12:00 | 76 |  |  |  |  |  | 5d | 0d |  | SEII - Mobile | 4h |  | 4 |  |  |
| 78 | 13.1.3.3 | Mantener Colecciones | 1.5d? | 2015-06-12 13:00 | 2015-06-15 17:00 | 77 |  |  |  |  |  | 5d | 0d |  | SEII - Mobile | 12h |  | 12 |  |  |
| 79 | 13.1.3.4 | Configurar limite de descarga | 0.5d? | 2015-06-16 08:00 | 2015-06-16 12:00 | 78 |  |  |  |  |  | 5d | 0d |  | SEII - Mobile | 4h |  | 4 |  |  |
| 80 | 13.1.3.5 | Revisión/Corrección con UX | 0.5d? | 2015-06-16 13:00 | 2015-06-16 17:00 | 79 |  |  |  |  |  | 5d |  |  | SEII - Mobile | 4h |  | 4 |  |  |
| 81 | 13.1.4 | Crear proyecto web angular | 2d? | 2015-06-17 08:00 | 2015-06-18 17:00 | 75 |  |  |  |  |  | 5d |  |  | SEII - Mobile | 16h |  | 16 |  |  |

| ID | WBS | Task | Duration | Start | Finish | Predecessors | Baseline start | Baseline finish | Baseline duration | Total slack | Free slack | Resources | Work | Cost | Baseline cost |
| --- | --- | --- | --- | --- | --- | --- | --- | --- | --- | --- | --- | --- | --- | --- | --- |
| 82 | 13.2 | **PhoneGap** | 15d | 2015-06-19 08:00 | 2015-07-10 17:00 | 62 | 2015-05-13 15:00 | 2015-06-12 10:00 | 21.5d? | 5d |  |  | 120h | 120 | 172 |
| 83 | 13.2.1 | Creación proyecto base | 1d | 2015-06-19 08:00 | 2015-06-19 17:00 |  |  |  |  | 5d | 0d | SEII - Mobile | 8h | 8 |  |
| 84 | 13.2.2 | Revisión de pares | 0.5d | 2015-06-22 08:00 | 2015-06-22 12:00 | 83 |  |  |  | 5d | 0d | SEII - Mobile | 4h | 4 |  |
| 85 | 13.2.3 | Creación archivo de propiedades | 0.5d | 2015-06-22 13:00 | 2015-06-22 17:00 | 84 |  |  |  | 5d | 0d | SEII - Mobile | 4h | 4 |  |
| 86 | 13.2.4 | **CUM-001: Autenticar usuario, CUM-011: Cerrar Sesión** | 2.5d | 2015-06-23 08:00 | 2015-06-25 12:00 | 85 |  |  |  | 5d | 0d |  | 20h | 20 |  |
| 87 | 13.2.4.1 | Consumir servicio | 0.25d | 2015-06-23 08:00 | 2015-06-23 10:00 |  |  |  |  | 5d | 0d | SEII - Mobile | 2h | 2 |  |
| 88 | 13.2.4.2 | **Crear BD local en el móvil** | 1.5d | 2015-06-23 10:00 | 2015-06-24 15:00 | 87 |  |  |  | 5d | 0d |  | 12h | 12 |  |
| 89 | 13.2.4.2.1 | Plugin sqlite | 0.5d | 2015-06-23 10:00 | 2015-06-23 15:00 |  |  |  |  | 5d | 0d | SEII - Mobile | 4h | 4 |  |
| 90 | 13.2.4.2.2 | Creación de estructura BD | 0.5d | 2015-06-23 15:00 | 2015-06-24 10:00 | 89 |  |  |  | 5d | 0d | SEII - Mobile | 4h | 4 |  |
| 91 | 13.2.4.2.3 | Llenar paises con carga inicial / consumir servicio web de paises | 0.5d | 2015-06-24 10:00 | 2015-06-24 15:00 | 90 |  |  |  | 5d | 0d | SEII - Mobile | 4h | 4 |  |
| 92 | 13.2.4.3 | Guardar sesión | 0.5d | 2015-06-24 15:00 | 2015-06-25 10:00 | 91, 88 |  |  |  | 5d | 0d | SEII - Mobile | 4h | 4 |  |
| 93 | 13.2.4.4 | Cerrar sesión | 0.25d | 2015-06-25 10:00 | 2015-06-25 12:00 | 92 |  |  |  | 5d |  | SEII - Mobile | 2h | 2 |  |
| 94 | 13.2.5 | **CUM-002: Sincronizar Datos, CUM-003: Mostrar Nuevo Contenido, CUM-008: Mostrar Notificación Nativa** | 4d | 2015-06-25 13:00 | 2015-07-02 12:00 | 86 |  |  |  | 5d | 0d |  | 32h | 32 |  |
| 95 | 13.2.5.1 | Consumir servicio (sincronización al inicio, primer plano y a demanda) | 0.75d | 2015-06-25 13:00 | 2015-06-26 10:00 |  |  |  |  | 5d | 0d | SEII - Mobile | 6h | 6 |  |
| 96 | 13.2.5.2 | Guardar datos | 1d | 2015-06-26 10:00 | 2015-06-30 10:00 | 95 |  |  |  | 5d | 0d | SEII - Mobile | 8h | 8 |  |
| 97 | 13.2.5.3 | Actualizar panel de notificacion | 0.5d | 2015-06-30 10:00 | 2015-06-30 15:00 | 96 |  |  |  | 5d | 0d | SEII - Mobile | 4h | 4 |  |
| 98 | 13.2.5.4 | Actualizar panel de configuración (fecha ultima sincronización) | 0.25d | 2015-06-30 15:00 | 2015-06-30 17:00 | 97 |  |  |  | 5d | 0d | SEII - Mobile | 2h | 2 |  |
| 99 | 13.2.5.5 | Configuración para notificaciones push (panel nativo) | 1d | 2015-07-01 08:00 | 2015-07-01 17:00 | 98 |  |  |  | 5d | 0d | SEII - Mobile | 8h | 8 |  |
| 100 | 13.2.5.6 | Mensaje confirmación éxito/error sincronización por conexión de internet | 0.5d | 2015-07-02 08:00 | 2015-07-02 12:00 | 99 |  |  |  | 5d |  | SEII - Mobile | 4h | 4 |  |
| 101 | 13.2.6 | **CUM-004: Navegar por Colecciones y Archivos, CUM-005: Ver Archivos** | 2.25d | 2015-07-02 13:00 | 2015-07-06 15:00 | 94 |  |  |  | 5d | 0d |  | 18h | 18 |  |
| 102 | 13.2.6.1 | Manejo de nagevabilidad | 0.5d | 2015-07-02 13:00 | 2015-07-02 17:00 |  |  |  |  | 5d | 0d | SEII - Mobile | 4h | 4 |  |
| 103 | 13.2.6.2 | Abrir archivo | 1d | 2015-07-03 08:00 | 2015-07-03 17:00 | 102 |  |  |  | 5d | 0d | SEII - Mobile | 8h | 8 |  |
| 104 | 13.2.6.3 | Actualizar panel de notificacion para eliminar visto | 0.5d | 2015-07-06 08:00 | 2015-07-06 12:00 | 103 |  |  |  | 5d | 0d | SEII - Mobile | 4h | 4 |  |
| 105 | 13.2.6.4 | Mostrar mensaje de confirmación para descargar con red movil (validacion peso máximo) | 0.25d | 2015-07-06 13:00 | 2015-07-06 15:00 | 104 |  |  |  | 5d |  | SEII - Mobile | 2h | 2 |  |

Notes:
- 88: plugin sqlite / creación de estructura base / llenar paises con carga inicial / consumir servicio web de paises

| ID | WBS | Task | Duration | Start | Finish | Predecessors | Complete | Remaining | Baseline start | Baseline finish | Baseline duration | Total slack | Free slack | Resources | Work | Actual work | Cost | Baseline cost | Actual cost |
| --- | --- | --- | --- | --- | --- | --- | --- | --- | --- | --- | --- | --- | --- | --- | --- | --- | --- | --- | --- |
| 106 | 13.2.7 | **CUM-006: Descargar Archivo, CUM-010: Permitir uso de red móvil en descarga** | 0.75d | 2015-07-06 15:00 | 2015-07-07 12:00 | 101 |  |  |  |  |  | 5d | 0d |  | 6h |  | 6 |  |  |
| 107 | 13.2.7.1 | Guardar archivo | 0.25d | 2015-07-06 15:00 | 2015-07-06 17:00 |  |  |  |  |  |  | 5d | 0d | SEII - Mobile | 2h |  | 2 |  |  |
| 108 | 13.2.7.2 | Marcar contenido como descargado | 0.25d | 2015-07-07 08:00 | 2015-07-07 10:00 | 107 |  |  |  |  |  | 5d | 0d | SEII - Mobile | 2h |  | 2 |  |  |
| 109 | 13.2.7.3 | Mostrar mensaje de confirmación para descargar con red movil (validacion umbral) | 0.25d | 2015-07-07 10:00 | 2015-07-07 12:00 | 108 |  |  |  |  |  | 5d |  | SEII - Mobile | 2h |  | 2 |  |  |
| 110 | 13.2.8 | **CUM-007: Eliminar Archivos** | 0.5d | 2015-07-07 13:00 | 2015-07-07 17:00 | 106 |  |  |  |  |  | 5d | 0d |  | 4h |  | 4 |  |  |
| 111 | 13.2.8.1 | Elimnar datos de BD y file system local | 0.5d | 2015-07-07 13:00 | 2015-07-07 17:00 |  |  |  |  |  |  | 5d |  | SEII - Mobile | 4h |  | 4 |  |  |
| 112 | 13.2.9 | **CUM-009: Enviar métricas** | 1.5d | 2015-07-08 08:00 | 2015-07-09 12:00 | 110 |  |  |  |  |  | 5d | 0d |  | 12h |  | 12 |  |  |
| 113 | 13.2.9.1 | Enviar bitacora | 0.5d | 2015-07-08 08:00 | 2015-07-08 12:00 |  |  |  |  |  |  | 5d | 0d | SEII - Mobile | 4h |  | 4 |  |  |
| 114 | 13.2.9.2 | Configurar google analytics | 0.5d | 2015-07-08 13:00 | 2015-07-08 17:00 | 113 |  |  |  |  |  | 5d | 0d | SEII - Mobile | 4h |  | 4 |  |  |
| 115 | 13.2.9.3 | Colocar url de google analytics en las acciones | 0.5d | 2015-07-09 08:00 | 2015-07-09 12:00 | 114 |  |  |  |  |  | 5d |  | SEII - Mobile | 4h |  | 4 |  |  |
| 116 | 13.2.10 | Pruebas desarrollador | 1d | 2015-07-09 13:00 | 2015-07-10 12:00 | 112 |  |  |  |  |  | 5d | 0d | SEII - Mobile | 8h |  | 8 |  |  |
| 117 | 13.2.11 | Revisión de pares | 0.5d | 2015-07-10 13:00 | 2015-07-10 17:00 | 116 |  |  |  |  |  | 5d |  | SEII - Mobile | 4h |  | 4 |  |  |
| 118 | 13.3 | **Web Services** | 15.25d? | 2015-06-03 15:00 A | 2015-06-24 17:00 |  | 21% | 11.98d? | 2015-05-07 15:00 | 2015-06-10 15:00 | 24d? | 5.5d | 0d |  | 196h | 42h | 196 | 192 | 42 |
| 119 | 13.3.1 | **Componentes Comunes** | 5.75d? | 2015-06-03 15:00 A | 2015-06-11 12:00 |  | 91% | 0.5d? |  |  |  | 5.5d | 0d |  | 46h | 42h | 46 |  | 42 |
| 120 | 13.3.1.1 | Creación servicio web y estructura base (184) | 2d? | 2015-06-03 15:00 A | 2015-06-05 15:00 A |  | 100% |  | 2015-05-11 15:00 | 2015-05-13 15:00 | 2d |  |  | SEII - Web | 16h | 16h | 16 | 16 | 16 |
| 121 | 13.3.1.2 | Implementación utilitarios base - parseo, conversión (186) | 1.75d? | 2015-06-05 15:00 A | 2015-06-09 12:00 A | 120 | 100% |  | 2015-05-18 15:00 | 2015-05-20 15:00 | 2d |  |  | SEII - Web | 14h | 14h | 14 | 16 | 14 |
| 122 | 13.3.1.3 | EnviarBitacora (185) | 1d? | 2015-06-09 13:00 A | 2015-06-10 12:00 A | 121 | 100% |  | 2015-05-13 15:00 | 2015-05-18 15:00 | 3d |  |  | SEII - Web | 8h | 8h | 8 | 24 | 8 |
| 123 | 13.3.1.4 | Log Errores | 1d? | 2015-06-10 13:00 A | 2015-06-11 12:00 | 122 | 50% | 0.5d? |  |  |  | 5.5d |  | SEII - Web | 8h | 4h | 8 |  | 4 |
| 124 | 13.3.2 | **Móvil** | 3.5d | 2015-06-11 13:00 | 2015-06-16 17:00 | 119 |  |  |  |  |  | 5.75d |  |  | 28h |  | 28 |  |  |
| 125 | 13.3.2.1 | ObtenerColeccionesArchivos | 2d | 2015-06-11 13:00 | 2015-06-15 12:00 |  |  |  | 2015-05-25 15:00 | 2015-05-26 15:00 | 1d | 5.75d | 0d | SEII - Web | 16h |  | 16 | 8 |  |
| 126 | 13.3.2.2 | Registrar Sesión | 1d | 2015-06-15 13:00 | 2015-06-16 12:00 | 125 |  |  | 2015-05-22 15:00 | 2015-05-25 15:00 | 1d | 5.75d | 0d | SEII - Web | 8h |  | 8 | 8 |  |
| 127 | 13.3.2.3 | CerrarSesión | 0.5d | 2015-06-16 13:00 | 2015-06-16 17:00 | 126 |  |  |  |  |  | 5.75d | 0d | SEII - Web | 4h |  | 4 |  |  |
| 128 | 13.3.3 | **Web** | 9.5d | 2015-06-11 13:00 | 2015-06-24 17:00 |  |  |  |  |  |  | 5.5d |  |  | 122h |  | 122 |  |  |
| 129 | 13.3.3.1 | RegistrarSesion | 0.5d | 2015-06-17 08:00 | 2015-06-17 12:00 | 127 |  |  |  |  |  | 5.75d | 0d | SEII - Web | 4h |  | 4 |  |  |

| ID | WBS | Task | Duration | Start | Finish | Predecessors | Baseline start | Baseline finish | Baseline duration | Total slack | Free slack | Resources | Work | Cost | Baseline cost |
| --- | --- | --- | --- | --- | --- | --- | --- | --- | --- | --- | --- | --- | --- | --- | --- |
| 130 | 13.3.3.2 | **EnviarNotificacionPush** | 3.25d | 2015-06-17 13:00 | 2015-06-22 15:00 | 129 |  |  |  | 5.75d | 0d |  | 26h | 26 |  |
| 131 | 13.3.3.2.1 | Implementar módulo de notificaciones | 1d | 2015-06-17 13:00 | 2015-06-18 12:00 |  |  |  |  | 5.75d | 0d | SEII - Web | 8h | 8 |  |
| 132 | 13.3.3.2.2 | Android | 0.75d | 2015-06-18 13:00 | 2015-06-19 10:00 | 131 |  |  |  | 5.75d | 0d | SEII - Web | 6h | 6 |  |
| 133 | 13.3.3.2.3 | iOS | 0.75d | 2015-06-19 10:00 | 2015-06-19 17:00 | 132 |  |  |  | 5.75d | 0d | SEII - Web | 6h | 6 |  |
| 134 | 13.3.3.2.4 | Windows Phone | 0.75d | 2015-06-22 08:00 | 2015-06-22 15:00 | 133 |  |  |  | 5.75d |  | SEII - Web | 6h | 6 |  |
| 135 | 13.3.3.3 | ListarRoles | 0.75d | 2015-06-22 15:00 | 2015-06-23 12:00 | 130 |  |  |  | 5.75d | 0d | SEII - Web | 6h | 6 |  |
| 136 | 13.3.3.4 | ListarPaises | 0.75d | 2015-06-23 13:00 | 2015-06-24 10:00 | 135 |  |  |  | 5.75d | 0d | SEII - Web | 6h | 6 |  |
| 137 | 13.3.3.5 | CerrarSesion | 0.5d | 2015-06-24 10:00 | 2015-06-24 15:00 | 136 |  |  |  | 5.75d |  | SEII - Web | 4h | 4 |  |
| 138 | 13.3.3.6 | ListarUmbrales | 0.5d | 2015-06-11 13:00 | 2015-06-11 17:00 | 119 |  |  |  | 5.5d | 0d | SEI - Web | 4h | 4 |  |
| 139 | 13.3.3.7 | ObtenerUmbral | 0.5d | 2015-06-12 08:00 | 2015-06-12 12:00 | 138 |  |  |  | 5.5d | 0d | SEI - Web | 4h | 4 |  |
| 140 | 13.3.3.8 | ActualizarUmbral | 0.5d | 2015-06-12 13:00 | 2015-06-12 17:00 | 139 |  |  |  | 5.5d | 0d | SEI - Web | 4h | 4 |  |
| 141 | 13.3.3.9 | ListarColecciones | 0.5d | 2015-06-15 08:00 | 2015-06-15 12:00 | 140 |  |  |  | 5.5d | 0d | SEI - Web | 4h | 4 |  |
| 142 | 13.3.3.10 | InsertarColeccion | 0.5d | 2015-06-15 13:00 | 2015-06-15 17:00 | 141 |  |  |  | 5.5d | 0d | SEI - Web | 4h | 4 |  |
| 143 | 13.3.3.11 | EliminarColeccion | 0.5d | 2015-06-16 08:00 | 2015-06-16 12:00 | 142 |  |  |  | 5.5d | 0d | SEI - Web | 4h | 4 |  |
| 144 | 13.3.3.12 | ObtenerColeccion | 0.5d | 2015-06-16 13:00 | 2015-06-16 17:00 | 143 |  |  |  | 5.5d | 0d | SEI - Web | 4h | 4 |  |
| 145 | 13.3.3.13 | ActualizarColeccion | 0.5d | 2015-06-17 08:00 | 2015-06-17 12:00 | 144 |  |  |  | 5.5d | 0d | SEI - Web | 4h | 4 |  |
| 146 | 13.3.3.14 | ListarArchivos | 0.5d | 2015-06-17 13:00 | 2015-06-17 17:00 | 145 |  |  |  | 5.5d | 0d | SEI - Web | 4h | 4 |  |
| 147 | 13.3.3.15 | InsertarArchivo | 1.5d | 2015-06-18 08:00 | 2015-06-19 12:00 | 146 |  |  |  | 5.5d | 0d | SEI - Web | 12h | 12 |  |
| 148 | 13.3.3.16 | EliminarArchivo | 1.5d | 2015-06-19 13:00 | 2015-06-22 17:00 | 147 |  |  |  | 5.5d | 0d | SEI - Web | 12h | 12 |  |
| 149 | 13.3.3.17 | ObtenerArchivo | 0.5d | 2015-06-23 08:00 | 2015-06-23 12:00 | 148 |  |  |  | 5.5d | 0d | SEI - Web | 4h | 4 |  |
| 150 | 13.3.3.18 | ActualizarArchivo | 0.5d | 2015-06-23 13:00 | 2015-06-23 17:00 | 149 |  |  |  | 5.5d | 0d | SEI - Web | 4h | 4 |  |
| 151 | 13.3.3.19 | ObtenerRutaOrigen | 0.5d | 2015-06-24 08:00 | 2015-06-24 12:00 | 150 |  |  |  | 5.5d | 0d | SEI - Web | 4h | 4 |  |
| 152 | 13.3.3.20 | MoverArchivo | 0.5d | 2015-06-24 13:00 | 2015-06-24 17:00 | 151 |  |  |  | 5.5d |  | SEI - Web | 4h | 4 |  |
| 153 | 13.4 | **Portal Web** | 8.5d? | 2015-06-25 08:00 | 2015-07-08 12:00 | 118 | 2015-06-10 15:00 | 2015-07-02 15:00 | 15d? | 5.5d | 0d |  | 136h | 136 | 120 |
| 154 | 13.4.1 | **CUW-001: Iniciar sesión, CUW-007: Cerrar Sesión** | 2d? | 2015-06-25 08:00 | 2015-06-26 17:00 |  | 2015-06-11 15:00 | 2015-06-12 10:00 | 0.5d | 5.5d | 0d |  | 16h | 16 | 4 |
| 155 | 13.4.1.1 | Consumir servicio Yanbal | 0.75d | 2015-06-25 08:00 | 2015-06-25 15:00 |  | 2015-06-12 10:00 | 2015-06-15 10:00 | 1d | 5.5d | 0d | SEI - Web | 6h | 6 | 8 |
| 156 | 13.4.1.2 | Registrar sesión | 0.5d | 2015-06-25 15:00 | 2015-06-26 10:00 | 155 | 2015-06-15 10:00 | 2015-06-16 10:00 | 1d | 5.5d | 0d | SEI - Web | 4h | 4 | 8 |
| 157 | 13.4.1.3 | Listar paises | 0.5d? | 2015-06-26 10:00 | 2015-06-26 15:00 | 156 |  |  |  | 5.5d | 0d | SEI - Web | 4h | 4 |  |
| 158 | 13.4.1.4 | Cerrar Sesión | 0.25d | 2015-06-26 15:00 | 2015-06-26 17:00 | 157 |  |  |  | 5.5d |  | SEI - Web | 2h | 2 |  |

| ID | WBS | Task | Duration | Start | Finish | Predecessors | Baseline start | Baseline finish | Baseline duration | Total slack | Free slack | Resources | Work | Cost | Baseline cost |
| --- | --- | --- | --- | --- | --- | --- | --- | --- | --- | --- | --- | --- | --- | --- | --- |
| 159 | 13.4.2 | **CUW-002: Configurar tamaño de Carga y Descarga** | 1.5d | 2015-06-30 08:00 | 2015-07-01 12:00 | 154 | 2015-06-16 10:00 | 2015-06-18 10:00 | 2d | 5.5d | 0d |  | 12h | 12 | 16 |
| 160 | 13.4.2.1 | Listar Limites de Carga y Descarga | 0.75d | 2015-06-30 08:00 | 2015-06-30 15:00 |  | 2015-06-18 10:00 | 2015-06-19 10:00 | 1d | 5.5d | 0d | SEI - Web | 6h | 6 | 8 |
| 161 | 13.4.2.2 | Editar Limite Carga y Descarga | 0.75d | 2015-06-30 15:00 | 2015-07-01 12:00 | 160 |  |  |  | 5.5d |  | SEI - Web | 6h | 6 |  |
| 162 | 13.4.3 | **CUW-006 Enviar Notificaciones** | 1d | 2015-07-01 13:00 | 2015-07-02 12:00 | 159 |  |  |  | 5.5d | 0d |  | 8h | 8 |  |
| 163 | 13.4.3.1 | Indicador de publicaciones pendientes | 0.5d | 2015-07-01 13:00 | 2015-07-01 17:00 |  |  |  |  | 5.5d | 0d | SEI - Web | 4h | 4 |  |
| 164 | 13.4.3.2 | Validar mensaje | 0.25d | 2015-07-02 08:00 | 2015-07-02 10:00 | 163 |  |  |  | 5.5d | 0d | SEI - Web | 2h | 2 |  |
| 165 | 13.4.3.3 | Enviar notificación push | 0.25d | 2015-07-02 10:00 | 2015-07-02 12:00 | 164 |  |  |  | 5.5d |  | SEI - Web | 2h | 2 |  |
| 166 | 13.4.4 | **CUW-005 Mover Archivos** | 2.5d | 2015-07-02 13:00 | 2015-07-06 17:00 | 162 |  |  |  | 5.5d | 0d |  | 20h | 20 |  |
| 167 | 13.4.4.1 | Listar Coleccion | 1d | 2015-07-02 13:00 | 2015-07-03 12:00 |  |  |  |  | 5.5d | 0d | SEI - Web | 8h | 8 |  |
| 168 | 13.4.4.2 | Mover Archivo | 1.5d | 2015-07-03 13:00 | 2015-07-06 17:00 | 167 |  |  |  | 5.5d |  | SEI - Web | 12h | 12 |  |
| 169 | 13.4.5 | **CUW-003: Gestionar Colecciones** | 3d | 2015-06-25 08:00 | 2015-06-30 17:00 |  |  |  |  | 5.5d | 0d |  | 24h | 24 |  |
| 170 | 13.4.5.1 | Listar Coleccion | 0.75d | 2015-06-25 08:00 | 2015-06-25 15:00 |  |  |  |  | 5.5d | 0d | SEII - Web | 6h | 6 |  |
| 171 | 13.4.5.2 | Crear Coleccion | 0.75d | 2015-06-25 15:00 | 2015-06-26 12:00 | 170 |  |  |  | 5.5d | 0d | SEII - Web | 6h | 6 |  |
| 172 | 13.4.5.3 | Editar Coleccion | 0.75d | 2015-06-26 13:00 | 2015-06-30 10:00 | 171 |  |  |  | 5.5d | 0d | SEII - Web | 6h | 6 |  |
| 173 | 13.4.5.4 | Ver Coleccion | 0.5d | 2015-06-30 10:00 | 2015-06-30 15:00 | 172 |  |  |  | 5.5d | 0d | SEII - Web | 4h | 4 |  |
| 174 | 13.4.5.5 | Eliminar Coleccion | 0.25d | 2015-06-30 15:00 | 2015-06-30 17:00 | 173 |  |  |  | 5.5d |  | SEII - Web | 2h | 2 |  |
| 175 | 13.4.6 | **CUW-004: Gestionar Archivos** | 4.5d | 2015-07-01 08:00 | 2015-07-07 12:00 | 169 |  |  |  | 5.5d | 0d |  | 36h | 36 |  |
| 176 | 13.4.6.1 | Listar Archivo | 1d | 2015-07-01 08:00 | 2015-07-01 17:00 |  |  |  |  | 5.5d | 0d | SEII - Web | 8h | 8 |  |
| 177 | 13.4.6.2 | Crear Archivo | 1d | 2015-07-02 08:00 | 2015-07-02 17:00 | 176 |  |  |  | 5.5d | 0d | SEII - Web | 8h | 8 |  |
| 178 | 13.4.6.3 | Editar Archivo | 0.5d | 2015-07-03 08:00 | 2015-07-03 12:00 | 177 |  |  |  | 5.5d | 0d | SEII - Web | 4h | 4 |  |
| 179 | 13.4.6.4 | Ver detalle Archivo | 0.5d | 2015-07-03 13:00 | 2015-07-03 17:00 | 178 |  |  |  | 5.5d | 0d | SEII - Web | 4h | 4 |  |
| 180 | 13.4.6.5 | Listar Roles | 0.5d | 2015-07-06 08:00 | 2015-07-06 12:00 | 179 |  |  |  | 5.5d | 0d | SEII - Web | 4h | 4 |  |
| 181 | 13.4.6.6 | Validar limite de Carga de archivo | 0.25d | 2015-07-06 13:00 | 2015-07-06 15:00 | 180 |  |  |  | 5.5d | 0d | SEII - Web | 2h | 2 |  |
| 182 | 13.4.6.7 | Eliminar Archivo | 0.75d | 2015-07-06 15:00 | 2015-07-07 12:00 | 181 |  |  |  | 5.5d |  | SEII - Web | 6h | 6 |  |
| 183 | 13.4.7 | Seguridad (SSL) | 0.5d? | 2015-07-07 08:00 | 2015-07-07 12:00 | 166 | 2015-05-20 15:00 | 2015-05-22 15:00 | 2d? | 5.5d | 0d | SEI - Web | 4h | 4 | 16 |
| 184 | 13.4.8 | Pruebas de desarrollador | 0.5d | 2015-07-07 13:00 | 2015-07-07 17:00 | 183, 175 |  |  |  | 5.5d | 0d | SEII - Web; SEI - Web | 8h | 8 |  |
| 185 | 13.4.9 | Revisión de pares | 0.5d | 2015-07-08 08:00 | 2015-07-08 12:00 | 184 |  |  |  | 5.5d |  | SEII - Web; SEI - Web | 8h | 8 |  |
| 186 | 13.5 | Pruebas integración | 1d? | 2015-07-08 13:00 | 2015-07-09 12:00 | 153 |  |  |  | 5.5d | 0d | SEI - Web; SEII - Web | 16h | 16 |  |
| 187 | 13.6 | Configuración Ambientes de QA | 1d? | 2015-07-09 13:00 | 2015-07-10 12:00 | 186 |  |  |  | 5.5d |  | SEI - Web; SEII - Web | 16h | 16 |  |

| ID | WBS | Task | Duration | Start | Finish | Predecessors | Total slack | Free slack | Resources | Work | Cost |
| --- | --- | --- | --- | --- | --- | --- | --- | --- | --- | --- | --- |
| 188 | 14 | **Aseguramiento de la calidad** | 13d? | 2015-07-06 08:00 | 2015-07-22 17:00 |  | 5d |  |  | 484h | 484 |
| 189 | 14.1 | **Pruebas Funcionales** | 8d | 2015-07-13 08:00 | 2015-07-22 17:00 | 61 | 5d |  |  | 320h | 320 |
| 190 | 14.1.1 | **Móvil** | 8d | 2015-07-13 08:00 | 2015-07-22 17:00 |  | 5d | 0d |  | 240h | 240 |
| 191 | 14.1.1.1 | **Ejecución en Tablet** | 7d | 2015-07-13 08:00 | 2015-07-21 17:00 |  | 6d |  |  | 112h | 112 |
| 192 | 14.1.1.1.1 | Ejecución en Samsung de 10.1" /SO Android 4.1.2 (Principal) | 3d | 2015-07-13 08:00 | 2015-07-15 17:00 |  | 6d | 0d | QAI - 1; Tester - 1 | 48h | 48 |
| 193 | 14.1.1.1.2 | Ejecución en Lenovo 7" / SO Android 4.2.2 (Secundario) | 1d | 2015-07-16 08:00 | 2015-07-16 17:00 | 192 | 6d | 0d | QAI - 1; Tester - 1 | 16h | 16 |
| 194 | 14.1.1.1.3 | Tablet AOC / SO: Android 4.1.1 (Secundario) | 1d | 2015-07-17 08:00 | 2015-07-17 17:00 | 193 | 6d | 0d | QAI - 1; Tester - 1 | 16h | 16 |
| 195 | 14.1.1.1.4 | Ejecución en Ipad SO 7 (Secundario) | 1d | 2015-07-20 08:00 | 2015-07-20 17:00 | 194 | 6d | 0d | QAI - 1; Tester - 1 | 16h | 16 |
| 196 | 14.1.1.1.5 | Ejecución en Ipad SO 8 (Secundario) | 1d | 2015-07-21 08:00 | 2015-07-21 17:00 | 195 | 6d |  | QAI - 1; Tester - 1 | 16h | 16 |
| 197 | 14.1.1.2 | **Ejecución en SmartPhone** | 8d | 2015-07-13 08:00 | 2015-07-22 17:00 |  | 5d |  |  | 128h | 128 |
| 198 | 14.1.1.2.1 | Nokia Lumia 520 / SO: Windows Phone 8.0 (Principal) | 3d | 2015-07-13 08:00 | 2015-07-15 17:00 |  | 5d | 0d | QAI - 2; Tester - 2 | 48h | 48 |
| 199 | 14.1.1.2.2 | Ejecución en Samsung Galaxy Chat/SO -SO Android 4.1.2 (secundario) | 1d | 2015-07-16 08:00 | 2015-07-16 17:00 | 198 | 5d | 0d | QAI - 2; Tester - 2 | 16h | 16 |
| 200 | 14.1.1.2.3 | Samsung Galaxy S III Mini / SO: Android 4.1.2 (Principal) | 1d | 2015-07-17 08:00 | 2015-07-17 17:00 | 199 | 5d | 0d | QAI - 2; Tester - 2 | 16h | 16 |
| 201 | 14.1.1.2.4 | Ejecución en Iphone 4 / iSO 7 (Principal) | 1d | 2015-07-20 08:00 | 2015-07-20 17:00 | 200 | 5d | 0d | QAI - 2; Tester - 2 | 16h | 16 |
| 202 | 14.1.1.2.5 | Ejecución en Iphone 5 / iSO 7 (Secundario) | 1d | 2015-07-21 08:00 | 2015-07-21 17:00 | 201 | 5d | 0d | QAI - 2; Tester - 2 | 16h | 16 |
| 203 | 14.1.1.2.6 | Ejecución en Iphone 6 / iSO 7 (Secundario) | 1d | 2015-07-22 08:00 | 2015-07-22 17:00 | 202 | 5d |  | QAI - 2; Tester - 2 | 16h | 16 |
| 204 | 14.1.2 | **Web** | 5d | 2015-07-13 08:00 | 2015-07-17 17:00 |  | 8d | 0d |  | 80h | 80 |
| 205 | 14.1.2.1 | **Ejecución en Web Browser - IE9 (Principal)** | 3.75d | 2015-07-13 08:00 | 2015-07-16 15:00 |  | 8d | 0d |  | 60h | 60 |
| 206 | 14.1.2.1.1 | Ejecución de casos de prueba funcionales | 2.25d | 2015-07-13 08:00 | 2015-07-15 10:00 |  | 8d | 0d | QAI - 3; Tester - 3 | 36h | 36 |
| 207 | 14.1.2.1.2 | Reporte de errores | 0.5d | 2015-07-15 10:00 | 2015-07-15 15:00 | 206 | 8d | 0d | QAI - 3; Tester - 3 | 8h | 8 |
| 208 | 14.1.2.1.3 | Verificación de errores | 0.5d | 2015-07-15 15:00 | 2015-07-16 10:00 | 207 | 8d | 0d | QAI - 3; Tester - 3 | 8h | 8 |
| 209 | 14.1.2.1.4 | Pruebas exploratoria | 0.5d | 2015-07-16 10:00 | 2015-07-16 15:00 | 208 | 8d |  | QAI - 3; Tester - 3 | 8h | 8 |
| 210 | 14.1.2.2 | Ejecución en Web Browser - Chrome 40 (Secundario) | 1.25d | 2015-07-16 15:00 | 2015-07-17 17:00 | 205 | 8d |  | QAI - 3; Tester - 3 | 20h | 20 |
| 211 | 14.2 | **Soporte a Pruebas Funcionales (Resolución de Bugs)** | 8d | 2015-07-13 08:00 | 2015-07-22 17:00 |  | 5d | 0d |  | 64h | 64 |
| 212 | 14.2.1 | Móvil | 8d | 2015-07-13 08:00 | 2015-07-22 17:00 | 190SS | 5d |  | SEII - Mobile [50%] | 32h | 32 |
| 213 | 14.2.2 | Web | 8d | 2015-07-13 08:00 | 2015-07-22 17:00 | 204SS | 5d |  | SEII - Web [50%] | 32h | 32 |

| ID | WBS | Task | Duration | Start | Finish | Predecessors | Total slack | Free slack | Resources | Work | Cost |
| --- | --- | --- | --- | --- | --- | --- | --- | --- | --- | --- | --- |
| 214 | 14.3 | **Pruebas de Rendimiento** | 9.5d? | 2015-07-06 08:00 | 2015-07-17 12:00 |  | 8.5d |  |  | 76h | 76 |
| 215 | 14.3.1 | Creación de Scripts (Flujo: 6WS) | 5d? | 2015-07-06 08:00 | 2015-07-13 08:00 | 216SF | 13d |  | QAII | 40h | 40 |
| 216 | 14.3.2 | **Ejecución de Pruebas** | 3d? | 2015-07-13 08:00 | 2015-07-15 17:00 | 61 | 8.5d | 0d |  | 24h | 24 |
| 217 | 14.3.2.1 | Preparación del Ambiente | 0.75d? | 2015-07-13 08:00 | 2015-07-13 15:00 |  | 8.5d | 0d | QAII | 6h | 6 |
| 218 | 14.3.2.2 | Prueba de Ambiente | 0.25d? | 2015-07-13 15:00 | 2015-07-13 17:00 | 217 | 8.5d | 0d | QAII | 2h | 2 |
| 219 | 14.3.2.3 | Ejecución prueba de carga | 2d? | 2015-07-14 08:00 | 2015-07-15 17:00 | 218 | 8.5d |  | QAII | 16h | 16 |
| 220 | 14.3.3 | **Documentación** | 1.5d? | 2015-07-16 08:00 | 2015-07-17 12:00 | 216 | 8.5d |  |  | 12h | 12 |
| 221 | 14.3.3.1 | Parsing Logs | 0.5d? | 2015-07-16 08:00 | 2015-07-16 12:00 |  | 8.5d | 0d | QAII | 4h | 4 |
| 222 | 14.3.3.2 | Análisis y Notas Iniciales | 0.5d? | 2015-07-16 13:00 | 2015-07-16 17:00 | 221 | 8.5d | 0d | QAII | 4h | 4 |
| 223 | 14.3.3.3 | Creación de documento de resultados | 0.5d? | 2015-07-17 08:00 | 2015-07-17 12:00 | 222 | 8.5d |  | QAII | 4h | 4 |
| 224 | 14.4 | Soporte a Pruebas de Rendimiento | 3d? | 2015-07-13 08:00 | 2015-07-15 17:00 | 216SS | 10d |  | SEI - Web | 24h | 24 |
| 225 | 15 | **Documentación** | 10d | 2015-07-13 08:00 | 2015-07-24 17:00 | 211SS | 0d |  |  | 96h | 96 |
| 226 | 15.1 | **Móvil** | 10d | 2015-07-13 08:00 | 2015-07-24 17:00 |  | 0d |  |  | 48h | 48 |
| 227 | 15.1.1 | Release notes | 1d | 2015-07-13 08:00 | 2015-07-13 17:00 |  | 0d |  | SEII - Mobile [50%] | 4h | 4 |
| 228 | 15.1.2 | Manual de soporte | 3d | 2015-07-14 08:00 | 2015-07-16 17:00 | 227 | 0d |  | SEII - Mobile [50%] | 12h | 12 |
| 229 | 15.1.3 | Manual de instalación | 4d | 2015-07-17 08:00 | 2015-07-22 17:00 | 228 | 0d |  | SEII - Mobile [50%] | 16h | 16 |
| 230 | 15.1.4 | Manual de usuario | 2d | 2015-07-23 08:00 | 2015-07-24 17:00 | 229 | 0d |  | SEII - Mobile | 16h | 16 |
| 231 | 15.2 | **Web** | 10d | 2015-07-13 08:00 | 2015-07-24 17:00 |  | 0d |  |  | 48h | 48 |
| 232 | 15.2.1 | Release notes | 1d | 2015-07-13 08:00 | 2015-07-13 17:00 |  | 0d |  | SEII - Web [50%] | 4h | 4 |
| 233 | 15.2.2 | Manual de soporte | 3d | 2015-07-14 08:00 | 2015-07-16 17:00 | 232 | 0d |  | SEII - Web [50%] | 12h | 12 |
| 234 | 15.2.3 | Manual de instalación | 4d | 2015-07-17 08:00 | 2015-07-22 17:00 | 233 | 0d |  | SEII - Web [50%] | 16h | 16 |
| 235 | 15.2.4 | Manual de usuario | 2d | 2015-07-23 08:00 | 2015-07-24 17:00 | 234 | 0d |  | SEII - Web | 16h | 16 |
| 236 | 16 | **Generación de Binarios** | 1d | 2015-07-27 08:00 | 2015-07-27 17:00 |  | 0d |  |  | 16h | 16 |
| 237 | 16.1 | Portal Web / Web Services | 1d | 2015-07-27 08:00 | 2015-07-27 17:00 | 231 | 0d |  | SEII - Web | 8h | 8 |
| 238 | 16.2 | Aplicaciones Moviles (iOS, Android, Windows Phone) | 1d | 2015-07-27 08:00 | 2015-07-27 17:00 | 226 | 0d |  | SEII - Mobile | 8h | 8 |

| ID | WBS | Task | Duration | Start | Finish | Predecessors | Total slack | Resources | Work | Cost |
| --- | --- | --- | --- | --- | --- | --- | --- | --- | --- | --- |
| 239 | 17 | **Despliegue Ambientes Certificación Yanbal** | 2d | 2015-07-30 08:00 | 2015-07-31 17:00 | 236 | 0d |  | 32h | 32 |
| 240 | 17.1 | Móvil | 2d | 2015-07-30 08:00 | 2015-07-31 17:00 |  | 0d | SEII - Mobile | 16h | 16 |
| 241 | 17.2 | Web | 2d | 2015-07-30 08:00 | 2015-07-31 17:00 |  | 0d | SEII - Web | 16h | 16 |
