# Yanbal PhoneGap - Web

Schedule from MS Project, 2015-04-14 to 2015-08-05, status date 2008-01-09, costs in $, A marks actual dates.
Avantica Technologies

## Calendars

- Standard: Mon-Fri 08:00-12:00, 13:00-17:00; Sat-Sun off. Exceptions (off unless hours are given): 2015-05-01 (Dia del Trabajo), 2015-06-29 (Día de San Pedro y San Pablo), 2015-07-28 to 2015-07-29 (Fiestas Patrias).

## Resources

| Resource | Rate |
| --- | --- |
| QAII | 1 |
| PM | 1 |
| UX | 1 |
| SEII - Mobile | 1 |
| SEII - Web | 1 |
| QAI - 1 | 1 |
| QAI - 2 | 1 |
| Tester - 1 | 1 |
| Tester - 2 | 1 |
| Yanbal | 1 |
| UX1 | 1 |
| QAI - 3 | 1 |
| Tester - 3 | 1 |
| ARQ | 1 |
| SEI - Web | 1 |
| QAII - 2 | 1 |
| QAII - 3 | 1 |

## Schedule

| ID | WBS | Task | Type | Duration | Start | Finish | Predecessors | Complete | Remaining | Baseline start | Baseline finish | Baseline duration | Total slack | Free slack | Constraint | Resources | Work | Actual work | Cost | Baseline cost | Actual cost |
| --- | --- | --- | --- | --- | --- | --- | --- | --- | --- | --- | --- | --- | --- | --- | --- | --- | --- | --- | --- | --- | --- |
| 1 | 1 | Gestión del proyecto |  | 75d | 2015-04-14 08:00 A | 2015-07-31 17:00 |  | 51% | 37d |  |  |  | 3d |  |  | PM [40%] | 240h | 121.6h | 240 |  | 121.6 |
| 2 | 2 | Sesión de Inicio de Proyecto (KickOff) |  | 4h | 2015-04-14 08:00 A | 2015-04-14 12:00 A |  | 100% |  | 2015-04-14 08:00 | 2015-04-14 12:00 | 4h |  |  |  | SEII - Mobile; SEII - Web | 8h | 8h | 8 | 8 | 8 |
| 3 | 3 | **Análisis** |  | 17d? | 2015-04-14 13:00 A | 2015-05-08 12:00 A | 2 | 100% |  | 2015-04-14 13:00 | 2015-04-23 10:00 | 6.75d |  |  |  |  | 219h | 219h | 219 | 108 | 219 |
| 4 | 3.1 | Reuniones (124) |  | 2d | 2015-04-14 13:00 A | 2015-04-16 12:00 A |  | 100% |  | 2015-04-14 13:00 | 2015-04-16 12:00 | 2d |  |  |  | SEII - Mobile; SEII - Web | 32h | 32h | 32 | 32 | 32 |
| 5 | 3.2 | Especificación de requerimientos funcionales (125) |  | 1d | 2015-04-16 13:00 A | 2015-04-17 12:00 A | 4 | 100% |  | 2015-04-16 13:00 | 2015-04-16 17:00 | 0.5d |  |  |  | SEII - Mobile; SEII - Web | 16h | 16h | 16 | 8 | 16 |
| 6 | 3.3 | Creación de Wireframes (126) |  | 6d | 2015-04-17 13:00 A | 2015-04-27 17:00 A | 5 | 100% |  | 2015-04-17 08:00 | 2015-04-20 17:00 | 2d |  |  |  | SEII - Mobile; SEII - Web | 64h | 64h | 64 | 32 | 64 |
| 7 | 3.4 | Especificación de casos de uso (127) |  | 6d | 2015-04-21 08:00 A | 2015-04-29 17:00 A | 6 | 100% |  | 2015-04-21 08:00 | 2015-04-22 17:00 | 2d |  |  |  | SEII - Mobile; SEII - Web | 48h | 48h | 48 | 32 | 48 |
| 8 | 3.5 | Matriz de trazabilidad: requerimientos / casos de uso (128) |  | 1d | 2015-04-28 08:00 A | 2015-04-28 17:00 A | 7 | 100% |  | 2015-04-23 08:00 | 2015-04-23 10:00 | 0.25d |  |  |  | SEII - Mobile; SEII - Web | 4h | 4h | 4 | 4 | 4 |
| 9 | 3.6 | Aprobación Yanbal |  | 2.5d? | 2015-04-29 08:00 A | 2015-05-04 12:00 A | 8 | 100% |  |  |  |  |  |  |  | Yanbal | 20h | 20h | 20 |  | 20 |
| 10 | 3.7 | Modificación de documentos (144) |  | 3.5d? | 2015-05-05 08:00 A | 2015-05-08 12:00 A | 9 | 100% |  |  |  |  |  |  |  | SEII - Mobile; SEII - Web | 35h | 35h | 35 |  | 35 |
| 11 | 4 | Fin Analisis | milestone | 0d | 2015-05-14 08:00 A | 2015-05-14 08:00 A | 3 | 100% |  |  |  |  |  |  |  |  |  |  |  |  |  |
| 12 | 5 | **Diseño Técnico** |  | 30d? | 2015-04-27 08:00 A | 2015-06-08 17:00 A |  | 100% |  | 2015-04-23 10:00 | 2015-05-06 10:00 | 8d |  |  |  |  | 399h | 399h | 399 | 128 | 399 |
| 13 | 5.1 | Catalogo de servicios web a crear / consumir (137) |  | 3d | 2015-04-27 08:00 A | 2015-05-13 17:00 A | 9SS | 100% |  | 2015-05-04 10:00 | 2015-05-06 10:00 | 2d |  |  |  | SEII - Mobile; SEII - Web | 23h | 23h | 23 | 32 | 23 |
| 14 | 5.2 | Reuniones (129) |  | 7d | 2015-04-28 08:00 A | 2015-05-15 17:00 A | 13, 10 | 100% |  | 2015-04-23 10:00 | 2015-04-24 10:00 | 1d |  |  |  | SEII - Mobile; SEII - Web | 36h | 36h | 36 | 16 | 36 |
| 15 | 5.3 | Configurar ambiente de desarrollo (141 y 142) |  | 8d? | 2015-04-30 08:00 A | 2015-05-29 17:00 A | 14 | 100% |  |  |  |  |  |  |  | SEII - Mobile; SEII - Web | 31h | 31h | 31 |  | 31 |
| 16 | 5.4 | Revisión documentación Yanbal (143) |  | 1d? | 2015-04-30 08:00 A | 2015-04-30 17:00 A | 15 | 100% |  |  |  |  |  |  |  | SEII - Mobile; SEII - Web | 4h | 4h | 4 |  | 4 |
| 17 | 5.5 | Definir estándares de desarrollo (130 y 161) |  | 1d | 2015-05-18 08:00 A | 2015-05-18 17:00 A | 16 | 100% |  | 2015-04-24 10:00 | 2015-04-24 15:00 | 0.5d |  |  |  | SEII - Mobile; SEII - Web | 3h | 3h | 3 | 8 | 3 |
| 18 | 5.6 | Requerimientos no funcionales (131 y 162) |  | 2d | 2015-04-30 08:00 A | 2015-05-18 17:00 A | 17 | 100% |  | 2015-04-24 15:00 | 2015-04-27 10:00 | 0.5d |  |  |  | SEII - Mobile; SEII - Web | 5h | 5h | 5 | 8 | 5 |
| 19 | 5.7 | Arquitectura (132) |  | 4d | 2015-04-30 08:00 A | 2015-05-18 17:00 A | 18 | 100% |  | 2015-04-27 10:00 | 2015-04-27 12:00 | 0.25d |  |  |  | SEII - Mobile; SEII - Web | 14h | 14h | 14 | 4 | 14 |
| 20 | 5.8 | Base de Datos (136 y 160) |  | 4d | 2015-05-11 08:00 A | 2015-05-14 17:00 A | 19 | 100% |  | 2015-04-27 13:00 | 2015-04-27 17:00 | 0.5d |  |  |  | SEII - Mobile; SEII - Web | 14h | 14h | 14 | 8 | 14 |
| 21 | 5.9 | Especificación Técnica de la Solución (151 y 156) |  | 4d | 2015-05-13 08:00 A | 2015-05-18 17:00 A | 20 | 100% |  | 2015-04-28 08:00 | 2015-04-28 10:00 | 0.25d |  |  |  | SEII - Mobile; SEII - Web | 27h | 27h | 27 | 4 | 27 |
| 22 | 5.10 | Diagrama de Clases (148 y 149) |  | 4d | 2015-05-06 08:00 A | 2015-05-15 17:00 A | 21 | 100% |  | 2015-04-28 10:00 | 2015-04-30 10:00 | 2d |  |  |  | SEII - Mobile; SEII - Web | 14h | 14h | 14 | 32 | 14 |
| 23 | 5.11 | Mapa de Navegación (150 y 155) |  | 1d | 2015-05-15 08:00 A | 2015-05-15 17:00 A | 22 | 100% |  | 2015-04-30 10:00 | 2015-05-04 10:00 | 1d |  |  |  | SEII - Mobile; SEII - Web | 3h | 3h | 3 | 16 | 3 |
| 24 | 5.12 | Perfiles del sistema (153 y 158) |  | 2d? | 2015-05-14 08:00 A | 2015-05-15 17:00 A | 23 | 100% |  |  |  |  |  |  |  | SEII - Mobile; SEII - Web | 2h | 2h | 2 |  | 2 |
| 25 | 5.13 | Especificación de pantallas (152 y 157) |  | 1d? | 2015-05-18 11:00 A | 2015-05-19 11:00 A | 24 | 100% |  |  |  |  |  |  |  | SEII - Mobile; SEII - Web | 12h | 12h | 12 |  | 12 |
| 26 | 5.14 | Aprobación Yanbal |  | 2d? | 2015-05-19 11:00 A | 2015-05-21 11:00 A | 25 | 100% |  |  |  |  |  |  |  | Yanbal | 16h | 16h | 16 |  | 16 |
| 27 | 5.15 | Modificación de documentos (205 y 206) |  | 13.12d? | 2015-05-20 08:00 A | 2015-06-08 17:00 A | 26SS | 100% |  |  |  |  |  |  |  | SEII - Mobile [600%]; SEII - Web | 163h | 163h | 163 |  | 163 |
| 28 | 5.16 | Aprobación Yanbal |  | 2d? | 2015-05-21 11:00 A | 2015-05-25 11:00 A | 26 | 100% |  |  |  |  |  |  |  | Yanbal | 16h | 16h | 16 |  | 16 |
| 29 | 5.17 | Revisión de entregable por Aquitectura Avantica |  | 2d? | 2015-05-25 11:00 A | 2015-05-27 11:00 A | 28 | 100% |  |  |  |  |  |  |  | ARQ | 16h | 16h | 16 |  | 16 |
| 30 | 6 | Fin Diseño Técnico |  | 1d? | 2015-06-03 08:00 | 2015-06-03 17:00 |  |  |  |  |  |  | 2.85d | 0d | finish no earlier than 2015-06-03 17:00 |  |  |  |  |  |  |
| 31 | 7 | Disponibilidad UX | milestone | 0d | 2015-04-29 08:00 A | 2015-04-29 08:00 A |  | 100% |  |  |  |  |  |  |  |  |  |  |  |  |  |

| ID | WBS | Task | Type | Duration | Start | Finish | Predecessors | Complete | Baseline start | Baseline finish | Baseline duration | Constraint | Resources | Work | Actual work | Cost | Baseline cost | Actual cost |
| --- | --- | --- | --- | --- | --- | --- | --- | --- | --- | --- | --- | --- | --- | --- | --- | --- | --- | --- |
| 32 | 8 | **Diseño Gráfico** |  | 18d? | 2015-04-29 08:00 A | 2015-05-25 17:00 A | 31 | 100% | 2015-04-21 08:00 | 2015-05-18 10:00 | 18.25d |  |  | 142h | 142h | 136 | 146 | 136 |
| 33 | 8.1 | **Preparación de propuesta** |  | 10.25d | 2015-04-29 08:00 A | 2015-05-14 10:00 A |  | 100% | 2015-04-21 08:00 | 2015-04-30 10:00 | 7.25d |  |  | 82h | 82h | 82 | 58 | 82 |
| 34 | 8.1.1 | Reuniones con el cliente (información inicial) |  | 0.75d | 2015-04-29 08:00 A | 2015-04-29 15:00 A |  | 100% | 2015-04-21 08:00 | 2015-04-21 15:00 | 0.75d |  | UX | 6h | 6h | 6 | 6 | 6 |
| 35 | 8.1.2 | Elaboración de propuesta grafica (2 Pág. Maestras) Móvil |  | 3.5d | 2015-04-29 15:00 A | 2015-05-06 10:00 A | 34 | 100% | 2015-04-21 15:00 | 2015-04-24 10:00 | 2.5d |  | UX | 28h | 28h | 28 | 20 | 28 |
| 36 | 8.1.3 | Elaboración de propuesta grafica (2 Pág. Maestras) Web |  | 3.5d | 2015-05-06 10:00 A | 2015-05-11 15:00 A | 35 | 100% | 2015-04-24 10:00 | 2015-04-28 12:00 | 2.25d |  | UX | 28h | 28h | 28 | 18 | 28 |
| 37 | 8.1.4 | Elaboración de assets y cortes de imágenes |  | 2.5d | 2015-05-11 15:00 A | 2015-05-14 10:00 A | 36 | 100% | 2015-04-28 13:00 | 2015-04-30 10:00 | 1.75d |  | UX | 20h | 20h | 20 | 14 | 20 |
| 38 | 8.2 | **Preparación de maquetas y assets** |  | 7.75d? | 2015-05-14 10:00 A | 2015-05-25 17:00 A | 33 | 100% | 2015-04-30 10:00 | 2015-05-18 10:00 | 11d |  |  | 60h | 60h | 54 | 88 | 54 |
| 39 | 8.2.1 | **Kiosko Móvil** |  | 4.75d? | 2015-05-14 10:00 A | 2015-05-20 17:00 A |  | 100% | 2015-05-13 10:00 | 2015-05-18 10:00 | 3d |  |  | 36h | 36h | 30 | 24 | 30 |
| 40 | 8.2.1.1 | Login |  | 0.75d | 2015-05-14 10:00 A | 2015-05-14 17:00 A |  | 100% | 2015-05-13 10:00 | 2015-05-13 17:00 | 0.75d |  | UX | 6h | 6h | 6 | 6 | 6 |
| 41 | 8.2.1.2 | Página Principal |  | 0.75d | 2015-05-15 08:00 A | 2015-05-15 15:00 A | 40 | 100% | 2015-05-14 08:00 | 2015-05-14 15:00 | 0.75d |  | UX | 6h | 6h | 6 | 6 | 6 |
| 42 | 8.2.1.3 | Ver Colección |  | 0.75d | 2015-05-15 15:00 A | 2015-05-18 12:00 A | 41 | 100% | 2015-05-14 15:00 | 2015-05-15 12:00 | 0.75d |  | UX | 6h | 6h | 6 | 6 | 6 |
| 43 | 8.2.1.4 | Notificaciones |  | 0.75d | 2015-05-18 13:00 A | 2015-05-19 10:00 A | 42 | 100% | 2015-05-15 13:00 | 2015-05-18 10:00 | 0.75d |  | UX | 6h | 6h | 6 | 6 | 6 |
| 44 | 8.2.1.5 | Configuración |  | 0.75d? | 2015-05-19 10:00 A | 2015-05-19 17:00 A | 43 | 100% |  |  |  |  | UX | 6h | 6h | 6 |  | 6 |
| 45 | 8.2.1.6 | Ver/Descargar/Eliminar Archivo |  | 1d? | 2015-05-20 08:00 A | 2015-05-20 17:00 A | 44 | 100% |  |  |  |  |  | 6h | 6h |  |  |  |
| 46 | 8.2.2 | **Kisoko Web** |  | 3d? | 2015-05-21 08:00 A | 2015-05-25 17:00 A | 39 | 100% | 2015-04-30 10:00 | 2015-05-13 10:00 | 8d |  |  | 24h | 24h | 24 | 64 | 24 |
| 47 | 8.2.2.1 | Login |  | 0.38d | 2015-05-21 08:00 A | 2015-05-21 11:00 A |  | 100% | 2015-04-30 10:00 | 2015-05-04 10:00 | 1d |  | UX | 3h | 3h | 3 | 8 | 3 |
| 48 | 8.2.2.2 | Pantalla Principal |  | 0.38d? | 2015-05-21 11:00 A | 2015-05-21 15:00 A | 47 | 100% |  |  |  |  | UX | 3h | 3h | 3 |  | 3 |
| 49 | 8.2.2.3 | Administración de Colecciones |  | 0.38d | 2015-05-21 15:00 A | 2015-05-22 09:00 A | 48 | 100% | 2015-05-08 10:00 | 2015-05-08 17:00 | 0.75d |  | UX | 3h | 3h | 3 | 6 | 3 |
| 50 | 8.2.2.4 | Crear/Editar Colecciones |  | 0.38d? | 2015-05-22 09:00 A | 2015-05-22 12:00 A | 49 | 100% |  |  |  |  | UX | 3h | 3h | 3 |  | 3 |
| 51 | 8.2.2.5 | Cargar Archivos |  | 0.38d? | 2015-05-22 13:00 A | 2015-05-22 16:00 A | 50 | 100% |  |  |  |  | UX | 3h | 3h | 3 |  | 3 |
| 52 | 8.2.2.6 | Publicar Archivos |  | 0.38d? | 2015-05-22 16:00 A | 2015-05-25 10:00 A | 51 | 100% |  |  |  |  | UX | 3h | 3h | 3 |  | 3 |
| 53 | 8.2.2.7 | Mover Archivos |  | 0.38d? | 2015-05-25 10:00 A | 2015-05-25 14:00 A | 52 | 100% |  |  |  |  | UX | 3h | 3h | 3 |  | 3 |
| 54 | 8.2.2.8 | Configuración de límites de carga y descarga |  | 0.38d | 2015-05-25 14:00 A | 2015-05-25 17:00 A | 53 | 100% | 2015-05-11 08:00 | 2015-05-11 15:00 | 0.75d |  | UX | 3h | 3h | 3 | 6 | 3 |
| 55 | 9 | Fin Diseño Gráfico |  | 1d? | 2015-05-25 08:00 A | 2015-05-25 17:00 A | 32 | 100% |  |  |  |  |  |  |  |  |  |  |
| 56 | 10 | Disponibilidad QA | milestone | 0d | 2015-05-18 08:00 A | 2015-05-18 08:00 A |  | 100% |  |  |  | start no earlier than 2015-05-18 08:00 |  |  |  |  |  |  |

| ID | WBS | Task | Duration | Start | Finish | Predecessors | Complete | Remaining | Baseline start | Baseline finish | Baseline duration | Total slack | Free slack | Constraint | Resources | Work | Actual work | Cost | Baseline cost | Actual cost |
| --- | --- | --- | --- | --- | --- | --- | --- | --- | --- | --- | --- | --- | --- | --- | --- | --- | --- | --- | --- | --- |
| 57 | 11 | **Planificación y Especificación de Pruebas** | 21d? | 2015-05-18 08:00 A | 2015-06-15 17:00 |  | 57% | 9d? |  |  |  | 34d |  |  |  | 128h | 80h | 128 |  | 80 |
| 58 | 11.1 | Plan de Pruebas Funcionales y de Rendimiento (163) | 3.5d? | 2015-06-08 08:00 | 2015-06-11 17:00 |  |  |  |  |  |  | 36d |  | start no earlier than 2015-06-08 08:00 | QAII - 2 | 16h |  | 16 |  |  |
| 59 | 11.2 | LCP - Listado de Casos de Prueba (164) | 2d? | 2015-05-18 08:00 A | 2015-05-20 17:00 A | 58 | 100% |  |  |  |  |  |  |  | QAI - 1 | 16h | 16h | 16 |  | 16 |
| 60 | 11.3 | ECP - Especificación de Casos de Prueba (165) | 8d? | 2015-05-20 08:00 A | 2015-05-29 17:00 A | 59 | 100% |  |  |  |  |  |  |  | QAI - 1 | 64h | 64h | 64 |  | 64 |
| 61 | 11.4 | Actualización de documentos de pruebas (237) | 3d? | 2015-06-10 08:00 | 2015-06-12 17:00 |  |  |  |  |  |  | 35d |  | finish no earlier than 2015-06-12 17:00 | QAII - 3 | 24h |  | 24 |  |  |
| 62 | 11.5 | Pruebas No Funcionales (236) | 1d? | 2015-06-15 08:00 | 2015-06-15 17:00 |  |  |  |  |  |  | 34d |  | start no earlier than 2015-06-15 08:00 | QAII - 3 | 8h |  | 8 |  |  |
| 63 | 12 | **Desarrollo** | 36d? | 2015-05-25 08:00 A | 2015-07-14 17:00 | 30 | 27% | 26.32d? | 2015-05-06 10:00 | 2015-07-02 15:00 | 40.5d? | 2d | 0d |  |  | 583h | 72h | 583 | 548 | 72 |
| 64 | 12.1 | **HTML** | 16d? | 2015-05-25 08:00 A | 2015-06-15 17:00 |  | 78% | 3.53d? | 2015-05-07 15:00 | 2015-05-13 15:00 | 4d? | 6d | 0d |  |  | 77h | 41h | 77 | 32 | 41 |
| 65 | 12.1.1 | **Estructura base HTML** | 11.5d? | 2015-05-25 08:00 A | 2015-06-09 12:00 A |  | 100% |  |  |  |  |  |  |  |  | 17h | 17h | 17 |  | 17 |
| 66 | 12.1.1.1 | Móvil (166) | 2.38d? | 2015-05-25 08:00 A | 2015-06-08 11:00 A |  | 100% |  |  |  |  |  |  |  | SEII - Mobile | 9h | 9h | 9 |  | 9 |
| 67 | 12.1.1.2 | Web (167) | 2.5d? | 2015-06-05 08:00 A | 2015-06-09 12:00 A | 66 | 100% |  |  |  |  |  |  |  | SEII - Mobile | 8h | 8h | 8 |  | 8 |
| 68 | 12.1.2 | **Páginas Móvil** | 9d? | 2015-05-28 08:00 A | 2015-06-09 17:00 | 65 | 96% | 0.39d? |  |  |  | 6d | 0d |  |  | 28h | 24h | 28 |  | 24 |
| 69 | 12.1.2.1 | Inicio Session (169) | 3d? | 2015-06-01 08:00 A | 2015-06-09 17:00 A |  | 100% |  |  |  |  |  |  |  | SEII - Mobile [50%] | 7h | 7h | 7 |  | 7 |
| 70 | 12.1.2.2 | Pagina Principal (170) | 1d? | 2015-05-28 08:00 A | 2015-05-28 17:00 A | 69 | 100% |  |  |  |  |  |  |  | SEII - Mobile | 2h | 2h | 2 |  | 2 |
| 71 | 12.1.2.3 | Coleccion seleccionada (171) | 1d? | 2015-06-05 08:00 A | 2015-06-05 17:00 A | 70 | 100% |  |  |  |  |  |  |  | SEII - Mobile | 2h | 2h | 2 |  | 2 |
| 72 | 12.1.2.4 | Opciones del archivo (172) | 1d? | 2015-05-28 08:00 A | 2015-05-28 17:00 A | 71 | 100% |  |  |  |  |  |  |  | SEII - Mobile | 2h | 2h | 2 |  | 2 |
| 73 | 12.1.2.5 | Página de configuración (173) | 1d? | 2015-06-02 08:00 A | 2015-06-02 17:00 A | 72 | 100% |  |  |  |  |  |  |  | SEII - Mobile | 1h | 1h | 1 |  | 1 |
| 74 | 12.1.2.6 | Panel de notificaciones (174) | 2d? | 2015-06-02 08:00 A | 2015-06-04 17:00 A | 73 | 100% |  |  |  |  |  |  |  | SEII - Mobile | 6h | 6h | 6 |  | 6 |
| 75 | 12.1.2.7 | Sincronización (175) | 2d? | 2015-06-04 08:00 A | 2015-06-05 17:00 A | 74 | 100% |  |  |  |  |  |  |  | SEII - Mobile | 4h | 4h | 4 |  | 4 |
| 76 | 12.1.2.8 | Revisión/Corrección con UX (176) | 0.5d? | 2015-06-09 13:00 | 2015-06-09 17:00 | 75 |  |  |  |  |  | 6d |  |  | SEII - Mobile | 4h |  | 4 |  |  |
| 77 | 12.1.3 | **Páginas Web** | 4d? | 2015-06-10 08:00 | 2015-06-15 17:00 | 68 |  |  |  |  |  | 6d |  |  |  | 32h |  | 32 |  |  |
| 78 | 12.1.3.1 | Página Principal | 0.5d? | 2015-06-10 08:00 | 2015-06-10 12:00 |  |  |  |  |  |  | 6d | 0d |  | SEII - Mobile | 4h |  | 4 |  |  |
| 79 | 12.1.3.2 | Inicio Session | 0.5d? | 2015-06-10 13:00 | 2015-06-10 17:00 | 78 |  |  |  |  |  | 6d | 0d |  | SEII - Mobile | 4h |  | 4 |  |  |
| 80 | 12.1.3.3 | Mantener Colecciones | 1.5d? | 2015-06-11 08:00 | 2015-06-12 12:00 | 79 |  |  |  |  |  | 6d | 0d |  | SEII - Mobile | 12h |  | 12 |  |  |
| 81 | 12.1.3.4 | Configurar limite de descarga | 0.5d? | 2015-06-12 13:00 | 2015-06-12 17:00 | 80 |  |  |  |  |  | 6d | 0d |  | SEII - Mobile | 4h |  | 4 |  |  |
| 82 | 12.1.3.5 | Revisión/Corrección con UX | 1d? | 2015-06-15 08:00 | 2015-06-15 17:00 | 81 |  |  |  |  |  | 6d |  |  | SEII - Mobile | 8h |  | 8 |  |  |

| ID | WBS | Task | Duration | Start | Finish | Predecessors | Baseline start | Baseline finish | Baseline duration | Total slack | Free slack | Resources | Work | Cost | Baseline cost |
| --- | --- | --- | --- | --- | --- | --- | --- | --- | --- | --- | --- | --- | --- | --- | --- |
| 83 | 12.2 | **PhoneGap** | 16d? | 2015-06-16 08:00 | 2015-07-08 17:00 | 64 | 2015-05-13 15:00 | 2015-06-12 10:00 | 21.5d? | 6d |  |  | 128h | 128 | 172 |
| 84 | 12.2.1 | Creación proyecto base | 1d? | 2015-06-16 08:00 | 2015-06-16 17:00 |  |  |  |  | 6d | 0d | SEII - Mobile | 8h | 8 |  |
| 85 | 12.2.2 | Revisión de pares | 0.5d? | 2015-06-17 08:00 | 2015-06-17 12:00 | 84 |  |  |  | 6d | 0d | SEII - Mobile | 4h | 4 |  |
| 86 | 12.2.3 | Creación archivo de propiedades | 0.5d? | 2015-06-17 13:00 | 2015-06-17 17:00 | 85 |  |  |  | 6d | 0d | SEII - Mobile | 4h | 4 |  |
| 87 | 12.2.4 | Listener para eventos Back | 1.5d? | 2015-06-18 08:00 | 2015-06-19 12:00 | 86 | 2015-05-13 15:00 | 2015-05-14 10:00 | 0.5d? | 6d | 0d | SEII - Mobile | 12h | 12 | 4 |
| 88 | 12.2.5 | **CUM-001: Autenticar usuario, CUM-011: Cerrar Sesión** | 1.25d? | 2015-06-19 13:00 | 2015-06-22 15:00 | 87 |  |  |  | 6d | 0d |  | 10h | 10 |  |
| 89 | 12.2.5.1 | Consumir servicio | 0.25d? | 2015-06-19 13:00 | 2015-06-19 15:00 |  |  |  |  | 6d | 0d | SEII - Mobile | 2h | 2 |  |
| 90 | 12.2.5.2 | Crear token | 0.25d? | 2015-06-19 15:00 | 2015-06-19 17:00 | 89 |  |  |  | 6d | 0d | SEII - Mobile | 2h | 2 |  |
| 91 | 12.2.5.3 | Guardar sesión | 0.5d? | 2015-06-22 08:00 | 2015-06-22 12:00 | 90 |  |  |  | 6d | 0d | SEII - Mobile | 4h | 4 |  |
| 92 | 12.2.5.4 | Cerrar sesión | 0.25d? | 2015-06-22 13:00 | 2015-06-22 15:00 | 91 |  |  |  | 6d |  | SEII - Mobile | 2h | 2 |  |
| 93 | 12.2.6 | **CUM-002: Sincronizar Datos, CUM-003: Mostrar Nuevo Contenido, CUM-008: Mostrar Notificación Nativa** | 4.25d? | 2015-06-22 15:00 | 2015-06-26 17:00 | 88 |  |  |  | 6d | 0d |  | 34h | 34 |  |
| 94 | 12.2.6.1 | Consumir servicio (sincronización al inicio y a demanda) | 0.75d? | 2015-06-22 15:00 | 2015-06-23 12:00 |  |  |  |  | 6d | 0d | SEII - Mobile | 6h | 6 |  |
| 95 | 12.2.6.2 | Guardar datos | 1d? | 2015-06-23 13:00 | 2015-06-24 12:00 | 94 |  |  |  | 6d | 0d | SEII - Mobile | 8h | 8 |  |
| 96 | 12.2.6.3 | Actualizar panel de notificacion | 0.5d? | 2015-06-24 13:00 | 2015-06-24 17:00 | 95 |  |  |  | 6d | 0d | SEII - Mobile | 4h | 4 |  |
| 97 | 12.2.6.4 | Actualizar panel de configuración (fecha ultima sincronización) | 0.25d? | 2015-06-25 08:00 | 2015-06-25 10:00 | 96 |  |  |  | 6d | 0d | SEII - Mobile | 2h | 2 |  |
| 98 | 12.2.6.5 | Actualizar panel de notificacion para eliminar visto | 0.5d? | 2015-06-25 10:00 | 2015-06-25 15:00 | 97 |  |  |  | 6d | 0d | SEII - Mobile | 4h | 4 |  |
| 99 | 12.2.6.6 | Configuración para notificaciones push (panel nativo) | 1d? | 2015-06-25 15:00 | 2015-06-26 15:00 | 98 |  |  |  | 6d | 0d | SEII - Mobile | 8h | 8 |  |
| 100 | 12.2.6.7 | Mensaje confirmación éxito/error sincronización por conexión de internet | 0.25d? | 2015-06-26 15:00 | 2015-06-26 17:00 | 99 |  |  |  | 6d |  | SEII - Mobile | 2h | 2 |  |
| 101 | 12.2.7 | **CUM-004: Navegar por Colecciones y Archivos, CUM-005: Ver Archivos** | 2.25d? | 2015-06-30 08:00 | 2015-07-02 10:00 | 93 |  |  |  | 6d | 0d |  | 18h | 18 |  |
| 102 | 12.2.7.1 | Consumir servicio | 0.5d? | 2015-06-30 08:00 | 2015-06-30 12:00 |  |  |  |  | 6d | 0d | SEII - Mobile | 4h | 4 |  |
| 103 | 12.2.7.2 | Manejo de nagevabilidad | 0.5d? | 2015-06-30 13:00 | 2015-06-30 17:00 | 102 |  |  |  | 6d | 0d | SEII - Mobile | 4h | 4 |  |
| 104 | 12.2.7.3 | Ver archivo | 1d? | 2015-07-01 08:00 | 2015-07-01 17:00 | 103 |  |  |  | 6d | 0d | SEII - Mobile | 8h | 8 |  |
| 105 | 12.2.7.4 | Mostrar mensaje de confirmación para descargar con red movil (validacion peso máximo) | 0.25d? | 2015-07-02 08:00 | 2015-07-02 10:00 | 104 |  |  |  | 6d |  | SEII - Mobile | 2h | 2 |  |
| 106 | 12.2.8 | **CUM-006: Descargar Archivo** | 0.75d? | 2015-07-02 10:00 | 2015-07-02 17:00 | 101 |  |  |  | 6d | 0d |  | 6h | 6 |  |
| 107 | 12.2.8.1 | Consumir servicio | 0.25d? | 2015-07-02 10:00 | 2015-07-02 12:00 |  |  |  |  | 6d | 0d | SEII - Mobile | 2h | 2 |  |
| 108 | 12.2.8.2 | Marcar contenido como descargado | 0.25d? | 2015-07-02 13:00 | 2015-07-02 15:00 | 107 |  |  |  | 6d | 0d | SEII - Mobile | 2h | 2 |  |
| 109 | 12.2.8.3 | Mostrar mensaje de confirmación para descargar con red movil (validacion peso máximo) | 0.25d? | 2015-07-02 15:00 | 2015-07-02 17:00 | 108 |  |  |  | 6d |  | SEII - Mobile | 2h | 2 |  |

Notes:
- 87: Incluye envío de datos cuando haya internet. / Considerar caso en que se muere la app.

| ID | WBS | Task | Duration | Start | Finish | Predecessors | Complete | Remaining | Baseline start | Baseline finish | Baseline duration | Total slack | Free slack | Resources | Work | Actual work | Cost | Baseline cost | Actual cost |
| --- | --- | --- | --- | --- | --- | --- | --- | --- | --- | --- | --- | --- | --- | --- | --- | --- | --- | --- | --- |
| 110 | 12.2.9 | **CUM-007: Eliminar Archivos** | 1d? | 2015-07-03 08:00 | 2015-07-03 17:00 | 106 |  |  |  |  |  | 6d | 0d |  | 8h |  | 8 |  |  |
| 111 | 12.2.9.1 | Consumir servicio | 0.5d? | 2015-07-03 08:00 | 2015-07-03 12:00 |  |  |  |  |  |  | 6d | 0d | SEII - Mobile | 4h |  | 4 |  |  |
| 112 | 12.2.9.2 | Guardar datos en cache | 0.5d? | 2015-07-03 13:00 | 2015-07-03 17:00 | 111 |  |  |  |  |  | 6d |  | SEII - Mobile | 4h |  | 4 |  |  |
| 113 | 12.2.10 | **CUM-009: Enviar métricas** | 1d? | 2015-07-06 08:00 | 2015-07-06 17:00 | 110 |  |  |  |  |  | 6d | 0d |  | 8h |  | 8 |  |  |
| 114 | 12.2.10.1 | Enviar parametro de log en los servicios | 0.5d? | 2015-07-06 08:00 | 2015-07-06 12:00 |  |  |  |  |  |  | 6d | 0d | SEII - Mobile | 4h |  | 4 |  |  |
| 115 | 12.2.10.2 | Colocar url de google analytics en las acciones | 0.5d? | 2015-07-06 13:00 | 2015-07-06 17:00 | 114 |  |  |  |  |  | 6d |  | SEII - Mobile | 4h |  | 4 |  |  |
| 116 | 12.2.11 | **CUM-010: Permitir uso de red móvil en descarga** | 0.5d? | 2015-07-07 08:00 | 2015-07-07 12:00 | 113 |  |  |  |  |  | 6d | 0d |  | 4h |  | 4 |  |  |
| 117 | 12.2.11.1 | Grabar en cache | 0.5d? | 2015-07-07 08:00 | 2015-07-07 12:00 |  |  |  |  |  |  | 6d |  | SEII - Mobile | 4h |  | 4 |  |  |
| 118 | 12.2.12 | Pruebas desarrollador | 1d? | 2015-07-07 13:00 | 2015-07-08 12:00 | 116 |  |  |  |  |  | 6d | 0d | SEII - Mobile | 8h |  | 8 |  |  |
| 119 | 12.2.13 | Revisión de pares | 0.5d? | 2015-07-08 13:00 | 2015-07-08 17:00 | 118 |  |  |  |  |  | 6d |  | SEII - Mobile | 4h |  | 4 |  |  |
| 120 | 12.3 | **Web Services** | 23d? | 2015-05-25 08:00 A | 2015-06-24 17:00 |  | 31% | 15.98d? | 2015-05-07 15:00 | 2015-06-10 15:00 | 24d? | 15d |  |  | 170h | 31h | 170 | 192 | 31 |
| 121 | 12.3.1 | **Componentes Comunes** | 14d? | 2015-05-25 08:00 A | 2015-06-11 17:00 |  | 85% | 2.14d? |  |  |  | 2d | 0d |  | 42h | 31h | 42 |  | 31 |
| 122 | 12.3.1.1 | Creación servicio web y estructura base (184) | 5d | 2015-05-25 08:00 A | 2015-06-04 17:00 A |  | 100% |  | 2015-05-11 15:00 | 2015-05-13 15:00 | 2d |  |  | SEII - Web | 17h | 17h | 17 | 16 | 17 |
| 123 | 12.3.1.2 | Implementación log - bitácora (185) | 1.38d | 2015-06-09 08:00 A | 2015-06-10 11:00 | 122 | 73% | 0.38d | 2015-05-13 15:00 | 2015-05-18 15:00 | 3d | 3.62d |  | SEII - Web | 4h | 1h | 4 | 24 | 1 |
| 124 | 12.3.1.3 | Implementación utilitarios base - parseo, conversión (186) | 1.62d | 2015-06-05 13:00 A | 2015-06-10 17:00 A | 123 | 100% |  | 2015-05-18 15:00 | 2015-05-20 15:00 | 2d |  |  | SEII - Web [300%] | 13h | 13h | 13 | 16 | 13 |
| 125 | 12.3.1.4 | Seguridad (SSL) | 1d? | 2015-06-11 08:00 | 2015-06-11 17:00 | 124 |  |  | 2015-05-20 15:00 | 2015-05-22 15:00 | 2d? | 2d |  | SEII - Web | 8h |  | 8 | 16 |  |
| 126 | 12.3.2 | **Móvil** | 9d? | 2015-06-12 08:00 | 2015-06-24 17:00 | 121 |  |  |  |  |  | 15d |  |  | 72h |  | 72 |  |  |
| 127 | 12.3.2.1 | Autenticar usuario movil | 1d | 2015-06-12 08:00 | 2015-06-12 17:00 |  |  |  | 2015-05-22 15:00 | 2015-05-25 15:00 | 1d | 15d | 0d | SEI - Web | 8h |  | 8 | 8 |  |
| 128 | 12.3.2.2 | ObtenerColeccionesContenido | 2d | 2015-06-15 08:00 | 2015-06-16 17:00 | 127 |  |  | 2015-05-25 15:00 | 2015-05-26 15:00 | 1d | 15d | 0d | SEI - Web | 16h |  | 16 | 8 |  |
| 129 | 12.3.2.3 | ObtenerArchivo | 2d | 2015-06-17 08:00 | 2015-06-18 17:00 | 128 |  |  | 2015-05-26 15:00 | 2015-05-27 12:00 | 0.75d | 15d | 0d | SEI - Web | 16h |  | 16 | 6 |  |
| 130 | 12.3.2.4 | ObtenerNotificaciones | 1.5d | 2015-06-19 08:00 | 2015-06-22 12:00 | 129 |  |  | 2015-05-27 13:00 | 2015-05-28 10:00 | 0.75d | 15d | 0d | SEI - Web | 12h |  | 12 | 6 |  |
| 131 | 12.3.2.5 | ActualizarNotificacion | 1d | 2015-06-22 13:00 | 2015-06-23 12:00 | 130 |  |  | 2015-05-28 10:00 | 2015-06-01 10:00 | 2d | 15d | 0d | SEI - Web | 8h |  | 8 | 16 |  |
| 132 | 12.3.2.6 | EnviarDetalleBitacora | 0.5d? | 2015-06-23 13:00 | 2015-06-23 17:00 | 131 |  |  |  |  |  | 15d | 0d | SEI - Web | 4h |  | 4 |  |  |
| 133 | 12.3.2.7 | Pruebas de desarrollador | 0.5d | 2015-06-24 08:00 | 2015-06-24 12:00 | 132 |  |  | 2015-06-02 10:00 | 2015-06-03 10:00 | 1d | 15d | 0d | SEI - Web | 4h |  | 4 | 8 |  |
| 134 | 12.3.2.8 | Revisión de pares | 0.5d | 2015-06-24 13:00 | 2015-06-24 17:00 | 133 |  |  | 2015-06-03 10:00 | 2015-06-04 10:00 | 1d | 15d |  | SEI - Web | 4h |  | 4 | 8 |  |

| ID | WBS | Task | Duration | Start | Finish | Predecessors | Baseline start | Baseline finish | Baseline duration | Total slack | Free slack | Resources | Work | Cost | Baseline cost |
| --- | --- | --- | --- | --- | --- | --- | --- | --- | --- | --- | --- | --- | --- | --- | --- |
| 135 | 12.3.3 | **Web** | 7d? | 2015-06-12 08:00 | 2015-06-22 17:00 | 121 |  |  |  | 2d | 0d |  | 56h | 56 |  |
| 136 | 12.3.3.1 | CUW-001: Iniciar sesión | 0.75d? | 2015-06-12 08:00 | 2015-06-12 15:00 |  |  |  |  | 2d | 0d | SEII - Web | 6h | 6 |  |
| 137 | 12.3.3.2 | CUW-002: Configurar tamaño de Carga y Descarga | 0.75d? | 2015-06-12 15:00 | 2015-06-15 12:00 | 136 |  |  |  | 2d | 0d | SEII - Web | 6h | 6 |  |
| 138 | 12.3.3.3 | CUW-003: Gestionar Colecciones | 2d? | 2015-06-15 13:00 | 2015-06-17 12:00 | 137 |  |  |  | 2d | 0d | SEII - Web | 16h | 16 |  |
| 139 | 12.3.3.4 | CUW-004: Gestionar Archivos | 2d? | 2015-06-17 13:00 | 2015-06-19 12:00 | 138 |  |  |  | 2d | 0d | SEII - Web | 16h | 16 |  |
| 140 | 12.3.3.5 | CUW-005 Mover Archivos | 0.75d? | 2015-06-19 13:00 | 2015-06-22 10:00 | 139 |  |  |  | 2d | 0d | SEII - Web | 6h | 6 |  |
| 141 | 12.3.3.6 | CUW-006 Enviar Notificaciones | 0.5d? | 2015-06-22 10:00 | 2015-06-22 15:00 | 140 |  |  |  | 2d | 0d | SEII - Web | 4h | 4 |  |
| 142 | 12.3.3.7 | CUW-007: Cerrar Sesión | 0.25d? | 2015-06-22 15:00 | 2015-06-22 17:00 | 141 |  |  |  | 2d |  | SEII - Web | 2h | 2 |  |
| 143 | 12.4 | **Portal Web** | 11.25d? | 2015-06-23 08:00 | 2015-07-09 10:00 |  | 2015-06-10 15:00 | 2015-07-02 15:00 | 15d? | 2d | 0d |  | 154h | 154 | 120 |
| 144 | 12.4.1 | Creación proyecto base | 2d | 2015-06-23 08:00 | 2015-06-24 17:00 | 135 | 2015-06-10 15:00 | 2015-06-11 15:00 | 1d | 2d | 0d | SEII - Web | 16h | 16 | 8 |
| 145 | 12.4.2 | **CUW-001: Iniciar sesión, CUW-007: Cerrar Sesión** | 2d? | 2015-06-25 08:00 | 2015-06-26 17:00 | 144 | 2015-06-11 15:00 | 2015-06-12 10:00 | 0.5d | 3.25d | 0d |  | 16h | 16 | 4 |
| 146 | 12.4.2.1 | Consumir servicio Yanbal | 1d | 2015-06-25 08:00 | 2015-06-25 17:00 |  | 2015-06-12 10:00 | 2015-06-15 10:00 | 1d | 3.25d | 0d | SEI - Web | 8h | 8 | 8 |
| 147 | 12.4.2.2 | Validar Rol obtenido | 0.75d | 2015-06-26 08:00 | 2015-06-26 15:00 | 146 | 2015-06-15 10:00 | 2015-06-16 10:00 | 1d | 3.25d | 0d | SEI - Web | 6h | 6 | 8 |
| 148 | 12.4.2.3 | Cerrar Sesión | 0.25d? | 2015-06-26 15:00 | 2015-06-26 17:00 | 147 |  |  |  | 3.25d |  | SEI - Web | 2h | 2 |  |
| 149 | 12.4.3 | **CUW-002: Configurar tamaño de Carga y Descarga** | 2d? | 2015-06-30 08:00 | 2015-07-01 17:00 | 145 | 2015-06-16 10:00 | 2015-06-18 10:00 | 2d | 3.25d |  |  | 16h | 16 | 16 |
| 150 | 12.4.3.1 | Listar Limites de Carga y Descarga | 1d | 2015-06-30 08:00 | 2015-06-30 17:00 |  | 2015-06-18 10:00 | 2015-06-19 10:00 | 1d | 3.25d | 0d | SEI - Web | 8h | 8 | 8 |
| 151 | 12.4.3.2 | Editar Limite Carga y Descarga | 1d? | 2015-07-01 08:00 | 2015-07-01 17:00 | 150 |  |  |  | 3.25d | 0d | SEI - Web | 8h | 8 |  |
| 152 | 12.4.4 | **CUW-006 Enviar Notificaciones** | 1.5d? | 2015-07-02 08:00 | 2015-07-03 12:00 | 151 |  |  |  | 3.25d | 0d |  | 12h | 12 |  |
| 153 | 12.4.4.1 | Indicador de publicaciones pendientes | 0.25d? | 2015-07-02 08:00 | 2015-07-02 10:00 |  |  |  |  | 3.25d | 0d | SEI - Web | 2h | 2 |  |
| 154 | 12.4.4.2 | Validar mensaje | 0.5d? | 2015-07-02 10:00 | 2015-07-02 15:00 | 153 |  |  |  | 3.25d | 0d | SEI - Web | 4h | 4 |  |
| 155 | 12.4.4.3 | Enviar notificación push | 0.75d? | 2015-07-02 15:00 | 2015-07-03 12:00 | 154 |  |  |  | 3.25d |  | SEI - Web | 6h | 6 |  |
| 156 | 12.4.5 | **CUW-005 Mover Archivos** | 2.5d? | 2015-07-03 13:00 | 2015-07-07 17:00 | 152 |  |  |  | 3.25d |  |  | 20h | 20 |  |
| 157 | 12.4.5.1 | Listar Coleccion | 1d? | 2015-07-03 13:00 | 2015-07-06 12:00 |  |  |  |  | 3.25d | 0d | SEI - Web | 8h | 8 |  |
| 158 | 12.4.5.2 | Mover Archivo | 1.5d? | 2015-07-06 13:00 | 2015-07-07 17:00 | 157 |  |  |  | 3.25d |  | SEI - Web | 12h | 12 |  |

| ID | WBS | Task | Duration | Start | Finish | Predecessors | Total slack | Free slack | Resources | Work | Cost |
| --- | --- | --- | --- | --- | --- | --- | --- | --- | --- | --- | --- |
| 159 | 12.4.6 | **CUW-003: Gestionar Colecciones** | 3.25d? | 2015-06-25 08:00 | 2015-07-01 10:00 | 144 | 2d | 0d |  | 26h | 26 |
| 160 | 12.4.6.1 | Listar Coleccion | 0.75d? | 2015-06-25 08:00 | 2015-06-25 15:00 |  | 2d | 0d | SEII - Web | 6h | 6 |
| 161 | 12.4.6.2 | Buscar Coleccion | 0.5d? | 2015-06-25 15:00 | 2015-06-26 10:00 | 160 | 2d | 0d | SEII - Web | 4h | 4 |
| 162 | 12.4.6.3 | Crear Coleccion | 0.75d? | 2015-06-26 10:00 | 2015-06-26 17:00 | 161 | 2d | 0d | SEII - Web | 6h | 6 |
| 163 | 12.4.6.4 | Editar Coleccion | 0.75d? | 2015-06-30 08:00 | 2015-06-30 15:00 | 162 | 2d | 0d | SEII - Web | 6h | 6 |
| 164 | 12.4.6.5 | Eliminar Coleccion | 0.5d? | 2015-06-30 15:00 | 2015-07-01 10:00 | 163 | 2d |  | SEII - Web | 4h | 4 |
| 165 | 12.4.7 | **CUW-004: Gestionar Archivos** | 4.75d? | 2015-07-01 10:00 | 2015-07-07 17:00 | 159 | 2d | 0d |  | 38h | 38 |
| 166 | 12.4.7.1 | Listar Archivo | 0.75d? | 2015-07-01 10:00 | 2015-07-01 17:00 |  | 2d | 0d | SEII - Web | 6h | 6 |
| 167 | 12.4.7.2 | Crear Archivo | 0.75d? | 2015-07-02 08:00 | 2015-07-02 15:00 | 166 | 2d | 0d | SEII - Web | 6h | 6 |
| 168 | 12.4.7.3 | Editar Archivo | 0.75d? | 2015-07-02 15:00 | 2015-07-03 12:00 | 167 | 2d | 0d | SEII - Web | 6h | 6 |
| 169 | 12.4.7.4 | Cargar Archivo | 0.5d? | 2015-07-03 13:00 | 2015-07-03 17:00 | 168 | 2d | 0d | SEII - Web | 4h | 4 |
| 170 | 12.4.7.5 | Listar Roles y Paises | 1d? | 2015-07-06 08:00 | 2015-07-06 17:00 | 169 | 2d | 0d | SEII - Web | 8h | 8 |
| 171 | 12.4.7.6 | Validar limite de Carga de archivo | 0.25d? | 2015-07-07 08:00 | 2015-07-07 10:00 | 170 | 2d | 0d | SEII - Web | 2h | 2 |
| 172 | 12.4.7.7 | Eliminar Archivo | 0.75d? | 2015-07-07 10:00 | 2015-07-07 17:00 | 171 | 2d |  | SEII - Web | 6h | 6 |
| 173 | 12.4.8 | Pruebas de desarrollador | 0.75d? | 2015-07-08 08:00 | 2015-07-08 15:00 | 165 | 2d | 0d | SEII - Web | 6h | 6 |
| 174 | 12.4.9 | Revisión de pares | 0.5d? | 2015-07-08 15:00 | 2015-07-09 10:00 | 173 | 2d |  | SEII - Web | 4h | 4 |
| 175 | 12.5 | Pruebas integración | 2d? | 2015-07-09 10:00 | 2015-07-13 10:00 | 143 | 2d | 0d | SEII - Web | 16h | 16 |
| 176 | 12.6 | Configuración Ambientes de QA | 1.75d? | 2015-07-13 10:00 | 2015-07-14 17:00 | 175 | 2d |  | SEII - Web | 14h | 14 |
| 177 | 12.7 | Pruebas exploratorias | 3d? | 2015-07-09 10:00 | 2015-07-14 10:00 | 175SS | 2.75d |  | QAI - 1 | 24h | 24 |
| 178 | 13 | **Aseguramiento de la calidad** | 12d? | 2015-07-15 08:00 | 2015-08-03 17:00 | 63 | 2d |  |  | 452h | 452 |
| 179 | 13.1 | **Pruebas Funcionales** | 8d? | 2015-07-15 08:00 | 2015-07-24 17:00 |  | 2d | 0d |  | 320h | 320 |
| 180 | 13.1.1 | **Móvil** | 8d? | 2015-07-15 08:00 | 2015-07-24 17:00 |  | 2d | 0d |  | 240h | 240 |
| 181 | 13.1.1.1 | **Ejecución en Tablet** | 7d? | 2015-07-15 08:00 | 2015-07-23 17:00 |  | 3d |  |  | 112h | 112 |
| 182 | 13.1.1.1.1 | Ejecución en Samsung de 10.1" /SO Android 4.1.2 (Principal) | 3d? | 2015-07-15 08:00 | 2015-07-17 17:00 |  | 3d | 0d | QAI - 1; Tester - 1 | 48h | 48 |
| 183 | 13.1.1.1.2 | Ejecución en Lenovo 7" / SO Android 4.2.2 (Secundario) | 1d? | 2015-07-20 08:00 | 2015-07-20 17:00 | 182 | 3d | 0d | QAI - 1; Tester - 1 | 16h | 16 |
| 184 | 13.1.1.1.3 | Tablet AOC / SO: Android 4.1.1 (Secundario) | 1d? | 2015-07-21 08:00 | 2015-07-21 17:00 | 183 | 3d | 0d | QAI - 1; Tester - 1 | 16h | 16 |
| 185 | 13.1.1.1.4 | Ejecución en Ipad SO 7 (Secundario) | 1d? | 2015-07-22 08:00 | 2015-07-22 17:00 | 184 | 3d | 0d | QAI - 1; Tester - 1 | 16h | 16 |
| 186 | 13.1.1.1.5 | Ejecución en Ipad SO 8 (Secundario) | 1d? | 2015-07-23 08:00 | 2015-07-23 17:00 | 185 | 3d |  | QAI - 1; Tester - 1 | 16h | 16 |

| ID | WBS | Task | Duration | Start | Finish | Predecessors | Total slack | Free slack | Resources | Work | Cost |
| --- | --- | --- | --- | --- | --- | --- | --- | --- | --- | --- | --- |
| 187 | 13.1.1.2 | **Ejecución en SmartPhone** | 8d? | 2015-07-15 08:00 | 2015-07-24 17:00 |  | 2d |  |  | 128h | 128 |
| 188 | 13.1.1.2.1 | Nokia Lumia 520 / SO: Windows Phone 8.0 (Principal) | 3d? | 2015-07-15 08:00 | 2015-07-17 17:00 |  | 2d | 0d | QAI - 2; Tester - 2 | 48h | 48 |
| 189 | 13.1.1.2.2 | Ejecución en Samsung Galaxy Chat/SO -SO Android 4.1.2 (secundario) | 1d? | 2015-07-20 08:00 | 2015-07-20 17:00 | 188 | 2d | 0d | QAI - 2; Tester - 2 | 16h | 16 |
| 190 | 13.1.1.2.3 | Samsung Galaxy S III Mini / SO: Android 4.1.2 (Principal) | 1d? | 2015-07-21 08:00 | 2015-07-21 17:00 | 189 | 2d | 0d | QAI - 2; Tester - 2 | 16h | 16 |
| 191 | 13.1.1.2.4 | Ejecución en Iphone 4 / iSO 7 (Principal) | 1d? | 2015-07-22 08:00 | 2015-07-22 17:00 | 190 | 2d | 0d | QAI - 2; Tester - 2 | 16h | 16 |
| 192 | 13.1.1.2.5 | Ejecución en Iphone 5 / iSO 7 (Secundario) | 1d? | 2015-07-23 08:00 | 2015-07-23 17:00 | 191 | 2d | 0d | QAI - 2; Tester - 2 | 16h | 16 |
| 193 | 13.1.1.2.6 | Ejecución en Iphone 6 / iSO 7 (Secundario) | 1d? | 2015-07-24 08:00 | 2015-07-24 17:00 | 192 | 2d |  | QAI - 2; Tester - 2 | 16h | 16 |
| 194 | 13.1.2 | **Web** | 5d? | 2015-07-15 08:00 | 2015-07-21 17:00 |  | 5d | 0d |  | 80h | 80 |
| 195 | 13.1.2.1 | **Ejecución en Web Browser - IE9 (Principal)** | 3.75d? | 2015-07-15 08:00 | 2015-07-20 15:00 |  | 5d | 0d |  | 60h | 60 |
| 196 | 13.1.2.1.1 | Ejecución de casos de prueba funcionales | 2.25d? | 2015-07-15 08:00 | 2015-07-17 10:00 |  | 5d | 0d | QAI - 3; Tester - 3 | 36h | 36 |
| 197 | 13.1.2.1.2 | Reporte de errores | 0.5d? | 2015-07-17 10:00 | 2015-07-17 15:00 | 196 | 5d | 0d | QAI - 3; Tester - 3 | 8h | 8 |
| 198 | 13.1.2.1.3 | Verificación de errores | 0.5d? | 2015-07-17 15:00 | 2015-07-20 10:00 | 197 | 5d | 0d | QAI - 3; Tester - 3 | 8h | 8 |
| 199 | 13.1.2.1.4 | Pruebas exploratoria | 0.5d? | 2015-07-20 10:00 | 2015-07-20 15:00 | 198 | 5d |  | QAI - 3; Tester - 3 | 8h | 8 |
| 200 | 13.1.2.2 | Ejecución en Web Browser - Chrome 40 (Secundario) | 1.25d? | 2015-07-20 15:00 | 2015-07-21 17:00 | 195 | 5d |  | QAI - 3; Tester - 3 | 20h | 20 |
| 201 | 13.2 | **Soporte a Pruebas Funcionales (Resolución de Bugs)** | 8d? | 2015-07-15 08:00 | 2015-07-24 17:00 |  | 6d | 0d |  | 64h | 64 |
| 202 | 13.2.1 | Móvil | 8d | 2015-07-15 08:00 | 2015-07-24 17:00 | 180SS | 6d |  | SEII - Mobile [50%] | 32h | 32 |
| 203 | 13.2.2 | Web | 8d? | 2015-07-15 08:00 | 2015-07-24 17:00 | 194SS | 6d |  | SEII - Web [50%] | 32h | 32 |
| 204 | 13.3 | **Pruebas de Rendimiento** | 8.5d? | 2015-07-20 13:00 | 2015-08-03 17:00 |  | 2d |  |  | 68h | 68 |
| 205 | 13.3.1 | Creación de Scripts (Flujo: 6WS) | 4.5d? | 2015-07-20 13:00 | 2015-07-27 08:00 | 206SF | 6d |  | QAII | 36h | 36 |
| 206 | 13.3.2 | **Ejecución de Pruebas** | 2.5d? | 2015-07-27 08:00 | 2015-07-31 12:00 | 179 | 2d | 0d |  | 20h | 20 |
| 207 | 13.3.2.1 | Preparación del Ambiente | 0.75d? | 2015-07-27 08:00 | 2015-07-27 15:00 |  | 2d | 0d | QAII | 6h | 6 |
| 208 | 13.3.2.2 | Prueba de Ambiente | 0.25d? | 2015-07-27 15:00 | 2015-07-27 17:00 | 207 | 2d | 0d | QAII | 2h | 2 |
| 209 | 13.3.2.3 | Ejecución prueba de carga | 1.5d? | 2015-07-30 08:00 | 2015-07-31 12:00 | 208 | 2d |  | QAII | 12h | 12 |
| 210 | 13.3.3 | **Documentación** | 1.5d? | 2015-07-31 13:00 | 2015-08-03 17:00 | 206 | 2d |  |  | 12h | 12 |
| 211 | 13.3.3.1 | Parsing Logs | 0.5d? | 2015-07-31 13:00 | 2015-07-31 17:00 |  | 2d | 0d | QAII | 4h | 4 |
| 212 | 13.3.3.2 | Análisis y Notas Iniciales | 0.5d? | 2015-08-03 08:00 | 2015-08-03 12:00 | 211 | 2d | 0d | QAII | 4h | 4 |
| 213 | 13.3.3.3 | Creación de documento de resultados | 0.5d? | 2015-08-03 13:00 | 2015-08-03 17:00 | 212 | 2d |  | QAII | 4h | 4 |
| 214 | 14 | Soporte a Pruebas de Rendimiento | 4d | 2015-07-27 08:00 | 2015-08-03 17:00 | 206SS | 2d |  | SEII - Web [50%] | 16h | 16 |

| ID | WBS | Task | Duration | Start | Finish | Predecessors | Total slack | Resources | Work | Cost |
| --- | --- | --- | --- | --- | --- | --- | --- | --- | --- | --- |
| 215 | 15 | **Documentación** | 12d? | 2015-07-15 08:00 | 2015-08-03 17:00 | 201SS | 0d |  | 96h | 96 |
| 216 | 15.1 | **Móvil** | 10d? | 2015-07-15 08:00 | 2015-07-30 17:00 |  | 0d |  | 48h | 48 |
| 217 | 15.1.1 | Release notes | 1d? | 2015-07-15 08:00 | 2015-07-15 17:00 |  | 0d | SEII - Mobile [50%] | 4h | 4 |
| 218 | 15.1.2 | Manual de soporte | 3d? | 2015-07-16 08:00 | 2015-07-20 17:00 | 217 | 0d | SEII - Mobile [50%] | 12h | 12 |
| 219 | 15.1.3 | Manual de instalación | 4d? | 2015-07-21 08:00 | 2015-07-24 17:00 | 218 | 0d | SEII - Mobile [50%] | 16h | 16 |
| 220 | 15.1.4 | Manual de usuario | 2d? | 2015-07-27 08:00 | 2015-07-30 17:00 | 219 | 0d | SEII - Mobile | 16h | 16 |
| 221 | 15.2 | **Web** | 12d? | 2015-07-15 08:00 | 2015-08-03 17:00 |  | 0d |  | 48h | 48 |
| 222 | 15.2.1 | Release notes | 1d? | 2015-07-15 08:00 | 2015-07-15 17:00 |  | 0d | SEII - Web [50%] | 4h | 4 |
| 223 | 15.2.2 | Manual de soporte | 3d? | 2015-07-16 08:00 | 2015-07-20 17:00 | 222 | 0d | SEII - Web [50%] | 12h | 12 |
| 224 | 15.2.3 | Manual de instalación | 4d? | 2015-07-21 08:00 | 2015-07-24 17:00 | 223 | 0d | SEII - Web [50%] | 16h | 16 |
| 225 | 15.2.4 | Manual de usuario | 4d? | 2015-07-27 08:00 | 2015-08-03 17:00 | 224 | 0d | SEII - Web [50%] | 16h | 16 |
| 226 | 16 | **Generación de Binarios** | 3d? | 2015-07-31 08:00 | 2015-08-04 17:00 |  | 0d |  | 16h | 16 |
| 227 | 16.1 | Portal Web / Web Services | 1d? | 2015-08-04 08:00 | 2015-08-04 17:00 | 221 | 0d | SEII - Web | 8h | 8 |
| 228 | 16.2 | Aplicaciones Moviles (iOS, Android, Windows Phone) | 1d? | 2015-07-31 08:00 | 2015-07-31 17:00 | 216 | 0d | SEII - Mobile | 8h | 8 |
| 229 | 17 | **Despliegue Certificación Yanbal** | 3d? | 2015-08-03 08:00 | 2015-08-05 17:00 |  | 0d |  | 32h | 32 |
| 230 | 17.1 | Móvil | 3d? | 2015-08-03 08:00 | 2015-08-05 17:00 | 228 | 0d | SEII - Mobile | 24h | 24 |
| 231 | 17.2 | Web | 1d? | 2015-08-05 08:00 | 2015-08-05 17:00 | 227 | 0d | SEII - Web | 8h | 8 |
