# Yanbal PhoneGap - Web

Schedule from MS Project, 2015-04-14 to 2015-08-05, status date 2008-01-09, costs in $, A marks actual dates.
Avantica Technologies

## Calendars

- Standard: Mon-Fri 08:00-12:00, 13:00-17:00; Sat-Sun off. Exceptions (off unless hours are given): 2015-05-01 (Dia del Trabajo), 2015-06-29 (Día de San Pedro y San Pablo), 2015-07-28 to 2015-07-29 (Fiestas Patrias).

## Resources

| Resource | Rate |
| --- | --- |
| QAII | 1 |
| PM | 1 |
| UX | 1 |
| SEII - Mobile | 1 |
| SEII - Web | 1 |
| QAI - 1 | 1 |
| QAI - 2 | 1 |
| Tester - 1 | 1 |
| Tester - 2 | 1 |
| Yanbal | 1 |
| UX1 | 1 |
| QAI - 3 | 1 |
| Tester - 3 | 1 |
| ARQ | 1 |
| SEI - Web | 1 |
| QAII - 2 | 1 |
| QAII - 3 | 1 |
| 11 | 1 |

## Schedule

| ID | WBS | Task | Type | Duration | Start | Finish | Predecessors | Complete | Baseline start | Baseline finish | Baseline duration | Total slack | Free slack | Constraint | Resources | Work | Actual work | Cost | Baseline cost | Actual cost |
| --- | --- | --- | --- | --- | --- | --- | --- | --- | --- | --- | --- | --- | --- | --- | --- | --- | --- | --- | --- | --- |
| 1 | 1 | Gestión del proyecto | milestone | 0d | 2015-04-14 08:00 | 2015-04-14 08:00 |  |  |  |  |  | 92d |  |  | PM [40%] |  |  |  |  |  |
| 2 | 2 | Sesión de Inicio de Proyecto (KickOff) |  | 4h | 2015-04-14 08:00 A | 2015-04-14 12:00 A |  | 100% | 2015-04-14 08:00 | 2015-04-14 12:00 | 4h |  |  |  | SEII - Mobile; SEII - Web | 8h | 8h | 8 | 8 | 8 |
| 3 | 3 | **Análisis** |  | 15.25d? | 2015-04-14 13:00 A | 2015-05-06 15:00 A | 2 | 100% | 2015-04-14 13:00 | 2015-04-23 10:00 | 6.75d |  |  |  |  | 204h | 204h | 204 | 108 | 204 |
| 4 | 3.1 | Reuniones (124) |  | 2d? | 2015-04-14 13:00 A | 2015-04-16 12:00 A |  | 100% | 2015-04-14 13:00 | 2015-04-16 12:00 | 2d |  |  |  | SEII - Mobile; SEII - Web | 32h | 32h | 32 | 32 | 32 |
| 5 | 3.2 | Especificación de requerimientos funcionales (125) |  | 1d? | 2015-04-16 13:00 A | 2015-04-17 12:00 A | 4 | 100% | 2015-04-16 13:00 | 2015-04-16 17:00 | 0.5d |  |  |  | SEII - Mobile; SEII - Web | 16h | 16h | 16 | 8 | 16 |
| 6 | 3.3 | Creación de Wireframes (126) |  | 4d? | 2015-04-17 13:00 A | 2015-04-23 12:00 A | 5 | 100% | 2015-04-17 08:00 | 2015-04-20 17:00 | 2d |  |  |  | SEII - Mobile; SEII - Web | 64h | 64h | 64 | 32 | 64 |
| 7 | 3.4 | Especificación de casos de uso (127) |  | 3d? | 2015-04-23 13:00 A | 2015-04-28 12:00 A | 6 | 100% | 2015-04-21 08:00 | 2015-04-22 17:00 | 2d |  |  |  | SEII - Mobile; SEII - Web | 48h | 48h | 48 | 32 | 48 |
| 8 | 3.5 | Matriz de trazabilidad: requerimientos / casos de uso (128) |  | 0.25d? | 2015-04-28 13:00 A | 2015-04-28 15:00 A | 7 | 100% | 2015-04-23 08:00 | 2015-04-23 10:00 | 0.25d |  |  |  | SEII - Mobile; SEII - Web | 4h | 4h | 4 | 4 | 4 |
| 9 | 3.6 | Modificación de documentos (144) |  | 5d? | 2015-04-28 15:00 A | 2015-05-06 15:00 A | 8 | 100% |  |  |  |  |  |  | SEII - Mobile [50%]; SEII - Web [50%] | 40h | 40h | 40 |  | 40 |
| 10 | 4 | Fin Analisis |  | 1d? | 2015-05-14 08:00 | 2015-05-14 17:00 |  |  |  |  |  | 55.5d |  | start no earlier than 2015-05-14 08:00 |  |  |  |  |  |  |
| 11 | 5 | **Diseño Técnico** |  | 25d? | 2015-04-28 15:00 A | 2015-06-03 15:00 A |  | 100% | 2015-04-23 10:00 | 2015-05-06 10:00 | 8d |  |  |  |  | 360h | 360h | 360 | 128 | 360 |
| 12 | 5.1 | Reuniones (129) |  | 5d? | 2015-04-28 15:00 A | 2015-05-06 15:00 A | 9SS | 100% | 2015-04-23 10:00 | 2015-04-24 10:00 | 1d |  |  |  | SEII - Mobile [50%]; SEII - Web [50%] | 40h | 40h | 40 | 16 | 40 |
| 13 | 5.2 | Catalogo de servicios web a crear / consumir (137) |  | 1.5d? | 2015-05-06 15:00 A | 2015-05-08 10:00 A | 12 | 100% | 2015-05-04 10:00 | 2015-05-06 10:00 | 2d |  |  |  | SEII - Mobile; SEII - Web | 24h | 24h | 24 | 32 | 24 |
| 14 | 5.3 | Configurar ambiente de desarrollo (141 y 142) |  | 2d? | 2015-05-08 10:00 A | 2015-05-12 10:00 A | 13 | 100% |  |  |  |  |  |  | SEII - Mobile; SEII - Web | 32h | 32h | 32 |  | 32 |
| 15 | 5.4 | Revisión documentación Yanbal (143) |  | 0.25d? | 2015-05-12 10:00 A | 2015-05-12 12:00 A | 14 | 100% |  |  |  |  |  |  | SEII - Mobile; SEII - Web | 4h | 4h | 4 |  | 4 |
| 16 | 5.5 | Definir estándares de desarrollo (130 y 161) |  | 0.25d? | 2015-05-12 13:00 A | 2015-05-12 15:00 A | 15 | 100% | 2015-04-24 10:00 | 2015-04-24 15:00 | 0.5d |  |  |  | SEII - Mobile; SEII - Web | 4h | 4h | 4 | 8 | 4 |
| 17 | 5.6 | Requerimientos no funcionales (131 y 162) |  | 0.25d? | 2015-05-12 15:00 A | 2015-05-12 17:00 A | 16 | 100% | 2015-04-24 15:00 | 2015-04-27 10:00 | 0.5d |  |  |  | SEII - Mobile; SEII - Web | 4h | 4h | 4 | 8 | 4 |
| 18 | 5.7 | Arquitectura (132) |  | 1d? | 2015-05-13 08:00 A | 2015-05-13 17:00 A | 17 | 100% | 2015-04-27 10:00 | 2015-04-27 12:00 | 0.25d |  |  |  | SEII - Mobile; SEII - Web | 16h | 16h | 16 | 4 | 16 |
| 19 | 5.8 | Base de Datos (136 y 160) |  | 1d? | 2015-05-14 08:00 A | 2015-05-14 17:00 A | 18 | 100% | 2015-04-27 13:00 | 2015-04-27 17:00 | 0.5d |  |  |  | SEII - Mobile; SEII - Web | 16h | 16h | 16 | 8 | 16 |
| 20 | 5.9 | Especificación Técnica de la Solución (151 y 156) |  | 1.75d? | 2015-05-15 08:00 A | 2015-05-18 15:00 A | 19 | 100% | 2015-04-28 08:00 | 2015-04-28 10:00 | 0.25d |  |  |  | SEII - Mobile; SEII - Web | 28h | 28h | 28 | 4 | 28 |
| 21 | 5.10 | Diagrama de Clases (148 y 149) |  | 1d? | 2015-05-18 15:00 A | 2015-05-19 15:00 A | 20 | 100% | 2015-04-28 10:00 | 2015-04-30 10:00 | 2d |  |  |  | SEII - Mobile; SEII - Web | 16h | 16h | 16 | 32 | 16 |
| 22 | 5.11 | Mapa de Navegación (150 y 155) |  | 0.12d? | 2015-05-19 15:00 A | 2015-05-19 16:00 A | 21 | 100% | 2015-04-30 10:00 | 2015-05-04 10:00 | 1d |  |  |  | SEII - Mobile; SEII - Web | 2h | 2h | 2 | 16 | 2 |
| 23 | 5.12 | Perfiles del sistema (153 y 158) |  | 0.12d? | 2015-05-19 16:00 A | 2015-05-19 17:00 A | 22 | 100% |  |  |  |  |  |  | SEII - Mobile; SEII - Web | 2h | 2h | 2 |  | 2 |
| 24 | 5.13 | Especificación de pantallas (152 y 157) |  | 0.75d? | 2015-05-20 08:00 A | 2015-05-20 15:00 A | 23 | 100% |  |  |  |  |  |  | SEII - Mobile; SEII - Web | 12h | 12h | 12 |  | 12 |
| 25 | 5.14 | Modificación de documentos (205 y 206) |  | 10d? | 2015-05-20 15:00 A | 2015-06-03 15:00 A | 24 | 100% |  |  |  |  |  |  | SEII - Mobile; SEII - Web | 160h | 160h | 160 |  | 160 |
| 26 | 6 | Fin Diseño Tecnico | milestone | 0d | 2015-06-09 08:00 | 2015-06-09 08:00 |  |  |  |  |  | 38.5d |  | start no earlier than 2015-06-09 08:00 |  |  |  |  |  |  |
| 27 | 7 | Disponibilidad UX | milestone | 0d | 2015-04-29 08:00 | 2015-04-29 08:00 |  |  |  |  |  | 63d | 0d | start no earlier than 2015-04-29 08:00 |  |  |  |  |  |  |

| ID | WBS | Task | Type | Duration | Start | Finish | Predecessors | Baseline start | Baseline finish | Baseline duration | Total slack | Free slack | Constraint | Resources | Work | Cost | Baseline cost |
| --- | --- | --- | --- | --- | --- | --- | --- | --- | --- | --- | --- | --- | --- | --- | --- | --- | --- |
| 28 | 8 | **Diseño Gráfico** |  | 18d | 2015-04-29 08:00 | 2015-05-25 17:00 | 27 | 2015-04-21 08:00 | 2015-05-18 10:00 | 18.25d | 48.5d | 0d |  |  | 142h | 136 | 146 |
| 29 | 8.1 | **Preparación de propuesta** |  | 10.25d | 2015-04-29 08:00 | 2015-05-14 10:00 |  | 2015-04-21 08:00 | 2015-04-30 10:00 | 7.25d | 48.5d | 0d |  |  | 82h | 82 | 58 |
| 30 | 8.1.1 | Reuniones con el cliente (información inicial) |  | 0.75d | 2015-04-29 08:00 | 2015-04-29 15:00 |  | 2015-04-21 08:00 | 2015-04-21 15:00 | 0.75d | 48.5d | 0d |  | UX | 6h | 6 | 6 |
| 31 | 8.1.2 | Elaboración de propuesta grafica (2 Pág. Maestras) Móvil |  | 3.5d | 2015-04-29 15:00 | 2015-05-06 10:00 | 30 | 2015-04-21 15:00 | 2015-04-24 10:00 | 2.5d | 48.5d | 0d |  | UX | 28h | 28 | 20 |
| 32 | 8.1.3 | Elaboración de propuesta grafica (2 Pág. Maestras) Web |  | 3.5d | 2015-05-06 10:00 | 2015-05-11 15:00 | 31 | 2015-04-24 10:00 | 2015-04-28 12:00 | 2.25d | 48.5d | 0d |  | UX | 28h | 28 | 18 |
| 33 | 8.1.4 | Elaboración de assets y cortes de imágenes |  | 2.5d | 2015-05-11 15:00 | 2015-05-14 10:00 | 32 | 2015-04-28 13:00 | 2015-04-30 10:00 | 1.75d | 48.5d |  |  | UX | 20h | 20 | 14 |
| 34 | 8.2 | **Preparación de maquetas y assets** |  | 7.75d | 2015-05-14 10:00 | 2015-05-25 17:00 | 29 | 2015-04-30 10:00 | 2015-05-18 10:00 | 11d | 48.5d |  |  |  | 60h | 54 | 88 |
| 35 | 8.2.1 | **Kiosko Móvil** |  | 4.75d | 2015-05-14 10:00 | 2015-05-20 17:00 |  | 2015-05-13 10:00 | 2015-05-18 10:00 | 3d | 48.5d | 0d |  |  | 36h | 30 | 24 |
| 36 | 8.2.1.1 | Login |  | 0.75d | 2015-05-14 10:00 | 2015-05-14 17:00 |  | 2015-05-13 10:00 | 2015-05-13 17:00 | 0.75d | 48.5d | 0d |  | UX | 6h | 6 | 6 |
| 37 | 8.2.1.2 | Página Principal |  | 0.75d | 2015-05-15 08:00 | 2015-05-15 15:00 | 36 | 2015-05-14 08:00 | 2015-05-14 15:00 | 0.75d | 48.5d | 0d |  | UX | 6h | 6 | 6 |
| 38 | 8.2.1.3 | Ver Colección |  | 0.75d | 2015-05-15 15:00 | 2015-05-18 12:00 | 37 | 2015-05-14 15:00 | 2015-05-15 12:00 | 0.75d | 48.5d | 0d |  | UX | 6h | 6 | 6 |
| 39 | 8.2.1.4 | Notificaciones |  | 0.75d | 2015-05-18 13:00 | 2015-05-19 10:00 | 38 | 2015-05-15 13:00 | 2015-05-18 10:00 | 0.75d | 48.5d | 0d |  | UX | 6h | 6 | 6 |
| 40 | 8.2.1.5 | Configuración |  | 0.75d | 2015-05-19 10:00 | 2015-05-19 17:00 | 39 |  |  |  | 48.5d | 0d |  | UX | 6h | 6 |  |
| 41 | 8.2.1.6 | Ver/Descargar/Eliminar Archivo |  | 1d | 2015-05-20 08:00 | 2015-05-20 17:00 | 40 |  |  |  | 48.5d |  |  |  | 6h |  |  |
| 42 | 8.2.2 | **Kiosko Web** |  | 3d | 2015-05-21 08:00 | 2015-05-25 17:00 | 35 | 2015-04-30 10:00 | 2015-05-13 10:00 | 8d | 48.5d |  |  |  | 24h | 24 | 64 |
| 43 | 8.2.2.1 | Login |  | 0.38d | 2015-05-21 08:00 | 2015-05-21 11:00 |  | 2015-04-30 10:00 | 2015-05-04 10:00 | 1d | 48.5d | 0d |  | UX | 3h | 3 | 8 |
| 44 | 8.2.2.2 | Pantalla Principal |  | 0.38d | 2015-05-21 11:00 | 2015-05-21 15:00 | 43 |  |  |  | 48.5d | 0d |  | UX | 3h | 3 |  |
| 45 | 8.2.2.3 | Administración de Colecciones |  | 0.38d | 2015-05-21 15:00 | 2015-05-22 09:00 | 44 | 2015-05-08 10:00 | 2015-05-08 17:00 | 0.75d | 48.5d | 0d |  | UX | 3h | 3 | 6 |
| 46 | 8.2.2.4 | Crear/Editar Colecciones |  | 0.38d | 2015-05-22 09:00 | 2015-05-22 12:00 | 45 |  |  |  | 48.5d | 0d |  | UX | 3h | 3 |  |
| 47 | 8.2.2.5 | Cargar Archivos |  | 0.38d | 2015-05-22 13:00 | 2015-05-22 16:00 | 46 |  |  |  | 48.5d | 0d |  | UX | 3h | 3 |  |
| 48 | 8.2.2.6 | Publicar Archivos |  | 0.38d | 2015-05-22 16:00 | 2015-05-25 10:00 | 47 |  |  |  | 48.5d | 0d |  | UX | 3h | 3 |  |
| 49 | 8.2.2.7 | Mover Archivos |  | 0.38d | 2015-05-25 10:00 | 2015-05-25 14:00 | 48 |  |  |  | 48.5d | 0d |  | UX | 3h | 3 |  |
| 50 | 8.2.2.8 | Configuración de límites de carga y descarga |  | 0.38d | 2015-05-25 14:00 | 2015-05-25 17:00 | 49 | 2015-05-11 08:00 | 2015-05-11 15:00 | 0.75d | 48.5d |  |  | UX | 3h | 3 | 6 |
| 51 | 9 | Fin Diseño Gráfico | milestone | 0d | 2015-05-25 17:00 | 2015-05-25 17:00 | 28 |  |  |  | 48.5d |  |  |  |  |  |  |
| 52 | 10 | Disponibilidad QA | milestone | 0d | 2015-05-18 08:00 | 2015-05-18 08:00 |  |  |  |  | 69d |  | start no earlier than 2015-05-18 08:00 |  |  |  |  |

| ID | WBS | Task | Duration | Start | Finish | Predecessors | Baseline start | Baseline finish | Baseline duration | Total slack | Free slack | Constraint | Resources | Work | Cost | Baseline cost |
| --- | --- | --- | --- | --- | --- | --- | --- | --- | --- | --- | --- | --- | --- | --- | --- | --- |
| 53 | 11 | **Planificación y Especificación de Pruebas** | 14d | 2015-06-08 08:00 | 2015-06-25 17:00 |  |  |  |  | 25.5d |  |  |  | 128h | 128 |  |
| 54 | 11.1 | Plan de Pruebas Funcionales y de Rendimiento (163) | 3.5d | 2015-06-08 08:00 | 2015-06-11 17:00 |  |  |  |  | 25.5d | 0d | start no earlier than 2015-06-08 08:00 | QAII - 2 | 16h | 16 |  |
| 55 | 11.2 | LCP - Listado de Casos de Prueba (164) | 2d | 2015-06-12 08:00 | 2015-06-15 17:00 | 54 |  |  |  | 40d | 0d |  | QAI - 1 | 16h | 16 |  |
| 56 | 11.3 | ECP - Especificación de Casos de Prueba (165) | 8d | 2015-06-16 08:00 | 2015-06-25 17:00 | 55 |  |  |  | 40d |  |  | QAI - 1 | 64h | 64 |  |
| 57 | 11.4 | Actualización de documentos de pruebas (237) | 3d | 2015-06-10 08:00 | 2015-06-12 17:00 |  |  |  |  | 34.5d |  | finish no earlier than 2015-06-12 17:00 | QAII - 3 | 24h | 24 |  |
| 58 | 11.5 | Pruebas No Funcionales (236) | 1d | 2015-06-15 08:00 | 2015-06-15 17:00 |  |  |  |  | 33.5d |  | start no earlier than 2015-06-15 08:00 | QAII - 3 | 8h | 8 |  |
| 59 | 12 | **Desarrollo** | 26.75d? | 2015-06-03 15:00 | 2015-07-13 12:00 | 11 | 2015-05-06 10:00 | 2015-07-02 15:00 | 40.5d? | 3d | 0d |  | 11 | 782h | 778 | 548 |
| 60 | 12.1 | **HTML** | 9.75d? | 2015-06-03 15:00 | 2015-06-17 12:00 |  | 2015-05-07 15:00 | 2015-05-13 15:00 | 4d? | 3d |  |  |  | 78h | 78 | 32 |
| 61 | 12.1.1 | **Estructura base HTML** | 2d? | 2015-06-03 15:00 | 2015-06-05 15:00 |  |  |  |  | 3d | 0d |  |  | 16h | 16 |  |
| 62 | 12.1.1.1 | Móvil (166) | 1d? | 2015-06-03 15:00 | 2015-06-04 15:00 |  |  |  |  | 3d | 0d |  | SEII - Mobile | 8h | 8 |  |
| 63 | 12.1.1.2 | Web (167) | 1d? | 2015-06-04 15:00 | 2015-06-05 15:00 | 62 |  |  |  | 3d |  |  | SEII - Mobile | 8h | 8 |  |
| 64 | 12.1.2 | **Páginas Móvil** | 3.75d? | 2015-06-05 15:00 | 2015-06-11 12:00 | 61 |  |  |  | 3d | 0d |  |  | 30h | 30 |  |
| 65 | 12.1.2.1 | Inicio Session (169) | 1d? | 2015-06-05 15:00 | 2015-06-08 15:00 |  |  |  |  | 3d | 0d |  | SEII - Mobile | 8h | 8 |  |
| 66 | 12.1.2.2 | Pagina Principal (170) | 0.25d? | 2015-06-08 15:00 | 2015-06-08 17:00 | 65 |  |  |  | 3d | 0d |  | SEII - Mobile | 2h | 2 |  |
| 67 | 12.1.2.3 | Coleccion seleccionada (171) | 0.25d? | 2015-06-09 08:00 | 2015-06-09 10:00 | 66 |  |  |  | 3d | 0d |  | SEII - Mobile | 2h | 2 |  |
| 68 | 12.1.2.4 | Opciones del archivo (172) | 0.25d? | 2015-06-09 10:00 | 2015-06-09 12:00 | 67 |  |  |  | 3d | 0d |  | SEII - Mobile | 2h | 2 |  |
| 69 | 12.1.2.5 | Página de configuración (173) | 0.25d? | 2015-06-09 13:00 | 2015-06-09 15:00 | 68 |  |  |  | 3d | 0d |  | SEII - Mobile | 2h | 2 |  |
| 70 | 12.1.2.6 | Panel de notificaciones (174) | 0.75d? | 2015-06-09 15:00 | 2015-06-10 12:00 | 69 |  |  |  | 3d | 0d |  | SEII - Mobile | 6h | 6 |  |
| 71 | 12.1.2.7 | Sincronización (175) | 0.5d? | 2015-06-10 13:00 | 2015-06-10 17:00 | 70 |  |  |  | 3d | 0d |  | SEII - Mobile | 4h | 4 |  |
| 72 | 12.1.2.8 | Revisión/Corrección con UX (176) | 0.5d? | 2015-06-11 08:00 | 2015-06-11 12:00 | 71 |  |  |  | 3d |  |  | SEII - Mobile | 4h | 4 |  |
| 73 | 12.1.3 | **Páginas Web** | 4d? | 2015-06-11 13:00 | 2015-06-17 12:00 | 64 |  |  |  | 3d | 0d |  |  | 32h | 32 |  |
| 74 | 12.1.3.1 | Página Principal | 0.5d? | 2015-06-11 13:00 | 2015-06-11 17:00 |  |  |  |  | 3d | 0d |  | SEII - Mobile | 4h | 4 |  |
| 75 | 12.1.3.2 | Inicio Session | 0.5d? | 2015-06-12 08:00 | 2015-06-12 12:00 | 74 |  |  |  | 3d | 0d |  | SEII - Mobile | 4h | 4 |  |
| 76 | 12.1.3.3 | Mantener Colecciones | 1.5d? | 2015-06-12 13:00 | 2015-06-15 17:00 | 75 |  |  |  | 3d | 0d |  | SEII - Mobile | 12h | 12 |  |
| 77 | 12.1.3.4 | Configurar limite de descarga | 0.5d? | 2015-06-16 08:00 | 2015-06-16 12:00 | 76 |  |  |  | 3d | 0d |  | SEII - Mobile | 4h | 4 |  |
| 78 | 12.1.3.5 | Revisión/Corrección con UX | 1d? | 2015-06-16 13:00 | 2015-06-17 12:00 | 77 |  |  |  | 3d |  |  | SEII - Mobile | 8h | 8 |  |
| 79 | 12.2 | Crear proyecto web angular | 2d? | 2015-06-17 13:00 | 2015-06-19 12:00 | 73 |  |  |  | 3d | 0d |  | SEII - Mobile | 16h | 16 |  |

| ID | WBS | Task | Duration | Start | Finish | Predecessors | Baseline start | Baseline finish | Baseline duration | Total slack | Free slack | Resources | Work | Cost | Baseline cost |
| --- | --- | --- | --- | --- | --- | --- | --- | --- | --- | --- | --- | --- | --- | --- | --- |
| 80 | 12.3 | **PhoneGap** | 15d | 2015-06-19 13:00 | 2015-07-13 12:00 | 79 | 2015-05-13 15:00 | 2015-06-12 10:00 | 21.5d? | 3d |  |  | 120h | 120 | 172 |
| 81 | 12.3.1 | Creación proyecto base | 1d | 2015-06-19 13:00 | 2015-06-22 12:00 |  |  |  |  | 3d | 0d | SEII - Mobile | 8h | 8 |  |
| 82 | 12.3.2 | Revisión de pares | 0.5d | 2015-06-22 13:00 | 2015-06-22 17:00 | 81 |  |  |  | 3d | 0d | SEII - Mobile | 4h | 4 |  |
| 83 | 12.3.3 | Creación archivo de propiedades | 0.5d | 2015-06-23 08:00 | 2015-06-23 12:00 | 82 |  |  |  | 3d | 0d | SEII - Mobile | 4h | 4 |  |
| 84 | 12.3.4 | **CUM-001: Autenticar usuario, CUM-011: Cerrar Sesión** | 2.5d | 2015-06-23 13:00 | 2015-06-25 17:00 | 83 |  |  |  | 3d | 0d |  | 20h | 20 |  |
| 85 | 12.3.4.1 | Consumir servicio | 0.25d | 2015-06-23 13:00 | 2015-06-23 15:00 |  |  |  |  | 3d | 0d | SEII - Mobile | 2h | 2 |  |
| 86 | 12.3.4.2 | **Crear BD local en el móvil** | 1.5d | 2015-06-23 15:00 | 2015-06-25 10:00 | 85 |  |  |  | 3d |  |  | 12h | 12 |  |
| 87 | 12.3.4.2.1 | plugin sqlite | 0.5d | 2015-06-23 15:00 | 2015-06-24 10:00 |  |  |  |  | 3d | 0d | SEII - Mobile | 4h | 4 |  |
| 88 | 12.3.4.2.2 | creación de estructura base | 0.5d | 2015-06-24 10:00 | 2015-06-24 15:00 | 87 |  |  |  | 3d | 0d | SEII - Mobile | 4h | 4 |  |
| 89 | 12.3.4.2.3 | llenar paises con carga inicial / consumir servicio web de paises | 0.5d | 2015-06-24 15:00 | 2015-06-25 10:00 | 88 |  |  |  | 3d | 0d | SEII - Mobile | 4h | 4 |  |
| 90 | 12.3.4.3 | Guardar sesión | 0.5d | 2015-06-25 10:00 | 2015-06-25 15:00 | 89 |  |  |  | 3d | 0d | SEII - Mobile | 4h | 4 |  |
| 91 | 12.3.4.4 | Cerrar sesión | 0.25d | 2015-06-25 15:00 | 2015-06-25 17:00 | 90 |  |  |  | 3d |  | SEII - Mobile | 2h | 2 |  |
| 92 | 12.3.5 | **CUM-002: Sincronizar Datos, CUM-003: Mostrar Nuevo Contenido, CUM-008: Mostrar Notificación Nativa** | 4d | 2015-06-26 08:00 | 2015-07-02 17:00 | 84 |  |  |  | 3d | 0d |  | 32h | 32 |  |
| 93 | 12.3.5.1 | Consumir servicio (sincronización al inicio, primer plano y a demanda) | 0.75d | 2015-06-26 08:00 | 2015-06-26 15:00 |  |  |  |  | 3d | 0d | SEII - Mobile | 6h | 6 |  |
| 94 | 12.3.5.2 | Guardar datos | 1d | 2015-06-26 15:00 | 2015-06-30 15:00 | 93 |  |  |  | 3d | 0d | SEII - Mobile | 8h | 8 |  |
| 95 | 12.3.5.3 | Actualizar panel de notificacion | 0.5d | 2015-06-30 15:00 | 2015-07-01 10:00 | 94 |  |  |  | 3d | 0d | SEII - Mobile | 4h | 4 |  |
| 96 | 12.3.5.4 | Actualizar panel de configuración (fecha ultima sincronización) | 0.25d | 2015-07-01 10:00 | 2015-07-01 12:00 | 95 |  |  |  | 3d | 0d | SEII - Mobile | 2h | 2 |  |
| 97 | 12.3.5.5 | Configuración para notificaciones push (panel nativo) | 1d | 2015-07-01 13:00 | 2015-07-02 12:00 | 96 |  |  |  | 3d | 0d | SEII - Mobile | 8h | 8 |  |
| 98 | 12.3.5.6 | Mensaje confirmación éxito/error sincronización por conexión de internet | 0.5d | 2015-07-02 13:00 | 2015-07-02 17:00 | 97 |  |  |  | 3d |  | SEII - Mobile | 4h | 4 |  |
| 99 | 12.3.6 | **CUM-004: Navegar por Colecciones y Archivos, CUM-005: Ver Archivos** | 2.25d | 2015-07-03 08:00 | 2015-07-07 10:00 | 92 |  |  |  | 3d | 0d |  | 18h | 18 |  |
| 100 | 12.3.6.1 | Manejo de nagevabilidad | 0.5d | 2015-07-03 08:00 | 2015-07-03 12:00 |  |  |  |  | 3d | 0d | SEII - Mobile | 4h | 4 |  |
| 101 | 12.3.6.2 | Abrir archivo | 1d | 2015-07-03 13:00 | 2015-07-06 12:00 | 100 |  |  |  | 3d | 0d | SEII - Mobile | 8h | 8 |  |
| 102 | 12.3.6.3 | Actualizar panel de notificacion para eliminar visto | 0.5d | 2015-07-06 13:00 | 2015-07-06 17:00 | 101 |  |  |  | 3d | 0d | SEII - Mobile | 4h | 4 |  |
| 103 | 12.3.6.4 | Mostrar mensaje de confirmación para descargar con red movil (validacion peso máximo) | 0.25d | 2015-07-07 08:00 | 2015-07-07 10:00 | 102 |  |  |  | 3d |  | SEII - Mobile | 2h | 2 |  |

Notes:
- 86: plugin sqlite / creación de estructura base / llenar paises con carga inicial / consumir servicio web de paises

| ID | WBS | Task | Type | Duration | Start | Finish | Predecessors | Baseline start | Baseline finish | Baseline duration | Total slack | Free slack | Resources | Work | Cost | Baseline cost |
| --- | --- | --- | --- | --- | --- | --- | --- | --- | --- | --- | --- | --- | --- | --- | --- | --- |
| 104 | 12.3.7 | **CUM-006: Descargar Archivo, CUM-010: Permitir uso de red móvil en descarga** |  | 0.75d | 2015-07-07 10:00 | 2015-07-07 17:00 | 99 |  |  |  | 3d | 0d |  | 6h | 6 |  |
| 105 | 12.3.7.1 | Guardar archivo |  | 0.25d | 2015-07-07 10:00 | 2015-07-07 12:00 |  |  |  |  | 3d | 0d | SEII - Mobile | 2h | 2 |  |
| 106 | 12.3.7.2 | Marcar contenido como descargado |  | 0.25d | 2015-07-07 13:00 | 2015-07-07 15:00 | 105 |  |  |  | 3d | 0d | SEII - Mobile | 2h | 2 |  |
| 107 | 12.3.7.3 | Mostrar mensaje de confirmación para descargar con red movil (validacion umbral) |  | 0.25d | 2015-07-07 15:00 | 2015-07-07 17:00 | 106 |  |  |  | 3d |  | SEII - Mobile | 2h | 2 |  |
| 108 | 12.3.8 | **CUM-007: Eliminar Archivos** |  | 0.5d | 2015-07-08 08:00 | 2015-07-08 12:00 | 104 |  |  |  | 3d | 0d |  | 4h | 4 |  |
| 109 | 12.3.8.1 | Elimnar datos de BD y file system local |  | 0.5d | 2015-07-08 08:00 | 2015-07-08 12:00 |  |  |  |  | 3d |  | SEII - Mobile | 4h | 4 |  |
| 110 | 12.3.9 | **CUM-009: Enviar métricas** |  | 1.5d | 2015-07-08 13:00 | 2015-07-09 17:00 | 108 |  |  |  | 3d | 0d |  | 12h | 12 |  |
| 111 | 12.3.9.1 | Enviar bitacora |  | 0.5d | 2015-07-08 13:00 | 2015-07-08 17:00 |  |  |  |  | 3d | 0d | SEII - Mobile | 4h | 4 |  |
| 112 | 12.3.9.2 | Configurar google analytics |  | 0.5d | 2015-07-09 08:00 | 2015-07-09 12:00 | 111 |  |  |  | 3d | 0d | SEII - Mobile | 4h | 4 |  |
| 113 | 12.3.9.3 | Colocar url de google analytics en las acciones |  | 0.5d | 2015-07-09 13:00 | 2015-07-09 17:00 | 112 |  |  |  | 3d |  | SEII - Mobile | 4h | 4 |  |
| 114 | 12.3.10 | Pruebas desarrollador |  | 1d | 2015-07-10 08:00 | 2015-07-10 17:00 | 110 |  |  |  | 3d | 0d | SEII - Mobile | 8h | 8 |  |
| 115 | 12.3.11 | Revisión de pares |  | 0.5d | 2015-07-13 08:00 | 2015-07-13 12:00 | 114 |  |  |  | 3d |  | SEII - Mobile | 4h | 4 |  |
| 116 | 12.4 | **Web Services** |  | 11.25d? | 2015-06-03 15:00 | 2015-06-18 17:00 |  | 2015-05-07 15:00 | 2015-06-10 15:00 | 24d? | 18.5d |  |  | 166h | 166 | 192 |
| 117 | 12.4.1 | **Componentes Comunes** |  | 0d? | 2015-06-03 15:00 | 2015-06-03 15:00 |  |  |  |  | 18.5d | 0d |  |  |  |  |
| 118 | 12.4.1.1 | Creación servicio web y estructura base (184) | milestone | 0d? | 2015-06-03 15:00 | 2015-06-03 15:00 |  | 2015-05-11 15:00 | 2015-05-13 15:00 | 2d | 18.5d | 0d | SEII - Web [212.5%] |  |  | 16 |
| 119 | 12.4.1.2 | Implementación utilitarios base - parseo, conversión (186) | milestone | 0d? | 2015-06-03 15:00 | 2015-06-03 15:00 | 118 | 2015-05-18 15:00 | 2015-05-20 15:00 | 2d | 18.5d | 0d | SEII - Web [162.5%] |  |  | 16 |
| 120 | 12.4.1.3 | WS Movil - EnviarBitacora (185) | milestone | 0d? | 2015-06-03 15:00 | 2015-06-03 15:00 | 119 | 2015-05-13 15:00 | 2015-05-18 15:00 | 3d | 18.5d | 0d | SEII - Web [50%] |  |  | 24 |
| 121 | 12.4.1.4 | Log Errores | milestone | 0d? | 2015-06-03 15:00 | 2015-06-03 15:00 | 120 |  |  |  | 18.5d |  | SEII - Web [50%] |  |  |  |
| 122 | 12.4.2 | **Móvil** |  | 3.5d | 2015-06-03 15:00 | 2015-06-09 10:00 | 117 |  |  |  | 18.5d | 0d |  | 28h | 28 |  |
| 123 | 12.4.2.1 | ObtenerColeccionesArchivos |  | 2d | 2015-06-03 15:00 | 2015-06-05 15:00 |  | 2015-05-25 15:00 | 2015-05-26 15:00 | 1d | 18.5d | 0d | SEII - Web | 16h | 16 | 8 |
| 124 | 12.4.2.2 | Registrar Sesión |  | 1d | 2015-06-05 15:00 | 2015-06-08 15:00 | 123 | 2015-05-22 15:00 | 2015-05-25 15:00 | 1d | 18.5d | 0d | SEII - Web | 8h | 8 | 8 |
| 125 | 12.4.2.3 | CerrarSesión |  | 0.5d | 2015-06-08 15:00 | 2015-06-09 10:00 | 124 |  |  |  | 18.5d |  | SEII - Web | 4h | 4 |  |
| 126 | 12.4.3 | **Web** |  | 10.25d | 2015-06-03 15:00 | 2015-06-17 17:00 |  |  |  |  | 18.5d |  |  | 122h | 122 |  |
| 127 | 12.4.3.1 | RegistrarSesion |  | 0.5d | 2015-06-09 10:00 | 2015-06-09 15:00 | 122 |  |  |  | 18.5d | 0d | SEII - Web | 4h | 4 |  |
| 128 | 12.4.3.2 | InsertarArchivo |  | 1.5d | 2015-06-09 15:00 | 2015-06-11 10:00 | 127 |  |  |  | 18.5d | 0d | SEII - Web | 12h | 12 |  |
| 129 | 12.4.3.3 | EliminarArchivo |  | 1.5d | 2015-06-11 10:00 | 2015-06-12 15:00 | 128 |  |  |  | 18.5d | 0d | SEII - Web | 12h | 12 |  |

| ID | WBS | Task | Duration | Start | Finish | Predecessors | Total slack | Free slack | Resources | Work | Cost |
| --- | --- | --- | --- | --- | --- | --- | --- | --- | --- | --- | --- |
| 130 | 12.4.3.4 | **EnviarNotificacionPush** | 3.25d | 2015-06-12 15:00 | 2015-06-17 17:00 | 129 | 18.5d | 0d |  | 26h | 26 |
| 131 | 12.4.3.4.1 | Implementar módulo de notificaciones | 1d | 2015-06-12 15:00 | 2015-06-15 15:00 |  | 18.5d | 0d | SEII - Web | 8h | 8 |
| 132 | 12.4.3.4.2 | Android | 0.75d | 2015-06-15 15:00 | 2015-06-16 12:00 | 131 | 18.5d | 0d | SEII - Web | 6h | 6 |
| 133 | 12.4.3.4.3 | iOS | 0.75d | 2015-06-16 13:00 | 2015-06-17 10:00 | 132 | 33d | 0d | SEII - Web | 6h | 6 |
| 134 | 12.4.3.4.4 | Windows Phone | 0.75d | 2015-06-17 10:00 | 2015-06-17 17:00 | 133 | 18.5d |  | SEII - Web | 6h | 6 |
| 135 | 12.4.3.5 | ListarUmbrales | 0.5d | 2015-06-03 15:00 | 2015-06-04 10:00 | 117 | 20.25d | 0d | SEI - Web | 4h | 4 |
| 136 | 12.4.3.6 | ObtenerUmbral | 0.5d | 2015-06-04 10:00 | 2015-06-04 15:00 | 135 | 20.25d | 0d | SEI - Web | 4h | 4 |
| 137 | 12.4.3.7 | ActualizarUmbral | 0.5d | 2015-06-04 15:00 | 2015-06-05 10:00 | 136 | 20.25d | 0d | SEI - Web | 4h | 4 |
| 138 | 12.4.3.8 | ListarColecciones | 0.5d | 2015-06-05 10:00 | 2015-06-05 15:00 | 137 | 20.25d | 0d | SEI - Web | 4h | 4 |
| 139 | 12.4.3.9 | ListarArchivos | 0.5d | 2015-06-05 15:00 | 2015-06-08 10:00 | 138 | 20.25d | 0d | SEI - Web | 4h | 4 |
| 140 | 12.4.3.10 | ObtenerColeccion | 0.5d | 2015-06-08 10:00 | 2015-06-08 15:00 | 139 | 20.25d | 0d | SEI - Web | 4h | 4 |
| 141 | 12.4.3.11 | InsertarColeccion | 0.5d | 2015-06-08 15:00 | 2015-06-09 10:00 | 140 | 20.25d | 0d | SEI - Web | 4h | 4 |
| 142 | 12.4.3.12 | ActualizarColeccion | 0.5d | 2015-06-09 10:00 | 2015-06-09 15:00 | 141 | 20.25d | 0d | SEI - Web | 4h | 4 |
| 143 | 12.4.3.13 | EliminarColeccion | 0.5d | 2015-06-09 15:00 | 2015-06-10 10:00 | 142 | 20.25d | 0d | SEI - Web | 4h | 4 |
| 144 | 12.4.3.14 | ObtenerArchivo | 0.5d | 2015-06-10 10:00 | 2015-06-10 15:00 | 143 | 20.25d | 0d | SEI - Web | 4h | 4 |
| 145 | 12.4.3.15 | ActualizarArchivo | 0.5d | 2015-06-10 15:00 | 2015-06-11 10:00 | 144 | 20.25d | 0d | SEI - Web | 4h | 4 |
| 146 | 12.4.3.16 | ObtenerRutaOrigen | 0.5d | 2015-06-11 10:00 | 2015-06-11 15:00 | 145 | 20.25d | 0d | SEI - Web | 4h | 4 |
| 147 | 12.4.3.17 | ListarRoles | 0.75d | 2015-06-11 15:00 | 2015-06-12 12:00 | 146 | 20.25d | 0d | SEI - Web | 6h | 6 |
| 148 | 12.4.3.18 | ListarPaises | 0.75d | 2015-06-12 13:00 | 2015-06-15 10:00 | 147 | 34.75d | 0d | SEI - Web | 6h | 6 |
| 149 | 12.4.3.19 | MoverArchivo | 0.5d | 2015-06-15 10:00 | 2015-06-15 15:00 | 148 | 20.25d | 0d | SEI - Web | 4h | 4 |
| 150 | 12.4.3.20 | CerrarSesion | 0.5d | 2015-06-15 15:00 | 2015-06-16 10:00 | 149 | 20.25d | 0d | SEI - Web | 4h | 4 |
| 151 | 12.4.4 | Pruebas desarrollador 1 | 0.5d | 2015-06-16 10:00 | 2015-06-16 15:00 | 150 | 20.25d | 0d | SEI - Web | 4h | 4 |
| 152 | 12.4.5 | Revisión de pares 1 | 0.5d | 2015-06-16 15:00 | 2015-06-17 10:00 | 151 | 20.25d |  | SEI - Web | 4h | 4 |
| 153 | 12.4.6 | Pruebas desarrollador 2 | 0.5d | 2015-06-18 08:00 | 2015-06-18 12:00 | 130 | 18.5d | 0d | SEII - Web | 4h | 4 |
| 154 | 12.4.7 | Revisión de pares 2 | 0.5d | 2015-06-18 13:00 | 2015-06-18 17:00 | 153 | 18.5d |  | SEII - Web | 4h | 4 |

| ID | WBS | Task | Duration | Start | Finish | Predecessors | Baseline start | Baseline finish | Baseline duration | Total slack | Free slack | Resources | Work | Cost | Baseline cost |
| --- | --- | --- | --- | --- | --- | --- | --- | --- | --- | --- | --- | --- | --- | --- | --- |
| 155 | 12.5 | **Portal Web** | 15d? | 2015-06-03 15:00 | 2015-06-24 15:00 |  | 2015-06-10 15:00 | 2015-07-02 15:00 | 15d? | 10d | 0d |  | 126h | 122 | 120 |
| 156 | 12.5.1 | **CUW-001: Iniciar sesión, CUW-007: Cerrar Sesión** | 2.5d? | 2015-06-03 15:00 | 2015-06-08 10:00 |  | 2015-06-11 15:00 | 2015-06-12 10:00 | 0.5d | 10d | 0d |  | 16h | 12 | 4 |
| 157 | 12.5.1.1 | Consumir servicio Yanbal | 0.75d | 2015-06-03 15:00 | 2015-06-04 12:00 |  | 2015-06-12 10:00 | 2015-06-15 10:00 | 1d | 10d | 0d | SEI - Web | 6h | 6 | 8 |
| 158 | 12.5.1.2 | Registrar sesión | 0.5d | 2015-06-04 13:00 | 2015-06-04 17:00 | 157 | 2015-06-15 10:00 | 2015-06-16 10:00 | 1d | 24.5d | 0d | SEI - Web | 4h | 4 | 8 |
| 159 | 12.5.1.3 | Listar paises | 1d? | 2015-06-05 08:00 | 2015-06-05 17:00 | 158 |  |  |  | 24.5d | 0d |  | 4h |  |  |
| 160 | 12.5.1.4 | Cerrar Sesión | 0.25d | 2015-06-08 08:00 | 2015-06-08 10:00 | 159 |  |  |  | 24.5d |  | SEI - Web | 2h | 2 |  |
| 161 | 12.5.2 | **CUW-002: Configurar tamaño de Carga y Descarga** | 1.5d | 2015-06-08 10:00 | 2015-06-09 15:00 | 156 | 2015-06-16 10:00 | 2015-06-18 10:00 | 2d | 10d | 0d |  | 12h | 12 | 16 |
| 162 | 12.5.2.1 | Listar Limites de Carga y Descarga | 0.75d | 2015-06-08 10:00 | 2015-06-08 17:00 |  | 2015-06-18 10:00 | 2015-06-19 10:00 | 1d | 10d | 0d | SEI - Web | 6h | 6 | 8 |
| 163 | 12.5.2.2 | Editar Limite Carga y Descarga | 0.75d | 2015-06-09 08:00 | 2015-06-09 15:00 | 162 |  |  |  | 24.5d | 7.75d | SEI - Web | 6h | 6 |  |
| 164 | 12.5.3 | **CUW-003: Gestionar Colecciones** | 3d | 2015-06-09 15:00 | 2015-06-12 15:00 | 161 |  |  |  | 10d | 0d |  | 24h | 24 |  |
| 165 | 12.5.3.1 | Listar Coleccion | 0.75d | 2015-06-09 15:00 | 2015-06-10 12:00 |  |  |  |  | 10d | 0d | SEII - Web | 6h | 6 |  |
| 166 | 12.5.3.2 | Crear Coleccion | 0.75d | 2015-06-10 13:00 | 2015-06-11 10:00 | 165 |  |  |  | 24.5d | 0d | SEII - Web | 6h | 6 |  |
| 167 | 12.5.3.3 | Editar Coleccion | 0.75d | 2015-06-11 10:00 | 2015-06-11 17:00 | 166 |  |  |  | 10d | 0d | SEII - Web | 6h | 6 |  |
| 168 | 12.5.3.4 | Ver Coleccion | 0.5d | 2015-06-12 08:00 | 2015-06-12 12:00 | 167 |  |  |  | 24.5d | 0d | SEII - Web | 4h | 4 |  |
| 169 | 12.5.3.5 | Eliminar Coleccion | 0.25d | 2015-06-12 13:00 | 2015-06-12 15:00 | 168 |  |  |  | 24.5d |  | SEII - Web | 2h | 2 |  |
| 170 | 12.5.4 | **CUW-004: Gestionar Archivos** | 4.75d | 2015-06-12 15:00 | 2015-06-19 12:00 | 164 |  |  |  | 10d | 0d |  | 38h | 38 |  |
| 171 | 12.5.4.1 | Listar Archivo | 1d | 2015-06-12 15:00 | 2015-06-15 15:00 |  |  |  |  | 10d | 0d | SEII - Web | 8h | 8 |  |
| 172 | 12.5.4.2 | Crear Archivo | 1d | 2015-06-15 15:00 | 2015-06-16 15:00 | 171 |  |  |  | 10d | 0d | SEII - Web | 8h | 8 |  |
| 173 | 12.5.4.3 | Editar Archivo | 0.75d | 2015-06-16 15:00 | 2015-06-17 12:00 | 172 |  |  |  | 10d | 0d | SEII - Web | 6h | 6 |  |
| 174 | 12.5.4.4 | Ver detalle Archivo | 0.5d | 2015-06-17 13:00 | 2015-06-17 17:00 | 173 |  |  |  | 24.5d | 0d | SEII - Web | 4h | 4 |  |
| 175 | 12.5.4.5 | Listar Roles | 0.5d | 2015-06-18 08:00 | 2015-06-18 12:00 | 174 |  |  |  | 24.5d | 0d | SEII - Web | 4h | 4 |  |
| 176 | 12.5.4.6 | Validar limite de Carga de archivo | 0.25d | 2015-06-18 13:00 | 2015-06-18 15:00 | 175 |  |  |  | 24.5d | 0d | SEII - Web | 2h | 2 |  |
| 177 | 12.5.4.7 | Eliminar Archivo | 0.75d | 2015-06-18 15:00 | 2015-06-19 12:00 | 176 |  |  |  | 10d |  | SEII - Web | 6h | 6 |  |
| 178 | 12.5.5 | **CUW-006 Enviar Notificaciones** | 0.75d | 2015-06-19 13:00 | 2015-06-22 10:00 | 163, 170 |  |  |  | 10d | 0d |  | 6h | 6 |  |
| 179 | 12.5.5.1 | Indicador de publicaciones pendientes | 0.25d | 2015-06-19 13:00 | 2015-06-19 15:00 |  |  |  |  | 24.5d | 0d | SEI - Web | 2h | 2 |  |
| 180 | 12.5.5.2 | Validar mensaje | 0.25d | 2015-06-19 15:00 | 2015-06-19 17:00 | 179 |  |  |  | 10d | 0d | SEI - Web | 2h | 2 |  |
| 181 | 12.5.5.3 | Enviar notificación push | 0.25d | 2015-06-22 08:00 | 2015-06-22 10:00 | 180 |  |  |  | 24.5d |  | SEI - Web | 2h | 2 |  |

| ID | WBS | Task | Duration | Start | Finish | Predecessors | Baseline start | Baseline finish | Baseline duration | Total slack | Free slack | Resources | Work | Cost | Baseline cost |
| --- | --- | --- | --- | --- | --- | --- | --- | --- | --- | --- | --- | --- | --- | --- | --- |
| 182 | 12.5.6 | **CUW-005 Mover Archivos** | 2.5d | 2015-06-22 10:00 | 2015-06-24 15:00 | 178 |  |  |  | 10d |  |  | 20h | 20 |  |
| 183 | 12.5.6.1 | Listar Coleccion | 1d | 2015-06-22 10:00 | 2015-06-23 10:00 |  |  |  |  | 10d | 0d | SEI - Web | 8h | 8 |  |
| 184 | 12.5.6.2 | Mover Archivo | 1.5d | 2015-06-23 10:00 | 2015-06-24 15:00 | 183 |  |  |  | 10d |  | SEI - Web | 12h | 12 |  |
| 185 | 12.5.7 | Pruebas de desarrollador | 0.75d | 2015-06-03 15:00 | 2015-06-04 12:00 |  |  |  |  | 23.75d | 0d | SEII - Web | 6h | 6 |  |
| 186 | 12.5.8 | Revisión de pares | 0.5d | 2015-06-04 13:00 | 2015-06-04 17:00 | 185 |  |  |  | 38.25d |  | SEII - Web | 4h | 4 |  |
| 187 | 12.6 | Seguridad (SSL) | 1d | 2015-06-24 15:00 | 2015-06-25 15:00 | 155 | 2015-05-20 15:00 | 2015-05-22 15:00 | 2d? | 10d | 0d | SEII - Web | 8h | 8 | 16 |
| 188 | 12.7 | Pruebas integración | 2d | 2015-06-25 15:00 | 2015-06-30 15:00 | 187 |  |  |  | 10d | 0d | SEII - Web | 16h | 16 |  |
| 189 | 12.8 | Configuración Ambientes de QA | 1.75d | 2015-06-30 15:00 | 2015-07-02 12:00 | 188 |  |  |  | 10d |  | SEII - Web | 14h | 14 |  |
| 190 | 12.9 | Pruebas exploratorias | 3d | 2015-06-25 15:00 | 2015-07-01 15:00 | 188SS |  |  |  | 10.75d |  | QAI - 1 | 24h | 24 |  |
| 191 | 13 | **Aseguramiento de la calidad** | 12d | 2015-07-13 12:00 | 2015-07-31 12:00 | 59 |  |  |  | 3d |  |  | 452h | 452 |  |
| 192 | 13.1 | **Pruebas Funcionales** | 8d | 2015-07-13 13:00 | 2015-07-23 12:00 |  |  |  |  | 3d | 0d |  | 320h | 320 |  |
| 193 | 13.1.1 | **Móvil** | 8d | 2015-07-13 13:00 | 2015-07-23 12:00 |  |  |  |  | 3d | 0d |  | 240h | 240 |  |
| 194 | 13.1.1.1 | **Ejecución en Tablet** | 7d | 2015-07-13 13:00 | 2015-07-22 12:00 |  |  |  |  | 4d |  |  | 112h | 112 |  |
| 195 | 13.1.1.1.1 | Ejecución en Samsung de 10.1" /SO Android 4.1.2 (Principal) | 3d | 2015-07-13 13:00 | 2015-07-16 12:00 |  |  |  |  | 4d | 0d | QAI - 1; Tester - 1 | 48h | 48 |  |
| 196 | 13.1.1.1.2 | Ejecución en Lenovo 7" / SO Android 4.2.2 (Secundario) | 1d | 2015-07-16 13:00 | 2015-07-17 12:00 | 195 |  |  |  | 4d | 0d | QAI - 1; Tester - 1 | 16h | 16 |  |
| 197 | 13.1.1.1.3 | Tablet AOC / SO: Android 4.1.1 (Secundario) | 1d | 2015-07-17 13:00 | 2015-07-20 12:00 | 196 |  |  |  | 4d | 0d | QAI - 1; Tester - 1 | 16h | 16 |  |
| 198 | 13.1.1.1.4 | Ejecución en Ipad SO 7 (Secundario) | 1d | 2015-07-20 13:00 | 2015-07-21 12:00 | 197 |  |  |  | 4d | 0d | QAI - 1; Tester - 1 | 16h | 16 |  |
| 199 | 13.1.1.1.5 | Ejecución en Ipad SO 8 (Secundario) | 1d | 2015-07-21 13:00 | 2015-07-22 12:00 | 198 |  |  |  | 4d |  | QAI - 1; Tester - 1 | 16h | 16 |  |
| 200 | 13.1.1.2 | **Ejecución en SmartPhone** | 8d | 2015-07-13 13:00 | 2015-07-23 12:00 |  |  |  |  | 3d |  |  | 128h | 128 |  |
| 201 | 13.1.1.2.1 | Nokia Lumia 520 / SO: Windows Phone 8.0 (Principal) | 3d | 2015-07-13 13:00 | 2015-07-16 12:00 |  |  |  |  | 3d | 0d | QAI - 2; Tester - 2 | 48h | 48 |  |
| 202 | 13.1.1.2.2 | Ejecución en Samsung Galaxy Chat/SO -SO Android 4.1.2 (secundario) | 1d | 2015-07-16 13:00 | 2015-07-17 12:00 | 201 |  |  |  | 3d | 0d | QAI - 2; Tester - 2 | 16h | 16 |  |
| 203 | 13.1.1.2.3 | Samsung Galaxy S III Mini / SO: Android 4.1.2 (Principal) | 1d | 2015-07-17 13:00 | 2015-07-20 12:00 | 202 |  |  |  | 3d | 0d | QAI - 2; Tester - 2 | 16h | 16 |  |
| 204 | 13.1.1.2.4 | Ejecución en Iphone 4 / iSO 7 (Principal) | 1d | 2015-07-20 13:00 | 2015-07-21 12:00 | 203 |  |  |  | 3d | 0d | QAI - 2; Tester - 2 | 16h | 16 |  |
| 205 | 13.1.1.2.5 | Ejecución en Iphone 5 / iSO 7 (Secundario) | 1d | 2015-07-21 13:00 | 2015-07-22 12:00 | 204 |  |  |  | 3d | 0d | QAI - 2; Tester - 2 | 16h | 16 |  |
| 206 | 13.1.1.2.6 | Ejecución en Iphone 6 / iSO 7 (Secundario) | 1d | 2015-07-22 13:00 | 2015-07-23 12:00 | 205 |  |  |  | 3d |  | QAI - 2; Tester - 2 | 16h | 16 |  |

| ID | WBS | Task | Type | Duration | Start | Finish | Predecessors | Total slack | Free slack | Resources | Work | Cost |
| --- | --- | --- | --- | --- | --- | --- | --- | --- | --- | --- | --- | --- |
| 207 | 13.1.2 | **Web** |  | 5d | 2015-07-13 13:00 | 2015-07-20 12:00 |  | 6d | 0d |  | 80h | 80 |
| 208 | 13.1.2.1 | **Ejecución en Web Browser - IE9 (Principal)** |  | 3.75d | 2015-07-13 13:00 | 2015-07-17 10:00 |  | 6d | 0d |  | 60h | 60 |
| 209 | 13.1.2.1.1 | Ejecución de casos de prueba funcionales |  | 2.25d | 2015-07-13 13:00 | 2015-07-15 15:00 |  | 6d | 0d | QAI - 3; Tester - 3 | 36h | 36 |
| 210 | 13.1.2.1.2 | Reporte de errores |  | 0.5d | 2015-07-15 15:00 | 2015-07-16 10:00 | 209 | 6d | 0d | QAI - 3; Tester - 3 | 8h | 8 |
| 211 | 13.1.2.1.3 | Verificación de errores |  | 0.5d | 2015-07-16 10:00 | 2015-07-16 15:00 | 210 | 6d | 0d | QAI - 3; Tester - 3 | 8h | 8 |
| 212 | 13.1.2.1.4 | Pruebas exploratoria |  | 0.5d | 2015-07-16 15:00 | 2015-07-17 10:00 | 211 | 6d |  | QAI - 3; Tester - 3 | 8h | 8 |
| 213 | 13.1.2.2 | Ejecución en Web Browser - Chrome 40 (Secundario) |  | 1.25d | 2015-07-17 10:00 | 2015-07-20 12:00 | 208 | 6d |  | QAI - 3; Tester - 3 | 20h | 20 |
| 214 | 13.2 | Pruebas de regresion | milestone | 0d | 2015-07-13 12:00 | 2015-07-13 12:00 |  | 15d |  |  |  |  |
| 215 | 13.3 | **Soporte a Pruebas Funcionales (Resolución de Bugs)** |  | 8d | 2015-07-13 13:00 | 2015-07-23 12:00 |  | 7d | 0d |  | 64h | 64 |
| 216 | 13.3.1 | Móvil |  | 8d | 2015-07-13 13:00 | 2015-07-23 12:00 | 193SS | 7d |  | SEII - Mobile [50%] | 32h | 32 |
| 217 | 13.3.2 | Web |  | 8d | 2015-07-13 13:00 | 2015-07-23 12:00 | 207SS | 7d |  | SEII - Web [50%] | 32h | 32 |
| 218 | 13.4 | **Pruebas de Rendimiento** |  | 8.5d | 2015-07-17 08:00 | 2015-07-31 12:00 |  | 3d |  |  | 68h | 68 |
| 219 | 13.4.1 | Creación de Scripts (Flujo: 6WS) |  | 4.5d | 2015-07-17 08:00 | 2015-07-23 13:00 | 220SF | 7d |  | QAII | 36h | 36 |
| 220 | 13.4.2 | **Ejecución de Pruebas** |  | 2.5d | 2015-07-23 13:00 | 2015-07-27 17:00 | 192 | 3d | 0d |  | 20h | 20 |
| 221 | 13.4.2.1 | Preparación del Ambiente |  | 0.75d | 2015-07-23 13:00 | 2015-07-24 10:00 |  | 3d | 0d | QAII | 6h | 6 |
| 222 | 13.4.2.2 | Prueba de Ambiente |  | 0.25d | 2015-07-24 10:00 | 2015-07-24 12:00 | 221 | 3d | 0d | QAII | 2h | 2 |
| 223 | 13.4.2.3 | Ejecución prueba de carga |  | 1.5d | 2015-07-24 13:00 | 2015-07-27 17:00 | 222 | 3d |  | QAII | 12h | 12 |
| 224 | 13.4.3 | **Documentación** |  | 1.5d | 2015-07-30 08:00 | 2015-07-31 12:00 | 220 | 3d |  |  | 12h | 12 |
| 225 | 13.4.3.1 | Parsing Logs |  | 0.5d | 2015-07-30 08:00 | 2015-07-30 12:00 |  | 3d | 0d | QAII | 4h | 4 |
| 226 | 13.4.3.2 | Análisis y Notas Iniciales |  | 0.5d | 2015-07-30 13:00 | 2015-07-30 17:00 | 225 | 3d | 0d | QAII | 4h | 4 |
| 227 | 13.4.3.3 | Creación de documento de resultados |  | 0.5d | 2015-07-31 08:00 | 2015-07-31 12:00 | 226 | 3d |  | QAII | 4h | 4 |
| 228 | 14 | Soporte a Pruebas de Rendimiento |  | 4d | 2015-07-23 13:00 | 2015-07-31 12:00 | 220SS | 3d |  | SEII - Web [50%] | 16h | 16 |
| 229 | 15 | **Documentación** |  | 12d | 2015-07-13 13:00 | 2015-07-31 12:00 | 215SS | 0d |  |  | 96h | 96 |
| 230 | 15.1 | **Móvil** |  | 10d | 2015-07-13 13:00 | 2015-07-27 12:00 |  | 2d | 0d |  | 48h | 48 |
| 231 | 15.1.1 | Release notes |  | 1d | 2015-07-13 13:00 | 2015-07-14 12:00 |  | 2d | 0d | SEII - Mobile [50%] | 4h | 4 |
| 232 | 15.1.2 | Manual de soporte |  | 3d | 2015-07-14 13:00 | 2015-07-17 12:00 | 231 | 2d | 0d | SEII - Mobile [50%] | 12h | 12 |
| 233 | 15.1.3 | Manual de instalación |  | 4d | 2015-07-17 13:00 | 2015-07-23 12:00 | 232 | 2d | 0d | SEII - Mobile [50%] | 16h | 16 |
| 234 | 15.1.4 | Manual de usuario |  | 2d | 2015-07-23 13:00 | 2015-07-27 12:00 | 233 | 2d |  | SEII - Mobile | 16h | 16 |

| ID | WBS | Task | Type | Duration | Start | Finish | Predecessors | Total slack | Free slack | Resources | Work | Cost |
| --- | --- | --- | --- | --- | --- | --- | --- | --- | --- | --- | --- | --- |
| 235 | 15.2 | **Web** |  | 12d | 2015-07-13 13:00 | 2015-07-31 12:00 |  | 0d |  |  | 48h | 48 |
| 236 | 15.2.1 | Release notes |  | 1d | 2015-07-13 13:00 | 2015-07-14 12:00 |  | 0d |  | SEII - Web [50%] | 4h | 4 |
| 237 | 15.2.2 | Manual de soporte |  | 3d | 2015-07-14 13:00 | 2015-07-17 12:00 | 236 | 0d |  | SEII - Web [50%] | 12h | 12 |
| 238 | 15.2.3 | Manual de instalación |  | 4d | 2015-07-17 13:00 | 2015-07-23 12:00 | 237 | 0d |  | SEII - Web [50%] | 16h | 16 |
| 239 | 15.2.4 | Manual de usuario |  | 4d | 2015-07-23 13:00 | 2015-07-31 12:00 | 238 | 0d |  | SEII - Web [50%] | 16h | 16 |
| 240 | 16 | **Generación de Binarios** |  | 3d | 2015-07-27 13:00 | 2015-08-03 12:00 |  | 0d |  |  | 16h | 16 |
| 241 | 16.1 | Portal Web / Web Services |  | 1d | 2015-07-31 13:00 | 2015-08-03 12:00 | 235 | 0d |  | SEII - Web | 8h | 8 |
| 242 | 16.2 | Aplicaciones Moviles (iOS, Android, Windows Phone) |  | 1d | 2015-07-27 13:00 | 2015-07-30 12:00 | 230 | 2d |  | SEII - Mobile | 8h | 8 |
| 243 | 17 | **Despliegue Ambientes QA/UAT Yanbal** |  | 2d | 2015-08-03 13:00 | 2015-08-05 12:00 | 240 | 0d |  |  | 32h | 32 |
| 244 | 17.1 | Móvil |  | 2d | 2015-08-03 13:00 | 2015-08-05 12:00 |  | 0d |  | SEII - Mobile | 16h | 16 |
| 245 | 17.2 | Web |  | 2d | 2015-08-03 13:00 | 2015-08-05 12:00 |  | 0d |  | SEII - Web | 16h | 16 |
| 246 | 18 | **Certificacion Yanbal** |  | 0d | 2015-04-14 08:00 | 2015-04-14 08:00 |  | 77.5d | 0d |  |  |  |
| 247 | 18.1 | Ejecucion Certificación Yanbal | milestone | 0d | 2015-04-14 08:00 | 2015-04-14 08:00 |  | 77.5d |  | Yanbal |  |  |
| 248 | 18.2 | Soporte Certificacion Yanbal | milestone | 0d | 2015-04-14 08:00 | 2015-04-14 08:00 |  | 77.5d |  |  |  |  |
| 249 | 19 | **Despliegue Ambientes Produccion Yanbal** |  | 0d | 2015-04-14 08:00 | 2015-04-14 08:00 | 246 | 77.5d | 0d |  |  |  |
| 250 | 19.1 | Móvil | milestone | 0d | 2015-04-14 08:00 | 2015-04-14 08:00 |  | 77.5d |  | Yanbal |  |  |
| 251 | 19.2 | Web | milestone | 0d | 2015-04-14 08:00 | 2015-04-14 08:00 |  | 77.5d |  | Yanbal |  |  |
| 252 | 20 | Fin Ejecucion del Proyecto | milestone | 0d | 2015-04-14 08:00 | 2015-04-14 08:00 | 249 | 77.5d |  |  |  |  |
