# Yanbal PhoneGap - Web

Schedule from MS Project, 2015-04-14 to 2015-08-11, status date 2015-06-11, costs in $, A marks actual dates.
Avantica Technologies

## Calendars

- Standard: Mon-Fri 08:00-12:00, 13:00-17:00; Sat-Sun off. Exceptions (off unless hours are given): 2015-05-01 (Dia del Trabajo), 2015-06-29 (Día de San Pedro y San Pablo), 2015-07-28 to 2015-07-29 (Fiestas Patrias).

## Resources

| Resource | Rate |
| --- | --- |
| Ricardo Jauregui | 1 |
| Manuel Galagarza | 1 |
| Melissa Patroni | 1 |
| Pier Castañeda | 1 |
| Lennin Davila | 1 |
| Luis Vegazo | 1 |
| Katty Torres | 1 |
| Tester - 1 | 1 |
| Tester - 2 | 1 |
| Yanbal | 1 |
| QAI - 3 | 1 |
| Tester - 3 | 1 |
| Alex Contreras | 1 |
| Cecilia Garcia | 1 |
| Tester - 7 | 1 |
| Tester - 6 | 1 |
| Tester - 5 | 1 |
| Tester - 4 | 1 |
| QAI - 5 | 1 |
| QAI - 4 | 1 |
| QAI - 6 | 1 |
| Tester - 8 | 1 |
| QAI - 7 | 1 |

## Schedule

| ID | WBS | Task | Type | Duration | Start | Finish | Predecessors | Complete | Remaining | Baseline start | Baseline finish | Baseline duration | Total slack | Constraint | Resources | Work | Actual work | Cost | Baseline cost | Actual cost |
| --- | --- | --- | --- | --- | --- | --- | --- | --- | --- | --- | --- | --- | --- | --- | --- | --- | --- | --- | --- | --- |
| 1 | 1 | Gestión del proyecto |  | 79.5d | 2015-04-14 08:00 A | 2015-08-07 12:00 |  | 53% | 37.5d |  |  |  | 3.5d |  | Manuel Galagarza [40%] | 254.4h | 134.4h | 254.4 |  | 134.4 |
| 2 | 2 | Sesión de Inicio de Proyecto (KickOff) |  | 4h | 2015-04-14 08:00 A | 2015-04-14 12:00 A |  | 100% |  | 2015-04-14 08:00 | 2015-04-14 12:00 | 4h |  |  | Pier Castañeda; Lennin Davila | 8h | 8h | 8 | 8 | 8 |
| 3 | 3 | **Análisis** |  | 15.25d | 2015-04-14 13:00 A | 2015-05-06 15:00 A | 2 | 100% |  | 2015-04-14 13:00 | 2015-04-23 10:00 | 6.75d |  |  |  | 204h | 204h | 204 | 108 | 204 |
| 4 | 3.1 | Reuniones (124) |  | 2d | 2015-04-14 13:00 A | 2015-04-16 12:00 A |  | 100% |  | 2015-04-14 13:00 | 2015-04-16 12:00 | 2d |  |  | Pier Castañeda; Lennin Davila | 32h | 32h | 32 | 32 | 32 |
| 5 | 3.2 | Especificación de requerimientos funcionales (125) |  | 1d | 2015-04-16 13:00 A | 2015-04-17 12:00 A | 4 | 100% |  | 2015-04-16 13:00 | 2015-04-16 17:00 | 0.5d |  |  | Pier Castañeda; Lennin Davila | 16h | 16h | 16 | 8 | 16 |
| 6 | 3.3 | Creación de Wireframes (126) |  | 4d | 2015-04-17 13:00 A | 2015-04-23 12:00 A | 5 | 100% |  | 2015-04-17 08:00 | 2015-04-20 17:00 | 2d |  |  | Pier Castañeda; Lennin Davila | 64h | 64h | 64 | 32 | 64 |
| 7 | 3.4 | Especificación de casos de uso (127) |  | 3d | 2015-04-23 13:00 A | 2015-04-28 12:00 A | 6 | 100% |  | 2015-04-21 08:00 | 2015-04-22 17:00 | 2d |  |  | Pier Castañeda; Lennin Davila | 48h | 48h | 48 | 32 | 48 |
| 8 | 3.5 | Matriz de trazabilidad: requerimientos / casos de uso (128) |  | 0.25d | 2015-04-28 13:00 A | 2015-04-28 15:00 A | 7 | 100% |  | 2015-04-23 08:00 | 2015-04-23 10:00 | 0.25d |  |  | Pier Castañeda; Lennin Davila | 4h | 4h | 4 | 4 | 4 |
| 9 | 3.6 | Modificación de documentos (144) |  | 5d | 2015-04-28 15:00 A | 2015-05-06 15:00 A | 8 | 100% |  |  |  |  |  |  | Pier Castañeda [50%]; Lennin Davila [50%] | 40h | 40h | 40 |  | 40 |
| 10 | 4 | Fin Analisis | milestone | 0d | 2015-05-14 08:00 | 2015-05-14 08:00 |  |  |  |  |  |  | 61d | start no earlier than 2015-05-14 08:00 |  |  |  |  |  |  |
| 11 | 5 | **Diseño Técnico** |  | 25d | 2015-04-28 15:00 A | 2015-06-03 15:00 A |  | 100% |  | 2015-04-23 10:00 | 2015-05-06 10:00 | 8d |  |  |  | 320h | 320h | 320 | 128 | 320 |
| 12 | 5.1 | Reuniones (129) |  | 5d | 2015-04-28 15:00 A | 2015-05-06 15:00 A | 9SS | 100% |  | 2015-04-23 10:00 | 2015-04-24 10:00 | 1d |  |  | Pier Castañeda [50%]; Lennin Davila [50%] | 40h | 40h | 40 | 16 | 40 |
| 13 | 5.2 | Catalogo de servicios web a crear / consumir (137) |  | 1.5d | 2015-05-06 15:00 A | 2015-05-08 10:00 A | 12 | 100% |  | 2015-05-04 10:00 | 2015-05-06 10:00 | 2d |  |  | Pier Castañeda; Lennin Davila | 24h | 24h | 24 | 32 | 24 |
| 14 | 5.3 | Configurar ambiente de desarrollo (141 y 142) |  | 2d | 2015-05-08 10:00 A | 2015-05-12 10:00 A | 13 | 100% |  |  |  |  |  |  | Pier Castañeda; Lennin Davila | 32h | 32h | 32 |  | 32 |
| 15 | 5.4 | Revisión documentación Yanbal (143) |  | 0.25d | 2015-05-12 10:00 A | 2015-05-12 12:00 A | 14 | 100% |  |  |  |  |  |  | Pier Castañeda; Lennin Davila | 4h | 4h | 4 |  | 4 |
| 16 | 5.5 | Definir estándares de desarrollo (130 y 161) |  | 0.25d | 2015-05-12 13:00 A | 2015-05-12 15:00 A | 15 | 100% |  | 2015-04-24 10:00 | 2015-04-24 15:00 | 0.5d |  |  | Pier Castañeda; Lennin Davila | 4h | 4h | 4 | 8 | 4 |
| 17 | 5.6 | Requerimientos no funcionales (131 y 162) |  | 0.25d | 2015-05-12 15:00 A | 2015-05-12 17:00 A | 16 | 100% |  | 2015-04-24 15:00 | 2015-04-27 10:00 | 0.5d |  |  | Pier Castañeda; Lennin Davila | 4h | 4h | 4 | 8 | 4 |
| 18 | 5.7 | Arquitectura (132) |  | 1d | 2015-05-13 08:00 A | 2015-05-13 17:00 A | 17 | 100% |  | 2015-04-27 10:00 | 2015-04-27 12:00 | 0.25d |  |  | Pier Castañeda; Lennin Davila | 16h | 16h | 16 | 4 | 16 |
| 19 | 5.8 | Base de Datos (136 y 160) |  | 1d | 2015-05-14 08:00 A | 2015-05-14 17:00 A | 18 | 100% |  | 2015-04-27 13:00 | 2015-04-27 17:00 | 0.5d |  |  | Pier Castañeda; Lennin Davila | 16h | 16h | 16 | 8 | 16 |
| 20 | 5.9 | Especificación Técnica de la Solución (151 y 156) |  | 1.75d | 2015-05-15 08:00 A | 2015-05-18 15:00 A | 19 | 100% |  | 2015-04-28 08:00 | 2015-04-28 10:00 | 0.25d |  |  | Pier Castañeda; Lennin Davila | 28h | 28h | 28 | 4 | 28 |
| 21 | 5.10 | Diagrama de Clases (148 y 149) |  | 1d | 2015-05-18 15:00 A | 2015-05-19 15:00 A | 20 | 100% |  | 2015-04-28 10:00 | 2015-04-30 10:00 | 2d |  |  | Pier Castañeda; Lennin Davila | 16h | 16h | 16 | 32 | 16 |
| 22 | 5.11 | Mapa de Navegación (150 y 155) |  | 0.12d | 2015-05-19 15:00 A | 2015-05-19 16:00 A | 21 | 100% |  | 2015-04-30 10:00 | 2015-05-04 10:00 | 1d |  |  | Pier Castañeda; Lennin Davila | 2h | 2h | 2 | 16 | 2 |
| 23 | 5.12 | Perfiles del sistema (153 y 158) |  | 0.12d | 2015-05-19 16:00 A | 2015-05-19 17:00 A | 22 | 100% |  |  |  |  |  |  | Pier Castañeda; Lennin Davila | 2h | 2h | 2 |  | 2 |
| 24 | 5.13 | Especificación de pantallas (152 y 157) |  | 0.75d | 2015-05-20 08:00 A | 2015-05-20 15:00 A | 23 | 100% |  |  |  |  |  |  | Pier Castañeda; Lennin Davila | 12h | 12h | 12 |  | 12 |
| 25 | 5.14 | Modificación de documentos (205 y 206) |  | 10d | 2015-05-20 15:00 A | 2015-06-03 15:00 A | 24 | 100% |  |  |  |  |  |  | Pier Castañeda [75%]; Lennin Davila [75%] | 120h | 120h | 120 |  | 120 |
| 26 | 6 | Configuración Ambiente local de desarrollo |  | 10d | 2015-05-20 15:00 A | 2015-06-03 15:00 A | 25SS | 100% |  |  |  |  |  |  | Pier Castañeda [25%]; Lennin Davila [25%] | 40h | 40h | 40 |  | 40 |
| 27 | 7 | Fin Diseño Tecnico | milestone | 0d | 2015-06-09 08:00 | 2015-06-09 08:00 |  |  |  |  |  |  | 43d | start no earlier than 2015-06-09 08:00 |  |  |  |  |  |  |
| 28 | 8 | Disponibilidad UX | milestone | 0d | 2015-04-29 08:00 | 2015-04-29 08:00 |  |  |  |  |  |  | 78d | start no earlier than 2015-04-29 08:00 |  |  |  |  |  |  |

| ID | WBS | Task | Type | Duration | Start | Finish | Predecessors | Complete | Baseline start | Baseline finish | Baseline duration | Total slack | Constraint | Resources | Work | Actual work | Cost | Baseline cost | Actual cost |
| --- | --- | --- | --- | --- | --- | --- | --- | --- | --- | --- | --- | --- | --- | --- | --- | --- | --- | --- | --- |
| 29 | 9 | **Diseño Gráfico** |  | 18d | 2015-04-29 08:00 A | 2015-05-25 17:00 A | 28 | 100% | 2015-04-21 08:00 | 2015-05-18 10:00 | 18.25d |  |  |  | 142h | 142h | 142 | 146 | 142 |
| 30 | 9.1 | **Preparación de propuesta** |  | 10.25d | 2015-04-29 08:00 A | 2015-05-14 10:00 A |  | 100% | 2015-04-21 08:00 | 2015-04-30 10:00 | 7.25d |  |  |  | 82h | 82h | 82 | 58 | 82 |
| 31 | 9.1.1 | Reuniones con el cliente (información inicial) |  | 0.75d | 2015-04-29 08:00 A | 2015-04-29 15:00 A |  | 100% | 2015-04-21 08:00 | 2015-04-21 15:00 | 0.75d |  |  | Melissa Patroni | 6h | 6h | 6 | 6 | 6 |
| 32 | 9.1.2 | Elaboración de propuesta grafica (2 Pág. Maestras) Móvil |  | 3.5d | 2015-04-29 15:00 A | 2015-05-06 10:00 A | 31 | 100% | 2015-04-21 15:00 | 2015-04-24 10:00 | 2.5d |  |  | Melissa Patroni | 28h | 28h | 28 | 20 | 28 |
| 33 | 9.1.3 | Elaboración de propuesta grafica (2 Pág. Maestras) Web |  | 3.5d | 2015-05-06 10:00 A | 2015-05-11 15:00 A | 32 | 100% | 2015-04-24 10:00 | 2015-04-28 12:00 | 2.25d |  |  | Melissa Patroni | 28h | 28h | 28 | 18 | 28 |
| 34 | 9.1.4 | Elaboración de assets y cortes de imágenes |  | 2.5d | 2015-05-11 15:00 A | 2015-05-14 10:00 A | 33 | 100% | 2015-04-28 13:00 | 2015-04-30 10:00 | 1.75d |  |  | Melissa Patroni | 20h | 20h | 20 | 14 | 20 |
| 35 | 9.2 | **Preparación de maquetas y assets** |  | 7.75d | 2015-05-14 10:00 A | 2015-05-25 17:00 A | 30 | 100% | 2015-04-30 10:00 | 2015-05-18 10:00 | 11d |  |  |  | 60h | 60h | 60 | 88 | 60 |
| 36 | 9.2.1 | **Kiosko Móvil** |  | 4.75d | 2015-05-14 10:00 A | 2015-05-20 17:00 A |  | 100% | 2015-05-13 10:00 | 2015-05-18 10:00 | 3d |  |  |  | 36h | 36h | 36 | 24 | 36 |
| 37 | 9.2.1.1 | Login |  | 0.75d | 2015-05-14 10:00 A | 2015-05-14 17:00 A |  | 100% | 2015-05-13 10:00 | 2015-05-13 17:00 | 0.75d |  |  | Melissa Patroni | 6h | 6h | 6 | 6 | 6 |
| 38 | 9.2.1.2 | Página Principal |  | 0.75d | 2015-05-15 08:00 A | 2015-05-15 15:00 A | 37 | 100% | 2015-05-14 08:00 | 2015-05-14 15:00 | 0.75d |  |  | Melissa Patroni | 6h | 6h | 6 | 6 | 6 |
| 39 | 9.2.1.3 | Ver Colección |  | 0.75d | 2015-05-15 15:00 A | 2015-05-18 12:00 A | 38 | 100% | 2015-05-14 15:00 | 2015-05-15 12:00 | 0.75d |  |  | Melissa Patroni | 6h | 6h | 6 | 6 | 6 |
| 40 | 9.2.1.4 | Notificaciones |  | 0.75d | 2015-05-18 13:00 A | 2015-05-19 10:00 A | 39 | 100% | 2015-05-15 13:00 | 2015-05-18 10:00 | 0.75d |  |  | Melissa Patroni | 6h | 6h | 6 | 6 | 6 |
| 41 | 9.2.1.5 | Configuración |  | 0.75d | 2015-05-19 10:00 A | 2015-05-19 17:00 A | 40 | 100% |  |  |  |  |  | Melissa Patroni | 6h | 6h | 6 |  | 6 |
| 42 | 9.2.1.6 | Ver/Descargar/Eliminar Archivo |  | 1d | 2015-05-20 08:00 A | 2015-05-20 17:00 A | 41 | 100% |  |  |  |  |  | Melissa Patroni | 6h | 6h | 6 |  | 6 |
| 43 | 9.2.2 | **Kiosko Web** |  | 3d | 2015-05-21 08:00 A | 2015-05-25 17:00 A | 36 | 100% | 2015-04-30 10:00 | 2015-05-13 10:00 | 8d |  |  |  | 24h | 24h | 24 | 64 | 24 |
| 44 | 9.2.2.1 | Login |  | 0.38d | 2015-05-21 08:00 A | 2015-05-21 11:00 A |  | 100% | 2015-04-30 10:00 | 2015-05-04 10:00 | 1d |  |  | Melissa Patroni | 3h | 3h | 3 | 8 | 3 |
| 45 | 9.2.2.2 | Pantalla Principal |  | 0.38d | 2015-05-21 11:00 A | 2015-05-21 15:00 A | 44 | 100% |  |  |  |  |  | Melissa Patroni | 3h | 3h | 3 |  | 3 |
| 46 | 9.2.2.3 | Administración de Colecciones |  | 0.38d | 2015-05-21 15:00 A | 2015-05-22 09:00 A | 45 | 100% | 2015-05-08 10:00 | 2015-05-08 17:00 | 0.75d |  |  | Melissa Patroni | 3h | 3h | 3 | 6 | 3 |
| 47 | 9.2.2.4 | Crear/Editar Colecciones |  | 0.38d | 2015-05-22 09:00 A | 2015-05-22 12:00 A | 46 | 100% |  |  |  |  |  | Melissa Patroni | 3h | 3h | 3 |  | 3 |
| 48 | 9.2.2.5 | Cargar Archivos |  | 0.38d | 2015-05-22 13:00 A | 2015-05-22 16:00 A | 47 | 100% |  |  |  |  |  | Melissa Patroni | 3h | 3h | 3 |  | 3 |
| 49 | 9.2.2.6 | Publicar Archivos |  | 0.38d | 2015-05-22 16:00 A | 2015-05-25 10:00 A | 48 | 100% |  |  |  |  |  | Melissa Patroni | 3h | 3h | 3 |  | 3 |
| 50 | 9.2.2.7 | Mover Archivos |  | 0.38d | 2015-05-25 10:00 A | 2015-05-25 14:00 A | 49 | 100% |  |  |  |  |  | Melissa Patroni | 3h | 3h | 3 |  | 3 |
| 51 | 9.2.2.8 | Configuración de límites de carga y descarga |  | 0.38d | 2015-05-25 14:00 A | 2015-05-25 17:00 A | 50 | 100% | 2015-05-11 08:00 | 2015-05-11 15:00 | 0.75d |  |  | Melissa Patroni | 3h | 3h | 3 | 6 | 3 |
| 52 | 10 | Fin Diseño Gráfico | milestone | 0d | 2015-05-25 17:00 | 2015-05-25 17:00 | 29 |  |  |  |  | 53d |  |  |  |  |  |  |  |
| 53 | 11 | Disponibilidad QA | milestone | 0d | 2015-05-18 08:00 | 2015-05-18 08:00 |  |  |  |  |  | 66d | start no earlier than 2015-05-18 08:00 |  |  |  |  |  |  |

| ID | WBS | Task | Duration | Start | Finish | Predecessors | Complete | Remaining | Baseline start | Baseline finish | Baseline duration | Total slack | Resources | Work | Actual work | Cost | Baseline cost | Actual cost |
| --- | --- | --- | --- | --- | --- | --- | --- | --- | --- | --- | --- | --- | --- | --- | --- | --- | --- | --- |
| 54 | 12 | **Desarrollo** | 29.75d | 2015-06-03 15:00 A | 2015-07-16 12:00 | 11 | 15% | 25.25d | 2015-05-06 10:00 | 2015-07-02 15:00 | 40.5d? | 0d |  | 654h | 88h | 654 | 548 | 88 |
| 55 | 12.1 | **Preparacion de Ambientes de Integracion Continua** | 3d | 2015-06-12 08:00 | 2015-06-16 17:00 | 63, 116 |  |  |  |  |  | 0d |  | 72h |  | 72 |  |  |
| 56 | 12.1.1 | Instalacion y configuracion ambiente DEV y QA | 1d | 2015-06-12 08:00 | 2015-06-12 17:00 |  |  |  |  |  |  | 0d | Alex Contreras; Pier Castañeda; Lennin Davila | 24h |  | 24 |  |  |
| 57 | 12.1.2 | Creacion de Jobs en Jenkins | 1d | 2015-06-15 08:00 | 2015-06-15 17:00 | 56 |  |  |  |  |  | 0d | Alex Contreras; Pier Castañeda; Lennin Davila | 24h |  | 24 |  |  |
| 58 | 12.1.3 | Creacion y configuracion instancia Crucible | 1d | 2015-06-16 08:00 | 2015-06-16 17:00 | 57 |  |  |  |  |  | 0d | Alex Contreras; Pier Castañeda; Lennin Davila | 24h |  | 24 |  |  |
| 59 | 12.2 | **HTML** | 14.75d | 2015-06-03 15:00 A | 2015-06-24 12:00 |  | 53% | 6.9d | 2015-05-07 15:00 | 2015-05-13 15:00 | 4d? | 0d |  | 94h | 50h | 94 | 32 | 50 |
| 60 | 12.2.1 | **Estructura base HTML** | 2d | 2015-06-03 15:00 A | 2015-06-05 15:00 A |  | 100% |  |  |  |  |  |  | 16h | 16h | 16 |  | 16 |
| 61 | 12.2.1.1 | Móvil (166) | 1d | 2015-06-03 15:00 A | 2015-06-04 15:00 A |  | 100% |  |  |  |  |  | Pier Castañeda | 8h | 8h | 8 |  | 8 |
| 62 | 12.2.1.2 | Web (167) | 1d | 2015-06-04 15:00 A | 2015-06-05 15:00 A | 61 | 100% |  |  |  |  |  | Pier Castañeda | 8h | 8h | 8 |  | 8 |
| 63 | 12.2.2 | **Páginas Móvil** | 4.25d | 2015-06-05 15:00 A | 2015-06-11 17:00 A | 60 | 100% |  |  |  |  |  |  | 34h | 34h | 34 |  | 34 |
| 64 | 12.2.2.1 | Inicio Session (169) | 1d | 2015-06-05 15:00 A | 2015-06-08 15:00 A |  | 100% |  |  |  |  |  | Pier Castañeda | 8h | 8h | 8 |  | 8 |
| 65 | 12.2.2.2 | Pagina Principal (170) | 0.25d | 2015-06-08 15:00 A | 2015-06-08 17:00 A | 64 | 100% |  |  |  |  |  | Pier Castañeda | 2h | 2h | 2 |  | 2 |
| 66 | 12.2.2.3 | Coleccion seleccionada (171) | 0.25d | 2015-06-09 08:00 A | 2015-06-09 10:00 A | 65 | 100% |  |  |  |  |  | Pier Castañeda | 2h | 2h | 2 |  | 2 |
| 67 | 12.2.2.4 | Opciones del archivo (172) | 0.25d | 2015-06-09 10:00 A | 2015-06-09 12:00 A | 66 | 100% |  |  |  |  |  | Pier Castañeda | 2h | 2h | 2 |  | 2 |
| 68 | 12.2.2.5 | Página de configuración (173) | 0.25d | 2015-06-09 13:00 A | 2015-06-09 15:00 A | 67 | 100% |  |  |  |  |  | Pier Castañeda | 2h | 2h | 2 |  | 2 |
| 69 | 12.2.2.6 | Panel de notificaciones (174) | 0.75d | 2015-06-09 15:00 A | 2015-06-10 12:00 A | 68 | 100% |  |  |  |  |  | Pier Castañeda | 6h | 6h | 6 |  | 6 |
| 70 | 12.2.2.7 | Sincronización (175) | 0.5d | 2015-06-10 13:00 A | 2015-06-10 17:00 A | 69 | 100% |  |  |  |  |  | Pier Castañeda | 4h | 4h | 4 |  | 4 |
| 71 | 12.2.2.8 | Revisión/Corrección con UX (176) | 1d | 2015-06-11 08:00 A | 2015-06-11 17:00 A | 70 | 100% |  |  |  |  |  | Pier Castañeda | 8h | 8h | 8 |  | 8 |
| 72 | 12.2.3 | **Páginas Web** | 3.5d | 2015-06-17 08:00 | 2015-06-22 12:00 | 55 |  |  |  |  |  | 0d |  | 28h |  | 28 |  |  |
| 73 | 12.2.3.1 | Página Principal | 0.5d | 2015-06-17 08:00 | 2015-06-17 12:00 |  |  |  |  |  |  | 0d | Pier Castañeda | 4h |  | 4 |  |  |
| 74 | 12.2.3.2 | Inicio Session | 0.5d | 2015-06-17 13:00 | 2015-06-17 17:00 | 73 |  |  |  |  |  | 0d | Pier Castañeda | 4h |  | 4 |  |  |
| 75 | 12.2.3.3 | Mantener Colecciones | 1.5d | 2015-06-18 08:00 | 2015-06-19 12:00 | 74 |  |  |  |  |  | 0d | Pier Castañeda | 12h |  | 12 |  |  |
| 76 | 12.2.3.4 | Configurar limite de descarga | 0.5d | 2015-06-19 13:00 | 2015-06-19 17:00 | 75 |  |  |  |  |  | 0d | Pier Castañeda | 4h |  | 4 |  |  |
| 77 | 12.2.3.5 | Revisión/Corrección con UX | 0.5d | 2015-06-22 08:00 | 2015-06-22 12:00 | 76 |  |  |  |  |  | 0d | Pier Castañeda | 4h |  | 4 |  |  |
| 78 | 12.2.4 | Crear proyecto web angular | 2d | 2015-06-22 13:00 | 2015-06-24 12:00 | 72 |  |  |  |  |  | 0d | Pier Castañeda | 16h |  | 16 |  |  |

| ID | WBS | Task | Duration | Start | Finish | Predecessors | Baseline start | Baseline finish | Baseline duration | Total slack | Resources | Work | Cost | Baseline cost |
| --- | --- | --- | --- | --- | --- | --- | --- | --- | --- | --- | --- | --- | --- | --- |
| 79 | 12.3 | **PhoneGap** | 15d | 2015-06-24 13:00 | 2015-07-16 12:00 | 59 | 2015-05-13 15:00 | 2015-06-12 10:00 | 21.5d? | 0d |  | 120h | 120 | 172 |
| 80 | 12.3.1 | Creación proyecto base | 1d | 2015-06-24 13:00 | 2015-06-25 12:00 |  |  |  |  | 0d | Pier Castañeda | 8h | 8 |  |
| 81 | 12.3.2 | Revisión de pares | 0.5d | 2015-06-25 13:00 | 2015-06-25 17:00 | 80 |  |  |  | 0d | Pier Castañeda | 4h | 4 |  |
| 82 | 12.3.3 | Creación archivo de propiedades | 0.5d | 2015-06-26 08:00 | 2015-06-26 12:00 | 81 |  |  |  | 0d | Pier Castañeda | 4h | 4 |  |
| 83 | 12.3.4 | **CUM-001: Autenticar usuario, CUM-011: Cerrar Sesión** | 2.5d | 2015-06-26 13:00 | 2015-07-01 17:00 | 82 |  |  |  | 0d |  | 20h | 20 |  |
| 84 | 12.3.4.1 | Consumir servicio | 0.25d | 2015-06-26 13:00 | 2015-06-26 15:00 |  |  |  |  | 0d | Pier Castañeda | 2h | 2 |  |
| 85 | 12.3.4.2 | **Crear BD local en el móvil** | 1.5d | 2015-06-26 15:00 | 2015-07-01 10:00 | 84 |  |  |  | 0d |  | 12h | 12 |  |
| 86 | 12.3.4.2.1 | Plugin sqlite | 0.5d | 2015-06-26 15:00 | 2015-06-30 10:00 |  |  |  |  | 0d | Pier Castañeda | 4h | 4 |  |
| 87 | 12.3.4.2.2 | Creación de estructura BD | 0.5d | 2015-06-30 10:00 | 2015-06-30 15:00 | 86 |  |  |  | 0d | Pier Castañeda | 4h | 4 |  |
| 88 | 12.3.4.2.3 | Llenar paises con carga inicial / consumir servicio web de paises | 0.5d | 2015-06-30 15:00 | 2015-07-01 10:00 | 87 |  |  |  | 0d | Pier Castañeda | 4h | 4 |  |
| 89 | 12.3.4.3 | Guardar sesión | 0.5d | 2015-07-01 10:00 | 2015-07-01 15:00 | 88, 85 |  |  |  | 0d | Pier Castañeda | 4h | 4 |  |
| 90 | 12.3.4.4 | Cerrar sesión | 0.25d | 2015-07-01 15:00 | 2015-07-01 17:00 | 89 |  |  |  | 0d | Pier Castañeda | 2h | 2 |  |
| 91 | 12.3.5 | **CUM-002: Sincronizar Datos, CUM-003: Mostrar Nuevo Contenido, CUM-008: Mostrar Notificación Nativa** | 4d | 2015-07-02 08:00 | 2015-07-07 17:00 | 83 |  |  |  | 0d |  | 32h | 32 |  |
| 92 | 12.3.5.1 | Consumir servicio (sincronización al inicio, primer plano y a demanda) | 0.75d | 2015-07-02 08:00 | 2015-07-02 15:00 |  |  |  |  | 0d | Pier Castañeda | 6h | 6 |  |
| 93 | 12.3.5.2 | Guardar datos | 1d | 2015-07-02 15:00 | 2015-07-03 15:00 | 92 |  |  |  | 0d | Pier Castañeda | 8h | 8 |  |
| 94 | 12.3.5.3 | Actualizar panel de notificacion | 0.5d | 2015-07-03 15:00 | 2015-07-06 10:00 | 93 |  |  |  | 0d | Pier Castañeda | 4h | 4 |  |
| 95 | 12.3.5.4 | Actualizar panel de configuración (fecha ultima sincronización) | 0.25d | 2015-07-06 10:00 | 2015-07-06 12:00 | 94 |  |  |  | 0d | Pier Castañeda | 2h | 2 |  |
| 96 | 12.3.5.5 | Configuración para notificaciones push (panel nativo) | 1d | 2015-07-06 13:00 | 2015-07-07 12:00 | 95 |  |  |  | 0d | Pier Castañeda | 8h | 8 |  |
| 97 | 12.3.5.6 | Mensaje confirmación éxito/error sincronización por conexión de internet | 0.5d | 2015-07-07 13:00 | 2015-07-07 17:00 | 96 |  |  |  | 0d | Pier Castañeda | 4h | 4 |  |
| 98 | 12.3.6 | **CUM-004: Navegar por Colecciones y Archivos, CUM-005: Ver Archivos** | 2.25d | 2015-07-08 08:00 | 2015-07-10 10:00 | 91 |  |  |  | 0d |  | 18h | 18 |  |
| 99 | 12.3.6.1 | Manejo de nagevabilidad | 0.5d | 2015-07-08 08:00 | 2015-07-08 12:00 |  |  |  |  | 0d | Pier Castañeda | 4h | 4 |  |
| 100 | 12.3.6.2 | Abrir archivo | 1d | 2015-07-08 13:00 | 2015-07-09 12:00 | 99 |  |  |  | 0d | Pier Castañeda | 8h | 8 |  |
| 101 | 12.3.6.3 | Actualizar panel de notificacion para eliminar visto | 0.5d | 2015-07-09 13:00 | 2015-07-09 17:00 | 100 |  |  |  | 0d | Pier Castañeda | 4h | 4 |  |
| 102 | 12.3.6.4 | Mostrar mensaje de confirmación para descargar con red movil (validacion peso máximo) | 0.25d | 2015-07-10 08:00 | 2015-07-10 10:00 | 101 |  |  |  | 0d | Pier Castañeda | 2h | 2 |  |

Notes:
- 85: plugin sqlite / creación de estructura base / llenar paises con carga inicial / consumir servicio web de paises

| ID | WBS | Task | Duration | Start | Finish | Predecessors | Complete | Remaining | Baseline start | Baseline finish | Baseline duration | Total slack | Free slack | Resources | Work | Actual work | Cost | Baseline cost | Actual cost |
| --- | --- | --- | --- | --- | --- | --- | --- | --- | --- | --- | --- | --- | --- | --- | --- | --- | --- | --- | --- |
| 103 | 12.3.7 | **CUM-006: Descargar Archivo, CUM-010: Permitir uso de red móvil en descarga** | 0.75d | 2015-07-10 10:00 | 2015-07-10 17:00 | 98 |  |  |  |  |  | 0d |  |  | 6h |  | 6 |  |  |
| 104 | 12.3.7.1 | Guardar archivo | 0.25d | 2015-07-10 10:00 | 2015-07-10 12:00 |  |  |  |  |  |  | 0d |  | Pier Castañeda | 2h |  | 2 |  |  |
| 105 | 12.3.7.2 | Marcar contenido como descargado | 0.25d | 2015-07-10 13:00 | 2015-07-10 15:00 | 104 |  |  |  |  |  | 0d |  | Pier Castañeda | 2h |  | 2 |  |  |
| 106 | 12.3.7.3 | Mostrar mensaje de confirmación para descargar con red movil (validacion umbral) | 0.25d | 2015-07-10 15:00 | 2015-07-10 17:00 | 105 |  |  |  |  |  | 0d |  | Pier Castañeda | 2h |  | 2 |  |  |
| 107 | 12.3.8 | **CUM-007: Eliminar Archivos** | 0.5d | 2015-07-13 08:00 | 2015-07-13 12:00 | 103 |  |  |  |  |  | 0d |  |  | 4h |  | 4 |  |  |
| 108 | 12.3.8.1 | Elimnar datos de BD y file system local | 0.5d | 2015-07-13 08:00 | 2015-07-13 12:00 |  |  |  |  |  |  | 0d |  | Pier Castañeda | 4h |  | 4 |  |  |
| 109 | 12.3.9 | **CUM-009: Enviar métricas** | 1.5d | 2015-07-13 13:00 | 2015-07-14 17:00 | 107 |  |  |  |  |  | 0d |  |  | 12h |  | 12 |  |  |
| 110 | 12.3.9.1 | Enviar bitacora | 0.5d | 2015-07-13 13:00 | 2015-07-13 17:00 |  |  |  |  |  |  | 0d |  | Pier Castañeda | 4h |  | 4 |  |  |
| 111 | 12.3.9.2 | Configurar google analytics | 0.5d | 2015-07-14 08:00 | 2015-07-14 12:00 | 110 |  |  |  |  |  | 0d |  | Pier Castañeda | 4h |  | 4 |  |  |
| 112 | 12.3.9.3 | Colocar url de google analytics en las acciones | 0.5d | 2015-07-14 13:00 | 2015-07-14 17:00 | 111 |  |  |  |  |  | 0d |  | Pier Castañeda | 4h |  | 4 |  |  |
| 113 | 12.3.10 | Pruebas desarrollador | 1d | 2015-07-15 08:00 | 2015-07-15 17:00 | 109 |  |  |  |  |  | 0d |  | Pier Castañeda | 8h |  | 8 |  |  |
| 114 | 12.3.11 | Revisión de pares | 0.5d | 2015-07-16 08:00 | 2015-07-16 12:00 | 113 |  |  |  |  |  | 0d |  | Pier Castañeda | 4h |  | 4 |  |  |
| 115 | 12.4 | **Web Services** | 18.75d | 2015-06-03 15:00 A | 2015-07-01 12:00 |  | 19% | 15.19d | 2015-05-07 15:00 | 2015-06-10 15:00 | 24d? | 0.5d | 0d |  | 200h | 38h | 200 | 192 | 38 |
| 116 | 12.4.1 | **Componentes Comunes** | 6.25d | 2015-06-03 15:00 A | 2015-06-11 17:00 |  | 76% | 1.5d |  |  |  | 0d |  |  | 50h | 38h | 50 |  | 38 |
| 117 | 12.4.1.1 | Creación servicio web y estructura base (184) | 2d | 2015-06-03 15:00 A | 2015-06-05 15:00 A |  | 100% |  | 2015-05-11 15:00 | 2015-05-13 15:00 | 2d |  |  | Lennin Davila | 16h | 16h | 16 | 16 | 16 |
| 118 | 12.4.1.2 | Implementación utilitarios base - parseo, conversión (186) | 1.75d | 2015-06-05 15:00 A | 2015-06-09 12:00 A | 117 | 100% |  | 2015-05-18 15:00 | 2015-05-20 15:00 | 2d |  |  | Lennin Davila | 14h | 14h | 14 | 16 | 14 |
| 119 | 12.4.1.3 | EnviarBitacora (185) | 1d | 2015-06-09 13:00 A | 2015-06-10 12:00 A | 118 | 100% |  | 2015-05-13 15:00 | 2015-05-18 15:00 | 3d |  |  | Lennin Davila | 8h | 8h | 8 | 24 | 8 |
| 120 | 12.4.1.4 | Log Errores | 1.5d | 2015-06-10 13:00 | 2015-06-11 17:00 | 119 |  |  |  |  |  | 0d |  | Lennin Davila | 12h |  | 12 |  |  |
| 121 | 12.4.2 | **Móvil** | 3.5d | 2015-06-17 08:00 | 2015-06-22 12:00 | 55 |  |  |  |  |  | 0.75d |  |  | 28h |  | 28 |  |  |
| 122 | 12.4.2.1 | ObtenerColeccionesArchivos | 2d | 2015-06-17 08:00 | 2015-06-18 17:00 |  |  |  | 2015-05-25 15:00 | 2015-05-26 15:00 | 1d | 0.75d | 0d | Lennin Davila | 16h |  | 16 | 8 |  |
| 123 | 12.4.2.2 | Registrar Sesión | 1d | 2015-06-19 08:00 | 2015-06-19 17:00 | 122 |  |  | 2015-05-22 15:00 | 2015-05-25 15:00 | 1d | 0.75d | 0d | Lennin Davila | 8h |  | 8 | 8 |  |
| 124 | 12.4.2.3 | CerrarSesión | 0.5d | 2015-06-22 08:00 | 2015-06-22 12:00 | 123 |  |  |  |  |  | 0.75d | 0d | Lennin Davila | 4h |  | 4 |  |  |
| 125 | 12.4.3 | **Web** | 9.5d | 2015-06-17 08:00 | 2015-07-01 12:00 |  |  |  |  |  |  | 0.5d |  |  | 122h |  | 122 |  |  |
| 126 | 12.4.3.1 | RegistrarSesion | 0.5d | 2015-06-22 13:00 | 2015-06-22 17:00 | 124 |  |  |  |  |  | 0.75d | 0d | Lennin Davila | 4h |  | 4 |  |  |

| ID | WBS | Task | Duration | Start | Finish | Predecessors | Baseline start | Baseline finish | Baseline duration | Total slack | Free slack | Resources | Work | Cost | Baseline cost |
| --- | --- | --- | --- | --- | --- | --- | --- | --- | --- | --- | --- | --- | --- | --- | --- |
| 127 | 12.4.3.2 | **EnviarNotificacionPush** | 3.25d | 2015-06-23 08:00 | 2015-06-26 10:00 | 126 |  |  |  | 0.75d | 0d |  | 26h | 26 |  |
| 128 | 12.4.3.2.1 | Implementar módulo de notificaciones | 1d | 2015-06-23 08:00 | 2015-06-23 17:00 |  |  |  |  | 0.75d | 0d | Lennin Davila | 8h | 8 |  |
| 129 | 12.4.3.2.2 | Android | 0.75d | 2015-06-24 08:00 | 2015-06-24 15:00 | 128 |  |  |  | 0.75d | 0d | Lennin Davila | 6h | 6 |  |
| 130 | 12.4.3.2.3 | iOS | 0.75d | 2015-06-24 15:00 | 2015-06-25 12:00 | 129 |  |  |  | 0.75d | 0d | Lennin Davila | 6h | 6 |  |
| 131 | 12.4.3.2.4 | Windows Phone | 0.75d | 2015-06-25 13:00 | 2015-06-26 10:00 | 130 |  |  |  | 0.75d |  | Lennin Davila | 6h | 6 |  |
| 132 | 12.4.3.3 | ListarRoles | 0.75d | 2015-06-26 10:00 | 2015-06-26 17:00 | 127 |  |  |  | 0.75d | 0d | Lennin Davila | 6h | 6 |  |
| 133 | 12.4.3.4 | ListarPaises | 0.75d | 2015-06-30 08:00 | 2015-06-30 15:00 | 132 |  |  |  | 0.75d | 0d | Lennin Davila | 6h | 6 |  |
| 134 | 12.4.3.5 | CerrarSesion | 0.5d | 2015-06-30 15:00 | 2015-07-01 10:00 | 133 |  |  |  | 0.75d |  | Lennin Davila | 4h | 4 |  |
| 135 | 12.4.3.6 | ListarUmbrales | 0.5d | 2015-06-17 08:00 | 2015-06-17 12:00 | 116, 55 |  |  |  | 0.5d | 0d | Alex Contreras | 4h | 4 |  |
| 136 | 12.4.3.7 | ObtenerUmbral | 0.5d | 2015-06-17 13:00 | 2015-06-17 17:00 | 135 |  |  |  | 0.5d | 0d | Alex Contreras | 4h | 4 |  |
| 137 | 12.4.3.8 | ActualizarUmbral | 0.5d | 2015-06-18 08:00 | 2015-06-18 12:00 | 136 |  |  |  | 0.5d | 0d | Alex Contreras | 4h | 4 |  |
| 138 | 12.4.3.9 | ListarColecciones | 0.5d | 2015-06-18 13:00 | 2015-06-18 17:00 | 137 |  |  |  | 0.5d | 0d | Alex Contreras | 4h | 4 |  |
| 139 | 12.4.3.10 | InsertarColeccion | 0.5d | 2015-06-19 08:00 | 2015-06-19 12:00 | 138 |  |  |  | 0.5d | 0d | Alex Contreras | 4h | 4 |  |
| 140 | 12.4.3.11 | EliminarColeccion | 0.5d | 2015-06-19 13:00 | 2015-06-19 17:00 | 139 |  |  |  | 0.5d | 0d | Alex Contreras | 4h | 4 |  |
| 141 | 12.4.3.12 | ObtenerColeccion | 0.5d | 2015-06-22 08:00 | 2015-06-22 12:00 | 140 |  |  |  | 0.5d | 0d | Alex Contreras | 4h | 4 |  |
| 142 | 12.4.3.13 | ActualizarColeccion | 0.5d | 2015-06-22 13:00 | 2015-06-22 17:00 | 141 |  |  |  | 0.5d | 0d | Alex Contreras | 4h | 4 |  |
| 143 | 12.4.3.14 | ListarArchivos | 0.5d | 2015-06-23 08:00 | 2015-06-23 12:00 | 142 |  |  |  | 0.5d | 0d | Alex Contreras | 4h | 4 |  |
| 144 | 12.4.3.15 | InsertarArchivo | 1.5d | 2015-06-23 13:00 | 2015-06-24 17:00 | 143 |  |  |  | 0.5d | 0d | Alex Contreras | 12h | 12 |  |
| 145 | 12.4.3.16 | EliminarArchivo | 1.5d | 2015-06-25 08:00 | 2015-06-26 12:00 | 144 |  |  |  | 0.5d | 0d | Alex Contreras | 12h | 12 |  |
| 146 | 12.4.3.17 | ObtenerArchivo | 0.5d | 2015-06-26 13:00 | 2015-06-26 17:00 | 145 |  |  |  | 0.5d | 0d | Alex Contreras | 4h | 4 |  |
| 147 | 12.4.3.18 | ActualizarArchivo | 0.5d | 2015-06-30 08:00 | 2015-06-30 12:00 | 146 |  |  |  | 0.5d | 0d | Alex Contreras | 4h | 4 |  |
| 148 | 12.4.3.19 | ObtenerRutaOrigen | 0.5d | 2015-06-30 13:00 | 2015-06-30 17:00 | 147 |  |  |  | 0.5d | 0d | Alex Contreras | 4h | 4 |  |
| 149 | 12.4.3.20 | MoverArchivo | 0.5d | 2015-07-01 08:00 | 2015-07-01 12:00 | 148 |  |  |  | 0.5d |  | Alex Contreras | 4h | 4 |  |
| 150 | 12.5 | **Portal Web** | 8.5d | 2015-07-01 13:00 | 2015-07-13 17:00 | 115 | 2015-06-10 15:00 | 2015-07-02 15:00 | 15d? | 0.5d | 0d |  | 136h | 136 | 120 |
| 151 | 12.5.1 | **CUW-001: Iniciar sesión, CUW-007: Cerrar Sesión** | 2d | 2015-07-01 13:00 | 2015-07-03 12:00 |  | 2015-06-11 15:00 | 2015-06-12 10:00 | 0.5d | 0.5d | 0d |  | 16h | 16 | 4 |
| 152 | 12.5.1.1 | Consumir servicio Yanbal | 0.75d | 2015-07-01 13:00 | 2015-07-02 10:00 |  | 2015-06-12 10:00 | 2015-06-15 10:00 | 1d | 0.5d | 0d | Alex Contreras | 6h | 6 | 8 |
| 153 | 12.5.1.2 | Registrar sesión | 0.5d | 2015-07-02 10:00 | 2015-07-02 15:00 | 152 | 2015-06-15 10:00 | 2015-06-16 10:00 | 1d | 0.5d | 0d | Alex Contreras | 4h | 4 | 8 |
| 154 | 12.5.1.3 | Listar paises | 0.5d | 2015-07-02 15:00 | 2015-07-03 10:00 | 153 |  |  |  | 0.5d | 0d | Alex Contreras | 4h | 4 |  |
| 155 | 12.5.1.4 | Cerrar Sesión | 0.25d | 2015-07-03 10:00 | 2015-07-03 12:00 | 154 |  |  |  | 0.5d |  | Alex Contreras | 2h | 2 |  |

| ID | WBS | Task | Type | Duration | Start | Finish | Predecessors | Baseline start | Baseline finish | Baseline duration | Total slack | Free slack | Resources | Work | Cost | Baseline cost |
| --- | --- | --- | --- | --- | --- | --- | --- | --- | --- | --- | --- | --- | --- | --- | --- | --- |
| 156 | 12.5.2 | **CUW-002: Configurar tamaño de Carga y Descarga** |  | 1.5d | 2015-07-03 13:00 | 2015-07-06 17:00 | 151 | 2015-06-16 10:00 | 2015-06-18 10:00 | 2d | 0.5d | 0d |  | 12h | 12 | 16 |
| 157 | 12.5.2.1 | Listar Limites de Carga y Descarga |  | 0.75d | 2015-07-03 13:00 | 2015-07-06 10:00 |  | 2015-06-18 10:00 | 2015-06-19 10:00 | 1d | 0.5d | 0d | Alex Contreras | 6h | 6 | 8 |
| 158 | 12.5.2.2 | Editar Limite Carga y Descarga |  | 0.75d | 2015-07-06 10:00 | 2015-07-06 17:00 | 157 |  |  |  | 0.5d |  | Alex Contreras | 6h | 6 |  |
| 159 | 12.5.3 | **CUW-006 Enviar Notificaciones** |  | 1d | 2015-07-07 08:00 | 2015-07-07 17:00 | 156 |  |  |  | 0.5d | 0d |  | 8h | 8 |  |
| 160 | 12.5.3.1 | Indicador de publicaciones pendientes |  | 0.5d | 2015-07-07 08:00 | 2015-07-07 12:00 |  |  |  |  | 0.5d | 0d | Alex Contreras | 4h | 4 |  |
| 161 | 12.5.3.2 | Validar mensaje |  | 0.25d | 2015-07-07 13:00 | 2015-07-07 15:00 | 160 |  |  |  | 0.5d | 0d | Alex Contreras | 2h | 2 |  |
| 162 | 12.5.3.3 | Enviar notificación push |  | 0.25d | 2015-07-07 15:00 | 2015-07-07 17:00 | 161 |  |  |  | 0.5d |  | Alex Contreras | 2h | 2 |  |
| 163 | 12.5.4 | **CUW-005 Mover Archivos** |  | 2.5d | 2015-07-08 08:00 | 2015-07-10 12:00 | 159 |  |  |  | 0.5d | 0d |  | 20h | 20 |  |
| 164 | 12.5.4.1 | Listar Coleccion |  | 1d | 2015-07-08 08:00 | 2015-07-08 17:00 |  |  |  |  | 0.5d | 0d | Alex Contreras | 8h | 8 |  |
| 165 | 12.5.4.2 | Mover Archivo |  | 1.5d | 2015-07-09 08:00 | 2015-07-10 12:00 | 164 |  |  |  | 0.5d |  | Alex Contreras | 12h | 12 |  |
| 166 | 12.5.5 | **CUW-003: Gestionar Colecciones** |  | 3d | 2015-07-01 13:00 | 2015-07-06 12:00 |  |  |  |  | 0.5d | 0d |  | 24h | 24 |  |
| 167 | 12.5.5.1 | Listar Coleccion |  | 0.75d | 2015-07-01 13:00 | 2015-07-02 10:00 |  |  |  |  | 0.5d | 0d | Lennin Davila | 6h | 6 |  |
| 168 | 12.5.5.2 | Crear Coleccion |  | 0.75d | 2015-07-02 10:00 | 2015-07-02 17:00 | 167 |  |  |  | 0.5d | 0d | Lennin Davila | 6h | 6 |  |
| 169 | 12.5.5.3 | Editar Coleccion |  | 0.75d | 2015-07-03 08:00 | 2015-07-03 15:00 | 168 |  |  |  | 0.5d | 0d | Lennin Davila | 6h | 6 |  |
| 170 | 12.5.5.4 | Ver Coleccion |  | 0.5d | 2015-07-03 15:00 | 2015-07-06 10:00 | 169 |  |  |  | 0.5d | 0d | Lennin Davila | 4h | 4 |  |
| 171 | 12.5.5.5 | Eliminar Coleccion |  | 0.25d | 2015-07-06 10:00 | 2015-07-06 12:00 | 170 |  |  |  | 0.5d |  | Lennin Davila | 2h | 2 |  |
| 172 | 12.5.6 | **CUW-004: Gestionar Archivos** |  | 4.5d | 2015-07-06 13:00 | 2015-07-10 17:00 | 166 |  |  |  | 0.5d | 0d |  | 36h | 36 |  |
| 173 | 12.5.6.1 | Listar Archivo |  | 1d | 2015-07-06 13:00 | 2015-07-07 12:00 |  |  |  |  | 0.5d | 0d | Lennin Davila | 8h | 8 |  |
| 174 | 12.5.6.2 | Crear Archivo |  | 1d | 2015-07-07 13:00 | 2015-07-08 12:00 | 173 |  |  |  | 0.5d | 0d | Lennin Davila | 8h | 8 |  |
| 175 | 12.5.6.3 | Editar Archivo |  | 0.5d | 2015-07-08 13:00 | 2015-07-08 17:00 | 174 |  |  |  | 0.5d | 0d | Lennin Davila | 4h | 4 |  |
| 176 | 12.5.6.4 | Ver detalle Archivo |  | 0.5d | 2015-07-09 08:00 | 2015-07-09 12:00 | 175 |  |  |  | 0.5d | 0d | Lennin Davila | 4h | 4 |  |
| 177 | 12.5.6.5 | Listar Roles |  | 0.5d | 2015-07-09 13:00 | 2015-07-09 17:00 | 176 |  |  |  | 0.5d | 0d | Lennin Davila | 4h | 4 |  |
| 178 | 12.5.6.6 | Validar limite de Carga de archivo |  | 0.25d | 2015-07-10 08:00 | 2015-07-10 10:00 | 177 |  |  |  | 0.5d | 0d | Lennin Davila | 2h | 2 |  |
| 179 | 12.5.6.7 | Eliminar Archivo |  | 0.75d | 2015-07-10 10:00 | 2015-07-10 17:00 | 178 |  |  |  | 0.5d |  | Lennin Davila | 6h | 6 |  |
| 180 | 12.5.7 | Seguridad (SSL) |  | 0.5d | 2015-07-10 13:00 | 2015-07-10 17:00 | 163 | 2015-05-20 15:00 | 2015-05-22 15:00 | 2d? | 0.5d | 0d | Alex Contreras | 4h | 4 | 16 |
| 181 | 12.5.8 | Pruebas de desarrollador |  | 0.5d | 2015-07-13 08:00 | 2015-07-13 12:00 | 180, 172 |  |  |  | 0.5d | 0d | Lennin Davila; Alex Contreras | 8h | 8 |  |
| 182 | 12.5.9 | Revisión de pares |  | 0.5d | 2015-07-13 13:00 | 2015-07-13 17:00 | 181 |  |  |  | 0.5d |  | Lennin Davila; Alex Contreras | 8h | 8 |  |
| 183 | 12.6 | Pruebas integración |  | 1d | 2015-07-14 08:00 | 2015-07-14 17:00 | 150 |  |  |  | 0.5d | 0d | Alex Contreras; Lennin Davila | 16h | 16 |  |
| 184 | 12.7 | Configuración Ambientes de QA |  | 1d | 2015-07-15 08:00 | 2015-07-15 17:00 | 183 |  |  |  | 0.5d | 0d | Alex Contreras; Lennin Davila | 16h | 16 |  |
| 185 | 12.8 | Sesion Demo 1 | milestone | 0d | 2015-07-01 17:00 | 2015-07-01 17:00 | 83 |  |  |  | 10.5d |  |  |  |  |  |
| 186 | 12.9 | Sesion Demo 2 | milestone | 0d | 2015-07-15 17:00 | 2015-07-15 17:00 | 184 |  |  |  | 0.5d |  |  |  |  |  |
| 187 | 13 | Fin Desarrollo | milestone | 0d | 2015-07-16 12:00 | 2015-07-16 12:00 | 54 |  |  |  | 16.5d |  |  |  |  |  |

| ID | WBS | Task | Duration | Start | Finish | Predecessors | Complete | Remaining | Total slack | Free slack | Constraint | Resources | Work | Actual work | Cost | Actual cost |
| --- | --- | --- | --- | --- | --- | --- | --- | --- | --- | --- | --- | --- | --- | --- | --- | --- |
| 188 | 14 | **Aseguramiento de la calidad** | 58.62d | 2015-05-18 08:00 A | 2015-08-11 14:00 |  | 8% | 53.72d | 0.38d |  |  |  | 1067h | 80h | 1,067 | 80 |
| 189 | 14.1 | **Planificacion y Ejecucion de Pruebas** | 58.62d | 2015-05-18 08:00 A | 2015-08-11 14:00 |  | 10% | 52.65d | 0.38d |  |  |  | 913h | 80h | 913 | 80 |
| 190 | 14.1.1 | **Planificación de Pruebas** | 27.5d | 2015-05-18 08:00 A | 2015-06-24 12:00 |  | 49% | 14.09d | 15d |  |  |  | 164h | 80h | 164 | 80 |
| 191 | 14.1.1.1 | LCP - Listado de Casos de Prueba (164) | 2d | 2015-05-18 08:00 A | 2015-05-19 17:00 A |  | 100% |  |  |  |  |  | 16h | 16h | 16 | 16 |
| 192 | 14.1.1.2 | ECP - Especificación de Casos de Prueba (165) | 8d | 2015-05-20 08:00 A | 2015-05-29 17:00 A | 191 | 100% |  |  |  |  | Luis Vegazo | 64h | 64h | 64 | 64 |
| 193 | 14.1.1.3 | Actualización de LCP (237) | 2.5d | 2015-06-10 08:00 | 2015-06-12 12:00 |  |  |  | 15d | 0d | start no earlier than 2015-06-10 08:00 | Cecilia Garcia | 20h |  | 20 |  |
| 194 | 14.1.1.4 | Actualización de ECP | 5d | 2015-06-12 13:00 | 2015-06-19 12:00 | 193 |  |  | 15d | 0d |  | Cecilia Garcia | 40h |  | 40 |  |
| 195 | 14.1.1.5 | Plan de Pruebas Funcionales y de Rendimiento (163) | 2d | 2015-06-19 13:00 | 2015-06-23 12:00 | 194 |  |  | 15d | 0d | start no earlier than 2015-06-08 08:00 | Cecilia Garcia | 16h |  | 16 |  |
| 196 | 14.1.1.6 | Pruebas No Funcionales (236) | 1d | 2015-06-23 13:00 | 2015-06-24 12:00 | 195 |  |  | 15d |  | start no earlier than 2015-06-15 08:00 | Cecilia Garcia | 8h |  | 8 |  |
| 197 | 14.1.2 | **Pruebas Funcionales y No Funcionales** | 7.5d | 2015-07-16 13:00 | 2015-07-27 17:00 | 190, 54 |  |  | 0d |  |  |  | 640h |  | 640 |  |
| 198 | 14.1.2.1 | **Pruebas Funcionales** | 6d | 2015-07-16 13:00 | 2015-07-24 12:00 |  |  |  | 0d |  |  |  | 480h |  | 480 |  |
| 199 | 14.1.2.1.1 | **Móvil** | 6d | 2015-07-16 13:00 | 2015-07-24 12:00 |  |  |  | 1.5d |  |  |  | 384h |  | 384 |  |
| 200 | 14.1.2.1.1.1 | **Ejecución en Tablet** | 6d | 2015-07-16 13:00 | 2015-07-24 12:00 |  |  |  | 1.5d |  |  |  | 168h |  | 168 |  |
| 201 | 14.1.2.1.1.1.1 | Samsung de 10.1" /SO Android 4.1.2 (Principal) | 6d | 2015-07-16 13:00 | 2015-07-24 12:00 |  |  |  | 1.5d |  |  | Luis Vegazo | 48h |  | 48 |  |
| 202 | 14.1.2.1.1.1.2 | Ipad SO 7 (Principal) | 6d | 2015-07-16 13:00 | 2015-07-24 12:00 |  |  |  | 1.5d |  |  | Katty Torres | 48h |  | 48 |  |
| 203 | 14.1.2.1.1.1.3 | Lenovo 7" / SO Android 4.2.2 (Secundario) | 3d | 2015-07-16 13:00 | 2015-07-21 12:00 |  |  |  | 1.5d | 0d |  | Tester - 1 | 24h |  | 24 |  |
| 204 | 14.1.2.1.1.1.4 | AOC / SO: Android 4.1.1 (Secundario) | 3d | 2015-07-16 13:00 | 2015-07-21 12:00 |  |  |  | 1.5d | 0d |  | Tester - 2 | 24h |  | 24 |  |
| 205 | 14.1.2.1.1.1.5 | Ipad SO 8 (Secundario) | 3d | 2015-07-16 13:00 | 2015-07-21 12:00 |  |  |  | 1.5d | 0d |  | Tester - 3 | 24h |  | 24 |  |
| 206 | 14.1.2.1.1.2 | **Ejecución en SmartPhone** | 6d | 2015-07-16 13:00 | 2015-07-24 12:00 |  |  |  | 1.5d |  |  |  | 216h |  | 216 |  |
| 207 | 14.1.2.1.1.2.1 | Nokia Lumia 520 / SO: Windows Phone 8.0 (Principal) | 6d | 2015-07-16 13:00 | 2015-07-24 12:00 |  |  |  | 1.5d |  |  | QAI - 3 | 48h |  | 48 |  |
| 208 | 14.1.2.1.1.2.2 | Samsung Galaxy S III Mini / SO: Android 4.1.2 (Principal) | 6d | 2015-07-16 13:00 | 2015-07-24 12:00 |  |  |  | 1.5d |  |  | QAI - 4 | 48h |  | 48 |  |
| 209 | 14.1.2.1.1.2.3 | Iphone 4 / iSO 7 (Principal) | 6d | 2015-07-16 13:00 | 2015-07-24 12:00 |  |  |  | 1.5d |  |  | QAI - 5 | 48h |  | 48 |  |
| 210 | 14.1.2.1.1.2.4 | Samsung Galaxy Chat/SO -SO Android 4.1.2 (Secundario) | 3d | 2015-07-21 13:00 | 2015-07-24 12:00 | 203 |  |  | 1.5d |  |  | Tester - 1 | 24h |  | 24 |  |
| 211 | 14.1.2.1.1.2.5 | Iphone 5 / iSO 7 (Secundario) | 3d | 2015-07-21 13:00 | 2015-07-24 12:00 | 204 |  |  | 1.5d |  |  | Tester - 2 | 24h |  | 24 |  |
| 212 | 14.1.2.1.1.2.6 | Iphone 6 / iSO 7 (Secundario) | 3d | 2015-07-21 13:00 | 2015-07-24 12:00 | 205 |  |  | 1.5d |  |  | Tester - 3 | 24h |  | 24 |  |

| ID | WBS | Task | Duration | Start | Finish | Predecessors | Total slack | Free slack | Resources | Work | Cost |
| --- | --- | --- | --- | --- | --- | --- | --- | --- | --- | --- | --- |
| 213 | 14.1.2.1.2 | **Web** | 4.5d | 2015-07-16 13:00 | 2015-07-22 17:00 |  | 0d |  |  | 96h | 96 |
| 214 | 14.1.2.1.2.1 | **Ejecución en Web Browser - IE9 (Principal)** | 4.5d | 2015-07-16 13:00 | 2015-07-22 17:00 |  | 1d | 0d |  | 72h | 72 |
| 215 | 14.1.2.1.2.1.1 | Ejecución de casos de prueba funcionales | 3d | 2015-07-16 13:00 | 2015-07-21 12:00 |  | 3.5d | 0d | QAI - 6; Tester - 4 | 48h | 48 |
| 216 | 14.1.2.1.2.1.2 | Reporte de errores | 0.5d | 2015-07-21 13:00 | 2015-07-21 17:00 | 215 | 3.5d | 0d | QAI - 6; Tester - 4 | 8h | 8 |
| 217 | 14.1.2.1.2.1.3 | Verificación de errores | 0.5d | 2015-07-22 08:00 | 2015-07-22 12:00 | 216 | 3.5d | 0d | QAI - 6; Tester - 4 | 8h | 8 |
| 218 | 14.1.2.1.2.1.4 | Pruebas exploratoria | 0.5d | 2015-07-22 13:00 | 2015-07-22 17:00 | 217 | 3.5d |  | QAI - 6; Tester - 4 | 8h | 8 |
| 219 | 14.1.2.1.2.2 | Ejecución en Web Browser - Chrome 40 (Secundario) | 1.5d | 2015-07-16 13:00 | 2015-07-17 17:00 |  | 0d |  | Tester - 5; Tester - 6 | 24h | 24 |
| 220 | 14.1.2.2 | **Pruebas No Funcionales** | 7.5d | 2015-07-16 13:00 | 2015-07-27 17:00 | 54 | 0d |  |  | 160h | 160 |
| 221 | 14.1.2.2.1 | **SmartPhone** | 5.5d | 2015-07-16 13:00 | 2015-07-23 17:00 |  | 1.5d |  |  | 96h | 96 |
| 222 | 14.1.2.2.1.1 | Nokia Lumia 520 / SO: Windows Phone 8.0 (Principal) | 2d | 2015-07-16 13:00 | 2015-07-20 12:00 |  | 5.5d |  | QAI - 7; Tester - 8 | 32h | 32 |
| 223 | 14.1.2.2.1.2 | Samsung Galaxy S III Mini / SO: Android 4.1.2 (Principal) | 2d | 2015-07-20 08:00 | 2015-07-21 17:00 | 219 | 0d |  | Tester - 5; Tester - 6 | 32h | 32 |
| 224 | 14.1.2.2.1.3 | Iphone 4 / iOS 7 (Principal) | 2d | 2015-07-22 08:00 | 2015-07-23 17:00 | 223 | 0d |  | Tester - 5; Tester - 6 | 32h | 32 |
| 225 | 14.1.2.2.2 | **Tablet** | 3d | 2015-07-23 08:00 | 2015-07-27 17:00 |  | 0d |  |  | 64h | 64 |
| 226 | 14.1.2.2.2.1 | Samsung de 10.1" /SO Android 4.1.2 (Principal) | 2d | 2015-07-23 08:00 | 2015-07-24 17:00 | 214 | 1d |  | QAI - 6; Tester - 4 | 32h | 32 |
| 227 | 14.1.2.2.2.2 | Ipad SO 7 (Principal) | 2d | 2015-07-24 08:00 | 2015-07-27 17:00 | 224 | 0d |  | Tester - 5; Tester - 6 | 32h | 32 |
| 228 | 14.1.3 | **Pruebas de Regresion** | 1.5d | 2015-07-30 08:00 | 2015-07-31 12:00 | 197 | 0d |  |  | 36h | 36 |
| 229 | 14.1.3.1 | Smartphone | 1.5d | 2015-07-30 08:00 | 2015-07-31 12:00 |  | 0d |  | Luis Vegazo | 12h | 12 |
| 230 | 14.1.3.2 | Tablet | 1.5d | 2015-07-30 08:00 | 2015-07-31 12:00 |  | 0d |  | Katty Torres | 12h | 12 |
| 231 | 14.1.3.3 | Web | 1.5d | 2015-07-30 08:00 | 2015-07-31 12:00 |  | 0d |  | QAI - 3 | 12h | 12 |
| 232 | 14.1.4 | **Pruebas de Rendimiento** | 9.12d | 2015-07-27 13:00 | 2015-08-11 14:00 |  | 0.38d |  |  | 73h | 73 |
| 233 | 14.1.4.1 | Creación de Scripts (Flujo: 6WS) | 4.5d | 2015-07-27 13:00 | 2015-08-05 08:00 | 234SF | 5d | 0d | Ricardo Jauregui | 36h | 36 |
| 234 | 14.1.4.2 | **Ejecución de Pruebas** | 2.88d | 2015-08-05 08:00 | 2015-08-07 16:00 | 263 | 0.38d | 0d |  | 23h | 23 |
| 235 | 14.1.4.2.1 | Preparación del Ambiente | 1d | 2015-08-05 08:00 | 2015-08-05 17:00 |  | 0.38d | 0d | Ricardo Jauregui | 8h | 8 |
| 236 | 14.1.4.2.2 | Prueba de Ambiente | 0.38d | 2015-08-06 08:00 | 2015-08-06 11:00 | 235 | 0.38d | 0d | Ricardo Jauregui | 3h | 3 |
| 237 | 14.1.4.2.3 | Ejecución prueba de carga | 1.5d | 2015-08-06 11:00 | 2015-08-07 16:00 | 236 | 0.38d |  | Ricardo Jauregui | 12h | 12 |

Notes:
- 220: Considerando 6 caracteristicas "no funcionales" y 3 flujos funcionales (sincronizacion manual, abrir archivo, guardar archivo). Cubriendo 80% de la aplicacion.
- 228: Estrategia de pruebas de regresion: (despues de bug fixing) / 1) Principal Web / 2) Principal Smartphone / 3) Principal Tablet / Cada uno con set minimos y consideradando pruebas funcionales y no funcionales. No se generan mas evidencias en video.

| ID | WBS | Task | Type | Duration | Start | Finish | Predecessors | Total slack | Free slack | Resources | Work | Cost |
| --- | --- | --- | --- | --- | --- | --- | --- | --- | --- | --- | --- | --- |
| 238 | 14.1.4.3 | **Documentación** |  | 1.75d | 2015-08-07 16:00 | 2015-08-11 14:00 | 234 | 0.38d |  |  | 14h | 14 |
| 239 | 14.1.4.3.1 | Parsing Logs |  | 0.5d | 2015-08-07 16:00 | 2015-08-10 11:00 |  | 0.38d | 0d | Ricardo Jauregui | 4h | 4 |
| 240 | 14.1.4.3.2 | Análisis y Notas Iniciales |  | 0.5d | 2015-08-10 11:00 | 2015-08-10 16:00 | 239 | 0.38d | 0d | Ricardo Jauregui | 4h | 4 |
| 241 | 14.1.4.3.3 | Creación de documento de resultados |  | 0.75d | 2015-08-10 16:00 | 2015-08-11 14:00 | 240 | 0.38d |  | Ricardo Jauregui | 6h | 6 |
| 242 | 14.2 | **Soporte a Pruebas** |  | 11.5d | 2015-07-16 13:00 | 2015-08-04 17:00 |  | 5d |  |  | 154h | 154 |
| 243 | 14.2.1 | **Soporte de Pruebas (F y NF) / bug fixing** |  | 8.5d | 2015-07-16 13:00 | 2015-07-30 17:00 | 197SS | 8d |  |  | 136h | 136 |
| 244 | 14.2.1.1 | Móvil |  | 8.5d | 2015-07-16 13:00 | 2015-07-30 17:00 |  | 8d |  | Pier Castañeda | 68h | 68 |
| 245 | 14.2.1.2 | Web |  | 8.5d | 2015-07-16 13:00 | 2015-07-30 17:00 |  | 8d |  | Lennin Davila | 68h | 68 |
| 246 | 14.2.2 | Soporte a Pruebas de Rendimiento |  | 4.5d | 2015-07-27 13:00 | 2015-08-04 17:00 | 233SS | 5d |  | Alex Contreras [50%] | 18h | 18 |
| 247 | 15 | Fin QA (Excepto Rendimiento) | milestone | 0d | 2015-07-31 12:00 | 2015-07-31 12:00 | 228 | 7.5d |  |  |  |  |
| 248 | 16 | **Documentación** |  | 12d | 2015-04-14 08:00 | 2015-04-29 17:00 |  | 70d |  |  | 96h | 96 |
| 249 | 16.1 | **Web** |  | 6d | 2015-04-14 08:00 | 2015-04-21 17:00 |  | 70d | 0d |  | 48h | 48 |
| 250 | 16.1.1 | Manual de instalación |  | 2d | 2015-04-14 08:00 | 2015-04-15 17:00 |  | 70d | 0d | Alex Contreras | 16h | 16 |
| 251 | 16.1.2 | Manual de soporte |  | 1.5d | 2015-04-16 08:00 | 2015-04-17 12:00 | 250 | 70.5d | 0d | Alex Contreras | 12h | 12 |
| 252 | 16.1.3 | Manual de usuario |  | 2d | 2015-04-17 13:00 | 2015-04-21 12:00 | 251 | 70.5d | 0d | Alex Contreras | 16h | 16 |
| 253 | 16.1.4 | Release notes |  | 0.5d | 2015-04-21 13:00 | 2015-04-21 17:00 | 252 | 70.5d |  | Alex Contreras | 4h | 4 |
| 254 | 16.2 | **Móvil** |  | 6d | 2015-04-22 08:00 | 2015-04-29 17:00 | 249 | 70d |  |  | 48h | 48 |
| 255 | 16.2.1 | Manual de instalación |  | 2d | 2015-04-22 08:00 | 2015-04-23 17:00 |  | 70d | 0d | Alex Contreras | 16h | 16 |
| 256 | 16.2.2 | Manual de soporte |  | 1.5d | 2015-04-24 08:00 | 2015-04-27 12:00 | 255 | 70.5d | 0d | Alex Contreras | 12h | 12 |
| 257 | 16.2.3 | Manual de usuario |  | 2d | 2015-04-27 13:00 | 2015-04-29 12:00 | 256 | 70.5d | 0d | Alex Contreras | 16h | 16 |
| 258 | 16.2.4 | Release notes |  | 0.5d | 2015-04-29 13:00 | 2015-04-29 17:00 | 257 | 70.5d |  | Alex Contreras | 4h | 4 |
| 259 | 17 | **Generación de Binarios** |  | 1d | 2015-07-31 13:00 | 2015-08-03 12:00 | 228 | 0d |  |  | 16h | 16 |
| 260 | 17.1 | Portal Web / Web Services |  | 1d | 2015-07-31 13:00 | 2015-08-03 12:00 |  | 0d |  | Alex Contreras | 8h | 8 |
| 261 | 17.2 | Aplicaciones Moviles (iOS, Android, Windows Phone) |  | 1d | 2015-07-31 13:00 | 2015-08-03 12:00 |  | 0d |  | Pier Castañeda | 8h | 8 |
| 262 | 18 | Presentacion de Entregables | milestone | 0d | 2015-08-03 12:00 | 2015-08-03 12:00 | 259 | 6.5d |  |  |  |  |

| ID | WBS | Task | Type | Duration | Start | Finish | Predecessors | Total slack | Resources | Work | Cost |
| --- | --- | --- | --- | --- | --- | --- | --- | --- | --- | --- | --- |
| 263 | 19 | **Despliegue Ambientes Certificación (QA) / UAT en Yanbal** |  | 1.5d | 2015-08-03 13:00 | 2015-08-04 17:00 | 259 | 0d |  | 36h | 36 |
| 264 | 19.1 | Instalacion y Configuracion de solucion |  | 1.5d | 2015-08-03 13:00 | 2015-08-04 17:00 |  | 0d | Yanbal | 12h | 12 |
| 265 | 19.2 | Soporte Avantica |  | 1.5d | 2015-08-03 13:00 | 2015-08-04 17:00 | 264SS | 0d | Pier Castañeda; Alex Contreras | 24h | 24 |
| 266 | 20 | **Certificacion Yanbal** |  | 5d | 2015-08-05 08:00 | 2015-08-11 17:00 | 263 | 0d |  | 80h | 80 |
| 267 | 20.1 | Ejecucion de Pruebas Equipo Yanbal |  | 5d | 2015-08-05 08:00 | 2015-08-11 17:00 |  | 0d | Yanbal | 40h | 40 |
| 268 | 20.2 | Soporte Avantica |  | 5d | 2015-08-05 08:00 | 2015-08-11 17:00 | 267SS | 0d | Pier Castañeda [50%]; Lennin Davila [50%] | 40h | 40 |
| 269 | 21 | Fin ejecucion del proyecto / Inicio de Garantia de Producto (Avantica) | milestone | 0d | 2015-08-11 17:00 | 2015-08-11 17:00 | 266, 232 | 0d |  |  |  |
