# Yanbal PhoneGap - Web

Schedule from MS Project, 2015-04-14 to 2015-08-13, status date 2015-06-11, costs in $, A marks actual dates.
Avantica Technologies

## Calendars

- Standard: Mon-Fri 08:00-12:00, 13:00-17:00; Sat-Sun off. Exceptions (off unless hours are given): 2015-05-01 (Dia del Trabajo), 2015-06-29 (Día de San Pedro y San Pablo), 2015-07-28 to 2015-07-29 (Fiestas Patrias).

## Resources

| Resource | Rate |
| --- | --- |
| Ricardo Jauregui | 1 |
| Manuel Galagarza | 1 |
| Melissa Patroni | 1 |
| Pier | 1 |
| Lennin | 1 |
| QAI - 1 | 1 |
| Tester - 1 | 1 |
| Tester - 2 | 1 |
| Yanbal | 1 |
| QAI - 3 | 1 |
| Tester - 3 | 1 |
| Alex | 1 |
| Cecilia Garcia | 1 |
| Tester - 4 | 1 |
| QAI - 2 | 1 |
| Tester - 5 | 1 |
| Tester - 6 | 1 |
| Tester - 7 | 1 |

## Schedule

| ID | WBS | Task | Duration | Start | Finish | Predecessors | Complete | Remaining | Baseline start | Baseline finish | Baseline duration | Total slack | Resources | Work | Actual work | Cost | Baseline cost | Actual cost |
| --- | --- | --- | --- | --- | --- | --- | --- | --- | --- | --- | --- | --- | --- | --- | --- | --- | --- | --- |
| 1 | 1 | Gestión del proyecto | 84d | 2015-04-14 08:00 A | 2015-08-13 17:00 |  |  | 84d |  |  |  | 0d | Manuel Galagarza [40%] | 409.6h | 140.8h | 409.6 |  | 140.8 |
| 2 | 2 | Sesión de Inicio de Proyecto (KickOff) | 4h | 2015-04-14 08:00 A | 2015-04-14 12:00 A |  | 100% |  | 2015-04-14 08:00 | 2015-04-14 12:00 | 4h |  | Pier; Lennin | 8h | 8h | 8 | 8 | 8 |
| 3 | 3 | **Análisis** | 15.25d | 2015-04-14 13:00 A | 2015-05-06 15:00 A | 2 | 100% |  | 2015-04-14 13:00 | 2015-04-23 10:00 | 6.75d |  |  | 204h | 204h | 204 | 108 | 204 |
| 4 | 3.1 | Reuniones (124) | 2d | 2015-04-14 13:00 A | 2015-04-16 12:00 A |  | 100% |  | 2015-04-14 13:00 | 2015-04-16 12:00 | 2d |  | Pier; Lennin | 32h | 32h | 32 | 32 | 32 |
| 5 | 3.2 | Especificación de requerimientos funcionales (125) | 1d | 2015-04-16 13:00 A | 2015-04-17 12:00 A | 4 | 100% |  | 2015-04-16 13:00 | 2015-04-16 17:00 | 0.5d |  | Pier; Lennin | 16h | 16h | 16 | 8 | 16 |
| 6 | 3.3 | Creación de Wireframes (126) | 4d | 2015-04-17 13:00 A | 2015-04-23 12:00 A | 5 | 100% |  | 2015-04-17 08:00 | 2015-04-20 17:00 | 2d |  | Pier; Lennin | 64h | 64h | 64 | 32 | 64 |
| 7 | 3.4 | Especificación de casos de uso (127) | 3d | 2015-04-23 13:00 A | 2015-04-28 12:00 A | 6 | 100% |  | 2015-04-21 08:00 | 2015-04-22 17:00 | 2d |  | Pier; Lennin | 48h | 48h | 48 | 32 | 48 |
| 8 | 3.5 | Matriz de trazabilidad: requerimientos / casos de uso (128) | 0.25d | 2015-04-28 13:00 A | 2015-04-28 15:00 A | 7 | 100% |  | 2015-04-23 08:00 | 2015-04-23 10:00 | 0.25d |  | Pier; Lennin | 4h | 4h | 4 | 4 | 4 |
| 9 | 3.6 | Modificación de documentos (144) | 5d | 2015-04-28 15:00 A | 2015-05-06 15:00 A | 8 | 100% |  |  |  |  |  | Pier [50%]; Lennin [50%] | 40h | 40h | 40 |  | 40 |
| 10 | 4 | **Diseño Técnico** | 25d | 2015-04-28 15:00 A | 2015-06-03 15:00 A |  | 100% |  | 2015-04-23 10:00 | 2015-05-06 10:00 | 8d |  |  | 320h | 320h | 320 | 128 | 320 |
| 11 | 4.1 | Reuniones (129) | 5d | 2015-04-28 15:00 A | 2015-05-06 15:00 A | 9SS | 100% |  | 2015-04-23 10:00 | 2015-04-24 10:00 | 1d |  | Pier [50%]; Lennin [50%] | 40h | 40h | 40 | 16 | 40 |
| 12 | 4.2 | Catalogo de servicios web a crear / consumir (137) | 1.5d | 2015-05-06 15:00 A | 2015-05-08 10:00 A | 11 | 100% |  | 2015-05-04 10:00 | 2015-05-06 10:00 | 2d |  | Pier; Lennin | 24h | 24h | 24 | 32 | 24 |
| 13 | 4.3 | Configurar ambiente de desarrollo (141 y 142) | 2d | 2015-05-08 10:00 A | 2015-05-12 10:00 A | 12 | 100% |  |  |  |  |  | Pier; Lennin | 32h | 32h | 32 |  | 32 |
| 14 | 4.4 | Revisión documentación Yanbal (143) | 0.25d | 2015-05-12 10:00 A | 2015-05-12 12:00 A | 13 | 100% |  |  |  |  |  | Pier; Lennin | 4h | 4h | 4 |  | 4 |
| 15 | 4.5 | Definir estándares de desarrollo (130 y 161) | 0.25d | 2015-05-12 13:00 A | 2015-05-12 15:00 A | 14 | 100% |  | 2015-04-24 10:00 | 2015-04-24 15:00 | 0.5d |  | Pier; Lennin | 4h | 4h | 4 | 8 | 4 |
| 16 | 4.6 | Requerimientos no funcionales (131 y 162) | 0.25d | 2015-05-12 15:00 A | 2015-05-12 17:00 A | 15 | 100% |  | 2015-04-24 15:00 | 2015-04-27 10:00 | 0.5d |  | Pier; Lennin | 4h | 4h | 4 | 8 | 4 |
| 17 | 4.7 | Arquitectura (132) | 1d | 2015-05-13 08:00 A | 2015-05-13 17:00 A | 16 | 100% |  | 2015-04-27 10:00 | 2015-04-27 12:00 | 0.25d |  | Pier; Lennin | 16h | 16h | 16 | 4 | 16 |
| 18 | 4.8 | Base de Datos (136 y 160) | 1d | 2015-05-14 08:00 A | 2015-05-14 17:00 A | 17 | 100% |  | 2015-04-27 13:00 | 2015-04-27 17:00 | 0.5d |  | Pier; Lennin | 16h | 16h | 16 | 8 | 16 |
| 19 | 4.9 | Especificación Técnica de la Solución (151 y 156) | 1.75d | 2015-05-15 08:00 A | 2015-05-18 15:00 A | 18 | 100% |  | 2015-04-28 08:00 | 2015-04-28 10:00 | 0.25d |  | Pier; Lennin | 28h | 28h | 28 | 4 | 28 |
| 20 | 4.10 | Diagrama de Clases (148 y 149) | 1d | 2015-05-18 15:00 A | 2015-05-19 15:00 A | 19 | 100% |  | 2015-04-28 10:00 | 2015-04-30 10:00 | 2d |  | Pier; Lennin | 16h | 16h | 16 | 32 | 16 |
| 21 | 4.11 | Mapa de Navegación (150 y 155) | 0.12d | 2015-05-19 15:00 A | 2015-05-19 16:00 A | 20 | 100% |  | 2015-04-30 10:00 | 2015-05-04 10:00 | 1d |  | Pier; Lennin | 2h | 2h | 2 | 16 | 2 |
| 22 | 4.12 | Perfiles del sistema (153 y 158) | 0.12d | 2015-05-19 16:00 A | 2015-05-19 17:00 A | 21 | 100% |  |  |  |  |  | Pier; Lennin | 2h | 2h | 2 |  | 2 |
| 23 | 4.13 | Especificación de pantallas (152 y 157) | 0.75d | 2015-05-20 08:00 A | 2015-05-20 15:00 A | 22 | 100% |  |  |  |  |  | Pier; Lennin | 12h | 12h | 12 |  | 12 |
| 24 | 4.14 | Modificación de documentos (205 y 206) | 10d | 2015-05-20 15:00 A | 2015-06-03 15:00 A | 23 | 100% |  |  |  |  |  | Pier [75%]; Lennin [75%] | 120h | 120h | 120 |  | 120 |
| 25 | 5 | Configuración Ambiente local de desarrollo | 10d | 2015-05-20 15:00 A | 2015-06-03 15:00 A | 24SS | 100% |  |  |  |  |  | Pier [25%]; Lennin [25%] | 40h | 40h | 40 |  | 40 |

| ID | WBS | Task | Duration | Start | Finish | Predecessors | Complete | Remaining | Baseline start | Baseline finish | Baseline duration | Total slack | Free slack | Resources | Work | Actual work | Cost | Baseline cost | Actual cost |
| --- | --- | --- | --- | --- | --- | --- | --- | --- | --- | --- | --- | --- | --- | --- | --- | --- | --- | --- | --- |
| 26 | 6 | **Diseño Gráfico** | 18d | 2015-04-29 08:00 A | 2015-05-25 17:00 A |  | 100% |  | 2015-04-21 08:00 | 2015-05-18 10:00 | 18.25d |  |  |  | 142h | 142h | 142 | 146 | 142 |
| 27 | 6.1 | **Preparación de propuesta** | 10.25d | 2015-04-29 08:00 A | 2015-05-14 10:00 A |  | 100% |  | 2015-04-21 08:00 | 2015-04-30 10:00 | 7.25d |  |  |  | 82h | 82h | 82 | 58 | 82 |
| 28 | 6.1.1 | Reuniones con el cliente (información inicial) | 0.75d | 2015-04-29 08:00 A | 2015-04-29 15:00 A |  | 100% |  | 2015-04-21 08:00 | 2015-04-21 15:00 | 0.75d |  |  | Melissa Patroni | 6h | 6h | 6 | 6 | 6 |
| 29 | 6.1.2 | Elaboración de propuesta grafica (2 Pág. Maestras) Móvil | 3.5d | 2015-04-29 15:00 A | 2015-05-06 10:00 A | 28 | 100% |  | 2015-04-21 15:00 | 2015-04-24 10:00 | 2.5d |  |  | Melissa Patroni | 28h | 28h | 28 | 20 | 28 |
| 30 | 6.1.3 | Elaboración de propuesta grafica (2 Pág. Maestras) Web | 3.5d | 2015-05-06 10:00 A | 2015-05-11 15:00 A | 29 | 100% |  | 2015-04-24 10:00 | 2015-04-28 12:00 | 2.25d |  |  | Melissa Patroni | 28h | 28h | 28 | 18 | 28 |
| 31 | 6.1.4 | Elaboración de assets y cortes de imágenes | 2.5d | 2015-05-11 15:00 A | 2015-05-14 10:00 A | 30 | 100% |  | 2015-04-28 13:00 | 2015-04-30 10:00 | 1.75d |  |  | Melissa Patroni | 20h | 20h | 20 | 14 | 20 |
| 32 | 6.2 | **Preparación de maquetas y assets** | 7.75d | 2015-05-14 10:00 A | 2015-05-25 17:00 A | 27 | 100% |  | 2015-04-30 10:00 | 2015-05-18 10:00 | 11d |  |  |  | 60h | 60h | 60 | 88 | 60 |
| 33 | 6.2.1 | **Kiosko Móvil** | 4.75d | 2015-05-14 10:00 A | 2015-05-20 17:00 A |  | 100% |  | 2015-05-13 10:00 | 2015-05-18 10:00 | 3d |  |  |  | 36h | 36h | 36 | 24 | 36 |
| 34 | 6.2.1.1 | Login | 0.75d | 2015-05-14 10:00 A | 2015-05-14 17:00 A |  | 100% |  | 2015-05-13 10:00 | 2015-05-13 17:00 | 0.75d |  |  | Melissa Patroni | 6h | 6h | 6 | 6 | 6 |
| 35 | 6.2.1.2 | Página Principal | 0.75d | 2015-05-15 08:00 A | 2015-05-15 15:00 A | 34 | 100% |  | 2015-05-14 08:00 | 2015-05-14 15:00 | 0.75d |  |  | Melissa Patroni | 6h | 6h | 6 | 6 | 6 |
| 36 | 6.2.1.3 | Ver Colección | 0.75d | 2015-05-15 15:00 A | 2015-05-18 12:00 A | 35 | 100% |  | 2015-05-14 15:00 | 2015-05-15 12:00 | 0.75d |  |  | Melissa Patroni | 6h | 6h | 6 | 6 | 6 |
| 37 | 6.2.1.4 | Notificaciones | 0.75d | 2015-05-18 13:00 A | 2015-05-19 10:00 A | 36 | 100% |  | 2015-05-15 13:00 | 2015-05-18 10:00 | 0.75d |  |  | Melissa Patroni | 6h | 6h | 6 | 6 | 6 |
| 38 | 6.2.1.5 | Configuración | 0.75d | 2015-05-19 10:00 A | 2015-05-19 17:00 A | 37 | 100% |  |  |  |  |  |  | Melissa Patroni | 6h | 6h | 6 |  | 6 |
| 39 | 6.2.1.6 | Ver/Descargar/Eliminar Archivo | 1d | 2015-05-20 08:00 A | 2015-05-20 17:00 A | 38 | 100% |  |  |  |  |  |  | Melissa Patroni | 6h | 6h | 6 |  | 6 |
| 40 | 6.2.2 | **Kiosko Web** | 3d | 2015-05-21 08:00 A | 2015-05-25 17:00 A | 33 | 100% |  | 2015-04-30 10:00 | 2015-05-13 10:00 | 8d |  |  |  | 24h | 24h | 24 | 64 | 24 |
| 41 | 6.2.2.1 | Login | 0.38d | 2015-05-21 08:00 A | 2015-05-21 11:00 A |  | 100% |  | 2015-04-30 10:00 | 2015-05-04 10:00 | 1d |  |  | Melissa Patroni | 3h | 3h | 3 | 8 | 3 |
| 42 | 6.2.2.2 | Pantalla Principal | 0.38d | 2015-05-21 11:00 A | 2015-05-21 15:00 A | 41 | 100% |  |  |  |  |  |  | Melissa Patroni | 3h | 3h | 3 |  | 3 |
| 43 | 6.2.2.3 | Administración de Colecciones | 0.38d | 2015-05-21 15:00 A | 2015-05-22 09:00 A | 42 | 100% |  | 2015-05-08 10:00 | 2015-05-08 17:00 | 0.75d |  |  | Melissa Patroni | 3h | 3h | 3 | 6 | 3 |
| 44 | 6.2.2.4 | Crear/Editar Colecciones | 0.38d | 2015-05-22 09:00 A | 2015-05-22 12:00 A | 43 | 100% |  |  |  |  |  |  | Melissa Patroni | 3h | 3h | 3 |  | 3 |
| 45 | 6.2.2.5 | Cargar Archivos | 0.38d | 2015-05-22 13:00 A | 2015-05-22 16:00 A | 44 | 100% |  |  |  |  |  |  | Melissa Patroni | 3h | 3h | 3 |  | 3 |
| 46 | 6.2.2.6 | Publicar Archivos | 0.38d | 2015-05-22 16:00 A | 2015-05-25 10:00 A | 45 | 100% |  |  |  |  |  |  | Melissa Patroni | 3h | 3h | 3 |  | 3 |
| 47 | 6.2.2.7 | Mover Archivos | 0.38d | 2015-05-25 10:00 A | 2015-05-25 14:00 A | 46 | 100% |  |  |  |  |  |  | Melissa Patroni | 3h | 3h | 3 |  | 3 |
| 48 | 6.2.2.8 | Configuración de límites de carga y descarga | 0.38d | 2015-05-25 14:00 A | 2015-05-25 17:00 A | 47 | 100% |  | 2015-05-11 08:00 | 2015-05-11 15:00 | 0.75d |  |  | Melissa Patroni | 3h | 3h | 3 | 6 | 3 |
| 49 | 7 | **Desarrollo** | 29.25d | 2015-06-03 15:00 A | 2015-07-15 17:00 | 10 | 23% | 22.66d | 2015-05-06 10:00 | 2015-07-02 15:00 | 40.5d? | 0.5d | 0d |  | 650h | 148h | 650 | 548 | 148 |
| 50 | 7.1 | **Preparacion de Ambientes de Integracion Continua** | 3d | 2015-06-12 08:00 A | 2015-06-16 17:00 | 58, 111 | 67% | 1d |  |  |  | 0.5d | 0d |  | 48h | 32h | 48 |  | 32 |
| 51 | 7.1.1 | Instalacion y configuracion ambiente DEV y QA | 1.5d | 2015-06-12 08:00 A | 2015-06-15 12:00 A |  | 100% |  |  |  |  |  |  | Alex; Lennin | 24h | 24h | 24 |  | 24 |
| 52 | 7.1.2 | Creacion de Jobs en Jenkins | 0.75d | 2015-06-15 13:00 A | 2015-06-16 10:00 | 51 | 67% | 0.25d |  |  |  | 0.5d | 0d | Alex; Lennin | 12h | 8h | 12 |  | 8 |
| 53 | 7.1.3 | Creacion y configuracion instancia Crucible | 0.75d | 2015-06-16 10:00 | 2015-06-16 17:00 | 52 |  |  |  |  |  | 0.5d |  | Alex; Lennin | 12h |  | 12 |  |  |

| ID | WBS | Task | Duration | Start | Finish | Predecessors | Complete | Remaining | Baseline start | Baseline finish | Baseline duration | Total slack | Free slack | Resources | Work | Actual work | Cost | Baseline cost | Actual cost |
| --- | --- | --- | --- | --- | --- | --- | --- | --- | --- | --- | --- | --- | --- | --- | --- | --- | --- | --- | --- |
| 54 | 7.2 | **HTML** | 12.25d | 2015-06-03 15:00 A | 2015-06-19 17:00 |  | 67% | 4d | 2015-05-07 15:00 | 2015-05-13 15:00 | 4d? | 0.5d | 0d |  | 98h | 66h | 98 | 32 | 66 |
| 55 | 7.2.1 | **Estructura base HTML** | 2d | 2015-06-03 15:00 A | 2015-06-05 15:00 A |  | 100% |  |  |  |  |  |  |  | 16h | 16h | 16 |  | 16 |
| 56 | 7.2.1.1 | Móvil (166) | 1d | 2015-06-03 15:00 A | 2015-06-04 15:00 A |  | 100% |  |  |  |  |  |  | Pier | 8h | 8h | 8 |  | 8 |
| 57 | 7.2.1.2 | Web (167) | 1d | 2015-06-04 15:00 A | 2015-06-05 15:00 A | 56 | 100% |  |  |  |  |  |  | Pier | 8h | 8h | 8 |  | 8 |
| 58 | 7.2.2 | **Páginas Móvil** | 4.25d | 2015-06-05 15:00 A | 2015-06-11 17:00 A | 55 | 100% |  |  |  |  |  |  |  | 34h | 34h | 34 |  | 34 |
| 59 | 7.2.2.1 | Inicio Session (169) | 1d | 2015-06-05 15:00 A | 2015-06-08 15:00 A |  | 100% |  |  |  |  |  |  | Pier | 8h | 8h | 8 |  | 8 |
| 60 | 7.2.2.2 | Pagina Principal (170) | 0.25d | 2015-06-08 15:00 A | 2015-06-08 17:00 A | 59 | 100% |  |  |  |  |  |  | Pier | 2h | 2h | 2 |  | 2 |
| 61 | 7.2.2.3 | Coleccion seleccionada (171) | 0.25d | 2015-06-09 08:00 A | 2015-06-09 10:00 A | 60 | 100% |  |  |  |  |  |  | Pier | 2h | 2h | 2 |  | 2 |
| 62 | 7.2.2.4 | Opciones del archivo (172) | 0.25d | 2015-06-09 10:00 A | 2015-06-09 12:00 A | 61 | 100% |  |  |  |  |  |  | Pier | 2h | 2h | 2 |  | 2 |
| 63 | 7.2.2.5 | Página de configuración (173) | 0.25d | 2015-06-09 13:00 A | 2015-06-09 15:00 A | 62 | 100% |  |  |  |  |  |  | Pier | 2h | 2h | 2 |  | 2 |
| 64 | 7.2.2.6 | Panel de notificaciones (174) | 0.75d | 2015-06-09 15:00 A | 2015-06-10 12:00 A | 63 | 100% |  |  |  |  |  |  | Pier | 6h | 6h | 6 |  | 6 |
| 65 | 7.2.2.7 | Sincronización (175) | 0.5d | 2015-06-10 13:00 A | 2015-06-10 17:00 A | 64 | 100% |  |  |  |  |  |  | Pier | 4h | 4h | 4 |  | 4 |
| 66 | 7.2.2.8 | Revisión/Corrección con UX (176) | 1d | 2015-06-11 08:00 A | 2015-06-11 17:00 A | 65 | 100% |  |  |  |  |  |  | Pier | 8h | 8h | 8 |  | 8 |
| 67 | 7.2.3 | **Páginas Web** | 4d | 2015-06-12 08:00 A | 2015-06-17 17:00 | 58 | 50% | 2d |  |  |  | 0.5d | 0d |  | 32h | 16h | 32 |  | 16 |
| 68 | 7.2.3.1 | Página Principal | 0.75d | 2015-06-12 08:00 A | 2015-06-12 15:00 A |  | 100% |  |  |  |  |  |  | Pier | 6h | 6h | 6 |  | 6 |
| 69 | 7.2.3.2 | Inicio Session | 0.75d | 2015-06-12 15:00 A | 2015-06-15 12:00 A | 68 | 100% |  |  |  |  |  |  | Pier | 6h | 6h | 6 |  | 6 |
| 70 | 7.2.3.3 | Mantener Colecciones | 1.5d | 2015-06-15 13:00 A | 2015-06-16 17:00 | 69 | 33% | 1d |  |  |  | 0.5d | 0d | Pier | 12h | 4h | 12 |  | 4 |
| 71 | 7.2.3.4 | Configurar limite de descarga | 0.5d | 2015-06-17 08:00 | 2015-06-17 12:00 | 70 |  |  |  |  |  | 0.5d | 0d | Pier | 4h |  | 4 |  |  |
| 72 | 7.2.3.5 | Revisión/Corrección con UX | 0.5d | 2015-06-17 13:00 | 2015-06-17 17:00 | 71 |  |  |  |  |  | 0.5d |  | Pier | 4h |  | 4 |  |  |
| 73 | 7.2.4 | Crear proyecto web angular | 2d | 2015-06-18 08:00 | 2015-06-19 17:00 | 67 |  |  |  |  |  | 0.5d |  | Pier | 16h |  | 16 |  |  |
| 74 | 7.3 | **PhoneGap** | 15d | 2015-06-22 08:00 | 2015-07-13 17:00 | 54 |  |  | 2015-05-13 15:00 | 2015-06-12 10:00 | 21.5d? | 0.5d | 0d |  | 120h |  | 120 | 172 |  |
| 75 | 7.3.1 | Creación proyecto base | 1d | 2015-06-22 08:00 | 2015-06-22 17:00 |  |  |  |  |  |  | 0.5d | 0d | Pier | 8h |  | 8 |  |  |
| 76 | 7.3.2 | Revisión de pares | 0.5d | 2015-06-23 08:00 | 2015-06-23 12:00 | 75 |  |  |  |  |  | 0.5d | 0d | Pier | 4h |  | 4 |  |  |
| 77 | 7.3.3 | Creación archivo de propiedades | 0.5d | 2015-06-23 13:00 | 2015-06-23 17:00 | 76 |  |  |  |  |  | 0.5d | 0d | Pier | 4h |  | 4 |  |  |

| ID | WBS | Task | Duration | Start | Finish | Predecessors | Total slack | Free slack | Resources | Work | Cost |
| --- | --- | --- | --- | --- | --- | --- | --- | --- | --- | --- | --- |
| 78 | 7.3.4 | **CUM-001: Autenticar usuario, CUM-011: Cerrar Sesión** | 2.5d | 2015-06-24 08:00 | 2015-06-26 12:00 | 77 | 0.5d | 0d |  | 20h | 20 |
| 79 | 7.3.4.1 | Consumir servicio | 0.25d | 2015-06-24 08:00 | 2015-06-24 10:00 |  | 0.5d | 0d | Pier | 2h | 2 |
| 80 | 7.3.4.2 | **Crear BD local en el móvil** | 1.5d | 2015-06-24 10:00 | 2015-06-25 15:00 | 79 | 0.5d | 0d |  | 12h | 12 |
| 81 | 7.3.4.2.1 | Plugin sqlite | 0.5d | 2015-06-24 10:00 | 2015-06-24 15:00 |  | 0.5d | 0d | Pier | 4h | 4 |
| 82 | 7.3.4.2.2 | Creación de estructura BD | 0.5d | 2015-06-24 15:00 | 2015-06-25 10:00 | 81 | 0.5d | 0d | Pier | 4h | 4 |
| 83 | 7.3.4.2.3 | Llenar paises con carga inicial / consumir servicio web de paises | 0.5d | 2015-06-25 10:00 | 2015-06-25 15:00 | 82 | 0.5d | 0d | Pier | 4h | 4 |
| 84 | 7.3.4.3 | Guardar sesión | 0.5d | 2015-06-25 15:00 | 2015-06-26 10:00 | 83, 80 | 0.5d | 0d | Pier | 4h | 4 |
| 85 | 7.3.4.4 | Cerrar sesión | 0.25d | 2015-06-26 10:00 | 2015-06-26 12:00 | 84 | 0.5d |  | Pier | 2h | 2 |
| 86 | 7.3.5 | **CUM-004: Navegar por Colecciones y Archivos, CUM-005: Ver Archivos** | 2.25d | 2015-06-26 13:00 | 2015-07-01 15:00 | 78 | 0.5d | 0d |  | 18h | 18 |
| 87 | 7.3.5.1 | Manejo de nagevabilidad | 0.5d | 2015-06-26 13:00 | 2015-06-26 17:00 |  | 0.5d | 0d | Pier | 4h | 4 |
| 88 | 7.3.5.2 | Abrir archivo | 1d | 2015-06-30 08:00 | 2015-06-30 17:00 | 87 | 0.5d | 0d | Pier | 8h | 8 |
| 89 | 7.3.5.3 | Actualizar panel de notificacion para eliminar visto | 0.5d | 2015-07-01 08:00 | 2015-07-01 12:00 | 88 | 0.5d | 0d | Pier | 4h | 4 |
| 90 | 7.3.5.4 | Mostrar mensaje de confirmación para descargar con red movil (validacion peso máximo) | 0.25d | 2015-07-01 13:00 | 2015-07-01 15:00 | 89 | 0.5d |  | Pier | 2h | 2 |
| 91 | 7.3.6 | **CUM-002: Sincronizar Datos, CUM-003: Mostrar Nuevo Contenido, CUM-008: Mostrar Notificación Nativa** | 4d | 2015-07-01 15:00 | 2015-07-07 15:00 | 86 | 0.5d | 0d |  | 32h | 32 |
| 92 | 7.3.6.1 | Consumir servicio (sincronización al inicio, primer plano y a demanda) | 0.75d | 2015-07-01 15:00 | 2015-07-02 12:00 |  | 0.5d | 0d | Pier | 6h | 6 |
| 93 | 7.3.6.2 | Guardar datos | 1d | 2015-07-02 13:00 | 2015-07-03 12:00 | 92 | 0.5d | 0d | Pier | 8h | 8 |
| 94 | 7.3.6.3 | Actualizar panel de notificacion | 0.5d | 2015-07-03 13:00 | 2015-07-03 17:00 | 93 | 0.5d | 0d | Pier | 4h | 4 |
| 95 | 7.3.6.4 | Actualizar panel de configuración (fecha ultima sincronización) | 0.25d | 2015-07-06 08:00 | 2015-07-06 10:00 | 94 | 0.5d | 0d | Pier | 2h | 2 |
| 96 | 7.3.6.5 | Configuración para notificaciones push (panel nativo) | 1d | 2015-07-06 10:00 | 2015-07-07 10:00 | 95 | 0.5d | 0d | Pier | 8h | 8 |
| 97 | 7.3.6.6 | Mensaje confirmación éxito/error sincronización por conexión de internet | 0.5d | 2015-07-07 10:00 | 2015-07-07 15:00 | 96 | 0.5d |  | Pier | 4h | 4 |
| 98 | 7.3.7 | **CUM-006: Descargar Archivo, CUM-010: Permitir uso de red móvil en descarga** | 0.75d | 2015-07-07 15:00 | 2015-07-08 12:00 | 91 | 0.5d | 0d |  | 6h | 6 |
| 99 | 7.3.7.1 | Guardar archivo | 0.25d | 2015-07-07 15:00 | 2015-07-07 17:00 |  | 0.5d | 0d | Pier | 2h | 2 |
| 100 | 7.3.7.2 | Marcar contenido como descargado | 0.25d | 2015-07-08 08:00 | 2015-07-08 10:00 | 99 | 0.5d | 0d | Pier | 2h | 2 |
| 101 | 7.3.7.3 | Mostrar mensaje de confirmación para descargar con red movil (validacion umbral) | 0.25d | 2015-07-08 10:00 | 2015-07-08 12:00 | 100 | 0.5d |  | Pier | 2h | 2 |

Notes:
- 80: plugin sqlite / creación de estructura base / llenar paises con carga inicial / consumir servicio web de paises

| ID | WBS | Task | Duration | Start | Finish | Predecessors | Complete | Remaining | Baseline start | Baseline finish | Baseline duration | Total slack | Free slack | Resources | Work | Actual work | Cost | Baseline cost | Actual cost |
| --- | --- | --- | --- | --- | --- | --- | --- | --- | --- | --- | --- | --- | --- | --- | --- | --- | --- | --- | --- |
| 102 | 7.3.8 | **CUM-007: Eliminar Archivos** | 0.5d | 2015-07-08 13:00 | 2015-07-08 17:00 | 98 |  |  |  |  |  | 0.5d | 0d |  | 4h |  | 4 |  |  |
| 103 | 7.3.8.1 | Elimnar datos de BD y file system local | 0.5d | 2015-07-08 13:00 | 2015-07-08 17:00 |  |  |  |  |  |  | 0.5d |  | Pier | 4h |  | 4 |  |  |
| 104 | 7.3.9 | **CUM-009: Enviar métricas** | 1.5d | 2015-07-09 08:00 | 2015-07-10 12:00 | 102 |  |  |  |  |  | 0.5d | 0d |  | 12h |  | 12 |  |  |
| 105 | 7.3.9.1 | Enviar bitacora | 0.5d | 2015-07-09 08:00 | 2015-07-09 12:00 |  |  |  |  |  |  | 0.5d | 0d | Pier | 4h |  | 4 |  |  |
| 106 | 7.3.9.2 | Configurar google analytics | 0.5d | 2015-07-09 13:00 | 2015-07-09 17:00 | 105 |  |  |  |  |  | 0.5d | 0d | Pier | 4h |  | 4 |  |  |
| 107 | 7.3.9.3 | Colocar url de google analytics en las acciones | 0.5d | 2015-07-10 08:00 | 2015-07-10 12:00 | 106 |  |  |  |  |  | 0.5d |  | Pier | 4h |  | 4 |  |  |
| 108 | 7.3.10 | Pruebas desarrollador | 1d | 2015-07-10 13:00 | 2015-07-13 12:00 | 104 |  |  |  |  |  | 0.5d | 0d | Pier | 8h |  | 8 |  |  |
| 109 | 7.3.11 | Revisión de pares | 0.5d | 2015-07-13 13:00 | 2015-07-13 17:00 | 108 |  |  |  |  |  | 0.5d |  | Pier | 4h |  | 4 |  |  |
| 110 | 7.4 | **Web Services** | 18.75d | 2015-06-03 15:00 A | 2015-07-01 12:00 |  | 25% | 14.06d | 2015-05-07 15:00 | 2015-06-10 15:00 | 24d? | 0.5d |  |  | 200h | 50h | 200 | 192 | 50 |
| 111 | 7.4.1 | **Componentes Comunes** | 6.25d | 2015-06-03 15:00 A | 2015-06-11 17:00 A |  | 100% |  |  |  |  |  |  |  | 50h | 50h | 50 |  | 50 |
| 112 | 7.4.1.1 | Creación servicio web y estructura base (184) | 2d | 2015-06-03 15:00 A | 2015-06-05 15:00 A |  | 100% |  | 2015-05-11 15:00 | 2015-05-13 15:00 | 2d |  |  | Lennin | 16h | 16h | 16 | 16 | 16 |
| 113 | 7.4.1.2 | Implementación utilitarios base - parseo, conversión (186) | 1.75d | 2015-06-05 15:00 A | 2015-06-09 12:00 A | 112 | 100% |  | 2015-05-18 15:00 | 2015-05-20 15:00 | 2d |  |  | Lennin | 14h | 14h | 14 | 16 | 14 |
| 114 | 7.4.1.3 | EnviarBitacora (185) | 1d | 2015-06-09 13:00 A | 2015-06-10 12:00 A | 113 | 100% |  | 2015-05-13 15:00 | 2015-05-18 15:00 | 3d |  |  | Lennin | 8h | 8h | 8 | 24 | 8 |
| 115 | 7.4.1.4 | Log Errores | 1.5d | 2015-06-10 13:00 A | 2015-06-11 17:00 A | 114 | 100% |  |  |  |  |  |  | Lennin | 12h | 12h | 12 |  | 12 |
| 116 | 7.4.2 | **Móvil** | 3.5d | 2015-06-17 08:00 | 2015-06-22 12:00 | 50 |  |  |  |  |  | 0.75d |  |  | 28h |  | 28 |  |  |
| 117 | 7.4.2.1 | ObtenerColeccionesArchivos | 2d | 2015-06-17 08:00 | 2015-06-18 17:00 |  |  |  | 2015-05-25 15:00 | 2015-05-26 15:00 | 1d | 0.75d | 0d | Lennin | 16h |  | 16 | 8 |  |
| 118 | 7.4.2.2 | Registrar Sesión | 1d | 2015-06-19 08:00 | 2015-06-19 17:00 | 117 |  |  | 2015-05-22 15:00 | 2015-05-25 15:00 | 1d | 0.75d | 0d | Lennin | 8h |  | 8 | 8 |  |
| 119 | 7.4.2.3 | CerrarSesión | 0.5d | 2015-06-22 08:00 | 2015-06-22 12:00 | 118 |  |  |  |  |  | 0.75d | 0d | Lennin | 4h |  | 4 |  |  |
| 120 | 7.4.3 | **Web** | 9.5d | 2015-06-17 08:00 | 2015-07-01 12:00 |  |  |  |  |  |  | 0.5d |  |  | 122h |  | 122 |  |  |
| 121 | 7.4.3.1 | RegistrarSesion | 0.5d | 2015-06-22 13:00 | 2015-06-22 17:00 | 119 |  |  |  |  |  | 0.75d | 0d | Lennin | 4h |  | 4 |  |  |
| 122 | 7.4.3.2 | **EnviarNotificacionPush** | 3.25d | 2015-06-23 08:00 | 2015-06-26 10:00 | 121 |  |  |  |  |  | 0.75d | 0d |  | 26h |  | 26 |  |  |
| 123 | 7.4.3.2.1 | Implementar módulo de notificaciones | 1d | 2015-06-23 08:00 | 2015-06-23 17:00 |  |  |  |  |  |  | 0.75d | 0d | Lennin | 8h |  | 8 |  |  |
| 124 | 7.4.3.2.2 | Android | 0.75d | 2015-06-24 08:00 | 2015-06-24 15:00 | 123 |  |  |  |  |  | 0.75d | 0d | Lennin | 6h |  | 6 |  |  |
| 125 | 7.4.3.2.3 | iOS | 0.75d | 2015-06-24 15:00 | 2015-06-25 12:00 | 124 |  |  |  |  |  | 0.75d | 0d | Lennin | 6h |  | 6 |  |  |
| 126 | 7.4.3.2.4 | Windows Phone | 0.75d | 2015-06-25 13:00 | 2015-06-26 10:00 | 125 |  |  |  |  |  | 0.75d |  | Lennin | 6h |  | 6 |  |  |
| 127 | 7.4.3.3 | ListarRoles | 0.75d | 2015-06-26 10:00 | 2015-06-26 17:00 | 122 |  |  |  |  |  | 0.75d | 0d | Lennin | 6h |  | 6 |  |  |
| 128 | 7.4.3.4 | ListarPaises | 0.75d | 2015-06-30 08:00 | 2015-06-30 15:00 | 127 |  |  |  |  |  | 0.75d | 0d | Lennin | 6h |  | 6 |  |  |
| 129 | 7.4.3.5 | CerrarSesion | 0.5d | 2015-06-30 15:00 | 2015-07-01 10:00 | 128 |  |  |  |  |  | 0.75d | 0d | Lennin | 4h |  | 4 |  |  |
| 130 | 7.4.3.6 | ListarUmbrales | 0.5d | 2015-06-17 08:00 | 2015-06-17 12:00 | 111, 50 |  |  |  |  |  | 0.5d | 0d | Alex | 4h |  | 4 |  |  |
| 131 | 7.4.3.7 | ObtenerUmbral | 0.5d | 2015-06-17 13:00 | 2015-06-17 17:00 | 130 |  |  |  |  |  | 0.5d | 0d | Alex | 4h |  | 4 |  |  |
| 132 | 7.4.3.8 | ActualizarUmbral | 0.5d | 2015-06-18 08:00 | 2015-06-18 12:00 | 131 |  |  |  |  |  | 0.5d | 0d | Alex | 4h |  | 4 |  |  |
| 133 | 7.4.3.9 | ListarColecciones | 0.5d | 2015-06-18 13:00 | 2015-06-18 17:00 | 132 |  |  |  |  |  | 0.5d | 0d | Alex | 4h |  | 4 |  |  |
| 134 | 7.4.3.10 | InsertarColeccion | 0.5d | 2015-06-19 08:00 | 2015-06-19 12:00 | 133 |  |  |  |  |  | 0.5d | 0d | Alex | 4h |  | 4 |  |  |
| 135 | 7.4.3.11 | EliminarColeccion | 0.5d | 2015-06-19 13:00 | 2015-06-19 17:00 | 134 |  |  |  |  |  | 0.5d | 0d | Alex | 4h |  | 4 |  |  |
| 136 | 7.4.3.12 | ObtenerColeccion | 0.5d | 2015-06-22 08:00 | 2015-06-22 12:00 | 135 |  |  |  |  |  | 0.5d | 0d | Alex | 4h |  | 4 |  |  |
| 137 | 7.4.3.13 | ActualizarColeccion | 0.5d | 2015-06-22 13:00 | 2015-06-22 17:00 | 136 |  |  |  |  |  | 0.5d | 0d | Alex | 4h |  | 4 |  |  |
| 138 | 7.4.3.14 | ListarArchivos | 0.5d | 2015-06-23 08:00 | 2015-06-23 12:00 | 137 |  |  |  |  |  | 0.5d | 0d | Alex | 4h |  | 4 |  |  |
| 139 | 7.4.3.15 | InsertarArchivo | 1.5d | 2015-06-23 13:00 | 2015-06-24 17:00 | 138 |  |  |  |  |  | 0.5d | 0d | Alex | 12h |  | 12 |  |  |
| 140 | 7.4.3.16 | EliminarArchivo | 1.5d | 2015-06-25 08:00 | 2015-06-26 12:00 | 139 |  |  |  |  |  | 0.5d | 0d | Alex | 12h |  | 12 |  |  |
| 141 | 7.4.3.17 | ObtenerArchivo | 0.5d | 2015-06-26 13:00 | 2015-06-26 17:00 | 140 |  |  |  |  |  | 0.5d | 0d | Alex | 4h |  | 4 |  |  |
| 142 | 7.4.3.18 | ActualizarArchivo | 0.5d | 2015-06-30 08:00 | 2015-06-30 12:00 | 141 |  |  |  |  |  | 0.5d | 0d | Alex | 4h |  | 4 |  |  |
| 143 | 7.4.3.19 | ObtenerRutaOrigen | 0.5d | 2015-06-30 13:00 | 2015-06-30 17:00 | 142 |  |  |  |  |  | 0.5d | 0d | Alex | 4h |  | 4 |  |  |
| 144 | 7.4.3.20 | MoverArchivo | 0.5d | 2015-07-01 08:00 | 2015-07-01 12:00 | 143 |  |  |  |  |  | 0.5d | 0d | Alex | 4h |  | 4 |  |  |

| ID | WBS | Task | Duration | Start | Finish | Predecessors | Baseline start | Baseline finish | Baseline duration | Total slack | Free slack | Resources | Work | Cost | Baseline cost |
| --- | --- | --- | --- | --- | --- | --- | --- | --- | --- | --- | --- | --- | --- | --- | --- |
| 145 | 7.5 | **Portal Web** | 8.75d | 2015-07-01 10:00 | 2015-07-13 17:00 |  | 2015-06-10 15:00 | 2015-07-02 15:00 | 15d? | 0.5d | 0d |  | 136h | 136 | 120 |
| 146 | 7.5.1 | **CUW-001: Iniciar sesión, CUW-007: Cerrar Sesión** | 2d | 2015-07-01 13:00 | 2015-07-03 12:00 | 144 | 2015-06-11 15:00 | 2015-06-12 10:00 | 0.5d | 0.5d | 0d |  | 16h | 16 | 4 |
| 147 | 7.5.1.1 | Consumir servicio Yanbal | 0.75d | 2015-07-01 13:00 | 2015-07-02 10:00 |  | 2015-06-12 10:00 | 2015-06-15 10:00 | 1d | 0.5d | 0d | Alex | 6h | 6 | 8 |
| 148 | 7.5.1.2 | Registrar sesión | 0.5d | 2015-07-02 10:00 | 2015-07-02 15:00 | 147 | 2015-06-15 10:00 | 2015-06-16 10:00 | 1d | 0.5d | 0d | Alex | 4h | 4 | 8 |
| 149 | 7.5.1.3 | Listar paises | 0.5d | 2015-07-02 15:00 | 2015-07-03 10:00 | 148 |  |  |  | 0.5d | 0d | Alex | 4h | 4 |  |
| 150 | 7.5.1.4 | Cerrar Sesión | 0.25d | 2015-07-03 10:00 | 2015-07-03 12:00 | 149 |  |  |  | 0.5d |  | Alex | 2h | 2 |  |
| 151 | 7.5.2 | **CUW-002: Configurar tamaño de Carga y Descarga** | 1.5d | 2015-07-03 13:00 | 2015-07-06 17:00 | 146 | 2015-06-16 10:00 | 2015-06-18 10:00 | 2d | 0.5d | 0d |  | 12h | 12 | 16 |
| 152 | 7.5.2.1 | Listar Limites de Carga y Descarga | 0.75d | 2015-07-03 13:00 | 2015-07-06 10:00 |  | 2015-06-18 10:00 | 2015-06-19 10:00 | 1d | 0.5d | 0d | Alex | 6h | 6 | 8 |
| 153 | 7.5.2.2 | Editar Limite Carga y Descarga | 0.75d | 2015-07-06 10:00 | 2015-07-06 17:00 | 152 |  |  |  | 0.5d |  | Alex | 6h | 6 |  |
| 154 | 7.5.3 | **CUW-006 Enviar Notificaciones** | 1d | 2015-07-07 08:00 | 2015-07-07 17:00 | 151 |  |  |  | 0.5d | 0d |  | 8h | 8 |  |
| 155 | 7.5.3.1 | Indicador de publicaciones pendientes | 0.5d | 2015-07-07 08:00 | 2015-07-07 12:00 |  |  |  |  | 0.5d | 0d | Alex | 4h | 4 |  |
| 156 | 7.5.3.2 | Validar mensaje | 0.25d | 2015-07-07 13:00 | 2015-07-07 15:00 | 155 |  |  |  | 0.5d | 0d | Alex | 2h | 2 |  |
| 157 | 7.5.3.3 | Enviar notificación push | 0.25d | 2015-07-07 15:00 | 2015-07-07 17:00 | 156 |  |  |  | 0.5d |  | Alex | 2h | 2 |  |
| 158 | 7.5.4 | **CUW-005 Mover Archivos** | 2.5d | 2015-07-08 08:00 | 2015-07-10 12:00 | 154 |  |  |  | 0.5d | 0d |  | 20h | 20 |  |
| 159 | 7.5.4.1 | Listar Coleccion | 1d | 2015-07-08 08:00 | 2015-07-08 17:00 |  |  |  |  | 0.5d | 0d | Alex | 8h | 8 |  |
| 160 | 7.5.4.2 | Mover Archivo | 1.5d | 2015-07-09 08:00 | 2015-07-10 12:00 | 159 |  |  |  | 0.5d |  | Alex | 12h | 12 |  |
| 161 | 7.5.5 | **CUW-003: Gestionar Colecciones** | 3d | 2015-07-01 10:00 | 2015-07-06 10:00 | 129 |  |  |  | 0.75d | 0d |  | 24h | 24 |  |
| 162 | 7.5.5.1 | Listar Coleccion | 0.75d | 2015-07-01 10:00 | 2015-07-01 17:00 |  |  |  |  | 0.75d | 0d | Lennin | 6h | 6 |  |
| 163 | 7.5.5.2 | Crear Coleccion | 0.75d | 2015-07-02 08:00 | 2015-07-02 15:00 | 162 |  |  |  | 0.75d | 0d | Lennin | 6h | 6 |  |
| 164 | 7.5.5.3 | Editar Coleccion | 0.75d | 2015-07-02 15:00 | 2015-07-03 12:00 | 163 |  |  |  | 0.75d | 0d | Lennin | 6h | 6 |  |
| 165 | 7.5.5.4 | Ver Coleccion | 0.5d | 2015-07-03 13:00 | 2015-07-03 17:00 | 164 |  |  |  | 0.75d | 0d | Lennin | 4h | 4 |  |
| 166 | 7.5.5.5 | Eliminar Coleccion | 0.25d | 2015-07-06 08:00 | 2015-07-06 10:00 | 165 |  |  |  | 0.75d |  | Lennin | 2h | 2 |  |
| 167 | 7.5.6 | **CUW-004: Gestionar Archivos** | 4.5d | 2015-07-06 10:00 | 2015-07-10 15:00 | 161 |  |  |  | 0.75d | 0.25d |  | 36h | 36 |  |
| 168 | 7.5.6.1 | Listar Archivo | 1d | 2015-07-06 10:00 | 2015-07-07 10:00 |  |  |  |  | 0.75d | 0d | Lennin | 8h | 8 |  |
| 169 | 7.5.6.2 | Crear Archivo | 1d | 2015-07-07 10:00 | 2015-07-08 10:00 | 168 |  |  |  | 0.75d | 0d | Lennin | 8h | 8 |  |
| 170 | 7.5.6.3 | Editar Archivo | 0.5d | 2015-07-08 10:00 | 2015-07-08 15:00 | 169 |  |  |  | 0.75d | 0d | Lennin | 4h | 4 |  |
| 171 | 7.5.6.4 | Ver detalle Archivo | 0.5d | 2015-07-08 15:00 | 2015-07-09 10:00 | 170 |  |  |  | 0.75d | 0d | Lennin | 4h | 4 |  |
| 172 | 7.5.6.5 | Listar Roles | 0.5d | 2015-07-09 10:00 | 2015-07-09 15:00 | 171 |  |  |  | 0.75d | 0d | Lennin | 4h | 4 |  |
| 173 | 7.5.6.6 | Validar limite de Carga de archivo | 0.25d | 2015-07-09 15:00 | 2015-07-09 17:00 | 172 |  |  |  | 0.75d | 0d | Lennin | 2h | 2 |  |
| 174 | 7.5.6.7 | Eliminar Archivo | 0.75d | 2015-07-10 08:00 | 2015-07-10 15:00 | 173 |  |  |  | 0.75d |  | Lennin | 6h | 6 |  |
| 175 | 7.5.7 | Seguridad (SSL) | 0.5d | 2015-07-10 13:00 | 2015-07-10 17:00 | 158 | 2015-05-20 15:00 | 2015-05-22 15:00 | 2d? | 0.5d | 0d | Alex | 4h | 4 | 16 |
| 176 | 7.5.8 | Pruebas de desarrollador | 0.5d | 2015-07-13 08:00 | 2015-07-13 12:00 | 175, 167 |  |  |  | 0.5d | 0d | Lennin; Alex | 8h | 8 |  |
| 177 | 7.5.9 | Revisión de pares | 0.5d | 2015-07-13 13:00 | 2015-07-13 17:00 | 176 |  |  |  | 0.5d |  | Lennin; Alex | 8h | 8 |  |
| 178 | 7.6 | Pruebas integración | 1d | 2015-07-14 08:00 | 2015-07-14 17:00 | 145, 74 |  |  |  | 0.5d | 0d | Alex; Lennin; Pier | 24h | 24 |  |
| 179 | 7.7 | Configuración Ambientes de QA | 1d | 2015-07-15 08:00 | 2015-07-15 17:00 | 178 |  |  |  | 0.5d | 0d | Alex; Lennin; Pier | 24h | 24 |  |

| ID | WBS | Task | Duration | Start | Finish | Predecessors | Complete | Remaining | Total slack | Free slack | Constraint | Resources | Work | Actual work | Cost | Actual cost |
| --- | --- | --- | --- | --- | --- | --- | --- | --- | --- | --- | --- | --- | --- | --- | --- | --- |
| 180 | 8 | **Aseguramiento de la calidad** | 54d | 2015-05-18 08:00 A | 2015-08-04 17:00 |  | 11% | 48.12d | 0d |  |  |  | 984h | 108h | 984 | 108 |
| 181 | 8.1 | **Planificación de Pruebas** | 28.5d | 2015-05-18 08:00 A | 2015-06-25 12:00 |  | 63% | 10.6d | 14d | 13.5d |  |  | 164h | 108h | 164 | 108 |
| 182 | 8.1.1 | LCP - Listado de Casos de Prueba (164) | 2d | 2015-05-18 08:00 A | 2015-05-19 17:00 A |  | 100% |  |  |  |  | QAI - 1 | 16h | 16h | 16 | 16 |
| 183 | 8.1.2 | ECP - Especificación de Casos de Prueba (165) | 8d | 2015-05-20 08:00 A | 2015-05-29 17:00 A | 182 | 100% |  |  |  |  | QAI - 1 | 64h | 64h | 64 | 64 |
| 184 | 8.1.3 | Actualización de LCP (237) | 2.5d | 2015-06-10 08:00 A | 2015-06-12 12:00 A |  | 100% |  |  |  | start no earlier than 2015-06-10 08:00 | Cecilia Garcia | 20h | 20h | 20 | 20 |
| 185 | 8.1.4 | Plan de Pruebas Funcionales y de Rendimiento (163) | 3d | 2015-06-12 13:00 A | 2015-06-17 12:00 | 184 | 33% | 2d | 14d | 0d |  | Cecilia Garcia [50%] | 16h | 8h | 16 | 8 |
| 186 | 8.1.5 | Actualización de ECP | 5d | 2015-06-17 13:00 | 2015-06-24 12:00 | 185 |  |  | 14d | 0d |  | QAI - 1 | 40h |  | 40 |  |
| 187 | 8.1.6 | Pruebas No Funcionales (236) | 1d | 2015-06-24 13:00 | 2015-06-25 12:00 | 186 |  |  | 14d |  |  | QAI - 1 | 8h |  | 8 |  |
| 188 | 8.2 | **Ejecución de Pruebas** | 10d | 2015-07-16 08:00 | 2015-07-31 17:00 | 181, 49 |  |  | 0.5d | 0d |  |  | 640h |  | 640 |  |
| 189 | 8.2.1 | **Móvil** | 10d | 2015-07-16 08:00 | 2015-07-31 17:00 |  |  |  | 0.5d |  |  |  | 544h |  | 544 |  |
| 190 | 8.2.1.1 | **Funcionales** | 6d | 2015-07-16 08:00 | 2015-07-23 17:00 |  |  |  | 0.5d | 0d |  |  | 384h |  | 384 |  |
| 191 | 8.2.1.1.1 | **Tablet** | 6d | 2015-07-16 08:00 | 2015-07-23 17:00 |  |  |  | 0.5d |  |  |  | 168h |  | 168 |  |
| 192 | 8.2.1.1.1.1 | Samsung de 10.1" /SO Android 4.1.2 (Principal) | 6d | 2015-07-16 08:00 | 2015-07-23 17:00 |  |  |  | 0.5d |  |  | QAI - 1 | 48h |  | 48 |  |
| 193 | 8.2.1.1.1.2 | Ipad SO 7 (Principal) | 6d | 2015-07-16 08:00 | 2015-07-23 17:00 |  |  |  | 0.5d |  |  | Tester - 1 | 48h |  | 48 |  |
| 194 | 8.2.1.1.1.3 | Lenovo 7" / SO Android 4.2.2 (Secundario) | 3d | 2015-07-16 08:00 | 2015-07-20 17:00 |  |  |  | 0.5d | 0d |  | Tester - 2 | 24h |  | 24 |  |
| 195 | 8.2.1.1.1.4 | AOC / SO: Android 4.1.1 (Secundario) | 3d | 2015-07-16 08:00 | 2015-07-20 17:00 |  |  |  | 0.5d | 0d |  | Tester - 3 | 24h |  | 24 |  |
| 196 | 8.2.1.1.1.5 | Ipad SO 8 (Secundario) | 3d | 2015-07-16 08:00 | 2015-07-20 17:00 |  |  |  | 0.5d | 0d |  | Tester - 4 | 24h |  | 24 |  |
| 197 | 8.2.1.1.2 | **SmartPhone** | 6d | 2015-07-16 08:00 | 2015-07-23 17:00 |  |  |  | 0.5d |  |  |  | 216h |  | 216 |  |
| 198 | 8.2.1.1.2.1 | Nokia Lumia 520 / SO: Windows Phone 8.0 (Principal) | 6d | 2015-07-16 08:00 | 2015-07-23 17:00 |  |  |  | 0.5d |  |  | QAI - 3 | 48h |  | 48 |  |
| 199 | 8.2.1.1.2.2 | Samsung Galaxy S III Mini / SO: Android 4.1.2 (Principal) | 6d | 2015-07-16 08:00 | 2015-07-23 17:00 |  |  |  | 0.5d |  |  | Tester - 5 | 48h |  | 48 |  |
| 200 | 8.2.1.1.2.3 | Iphone 4 / iSO 7 (Principal) | 6d | 2015-07-16 08:00 | 2015-07-23 17:00 |  |  |  | 0.5d |  |  | Tester - 6 | 48h |  | 48 |  |
| 201 | 8.2.1.1.2.4 | Samsung Galaxy Chat/SO -SO Android 4.1.2 (Secundario) | 3d | 2015-07-21 08:00 | 2015-07-23 17:00 | 194 |  |  | 0.5d |  |  | Tester - 2 | 24h |  | 24 |  |
| 202 | 8.2.1.1.2.5 | Iphone 5 / iSO 7 (Secundario) | 3d | 2015-07-21 08:00 | 2015-07-23 17:00 | 195 |  |  | 0.5d |  |  | Tester - 3 | 24h |  | 24 |  |
| 203 | 8.2.1.1.2.6 | Iphone 6 / iSO 7 (Secundario) | 3d | 2015-07-21 08:00 | 2015-07-23 17:00 | 196 |  |  | 0.5d |  |  | Tester - 4 | 24h |  | 24 |  |

| ID | WBS | Task | Duration | Start | Finish | Predecessors | Total slack | Free slack | Resources | Work | Cost |
| --- | --- | --- | --- | --- | --- | --- | --- | --- | --- | --- | --- |
| 204 | 8.2.1.2 | **No Funcionales** | 4d | 2015-07-24 08:00 | 2015-07-31 17:00 | 190 | 0.5d |  |  | 160h | 160 |
| 205 | 8.2.1.2.1 | **Tablet** | 4d | 2015-07-24 08:00 | 2015-07-31 17:00 |  | 0.5d |  |  | 64h | 64 |
| 206 | 8.2.1.2.1.1 | Samsung de 10.1" /SO Android 4.1.2 (Principal) | 4d | 2015-07-24 08:00 | 2015-07-31 17:00 |  | 0.5d |  | QAI - 1 | 32h | 32 |
| 207 | 8.2.1.2.1.2 | Ipad SO 7 (Principal) | 4d | 2015-07-24 08:00 | 2015-07-31 17:00 |  | 0.5d |  | Tester - 1 | 32h | 32 |
| 208 | 8.2.1.2.2 | **SmartPhone** | 4d | 2015-07-24 08:00 | 2015-07-31 17:00 |  | 0.5d |  |  | 96h | 96 |
| 209 | 8.2.1.2.2.1 | Nokia Lumia 520 / SO: Windows Phone 8.0 (Principal) | 4d | 2015-07-24 08:00 | 2015-07-31 17:00 |  | 0.5d |  | QAI - 3 | 32h | 32 |
| 210 | 8.2.1.2.2.2 | Samsung Galaxy S III Mini / SO: Android 4.1.2 (Principal) | 4d | 2015-07-24 08:00 | 2015-07-31 17:00 |  | 0.5d |  | Tester - 5 | 32h | 32 |
| 211 | 8.2.1.2.2.3 | Iphone 4 / iOS 7 (Principal) | 4d | 2015-07-24 08:00 | 2015-07-31 17:00 |  | 0.5d |  | Tester - 6 | 32h | 32 |
| 212 | 8.2.2 | **Web** | 6d | 2015-07-16 08:00 | 2015-07-23 17:00 |  | 3d | 0d |  | 96h | 96 |
| 213 | 8.2.2.1 | **Browser - IE9 (Principal)** | 4.5d | 2015-07-16 08:00 | 2015-07-22 12:00 |  | 3d | 0d |  | 72h | 72 |
| 214 | 8.2.2.1.1 | Ejecución de casos de prueba funcionales | 3d | 2015-07-16 08:00 | 2015-07-20 17:00 |  | 3d | 0d | QAI - 2; Tester - 7 | 48h | 48 |
| 215 | 8.2.2.1.2 | Reporte de errores | 0.5d | 2015-07-21 08:00 | 2015-07-21 12:00 | 214 | 3d | 0d | QAI - 2; Tester - 7 | 8h | 8 |
| 216 | 8.2.2.1.3 | Verificación de errores | 0.5d | 2015-07-21 13:00 | 2015-07-21 17:00 | 215 | 3d | 0d | QAI - 2; Tester - 7 | 8h | 8 |
| 217 | 8.2.2.1.4 | Pruebas exploratoria | 0.5d | 2015-07-22 08:00 | 2015-07-22 12:00 | 216 | 3d |  | QAI - 2; Tester - 7 | 8h | 8 |
| 218 | 8.2.2.2 | Browser - Chrome 40 (Secundario) | 1.5d | 2015-07-22 13:00 | 2015-07-23 17:00 | 213 | 3d |  | QAI - 2; Tester - 7 | 24h | 24 |
| 219 | 8.3 | **Pruebas de Regresion** | 1.5d | 2015-08-03 08:00 | 2015-08-04 12:00 | 188 | 0.5d | 0d |  | 36h | 36 |
| 220 | 8.3.1 | Smartphone | 1.5d | 2015-08-03 08:00 | 2015-08-04 12:00 |  | 0.5d |  | QAI - 1 | 12h | 12 |
| 221 | 8.3.2 | Tablet | 1.5d | 2015-08-03 08:00 | 2015-08-04 12:00 |  | 0.5d |  | QAI - 3 | 12h | 12 |
| 222 | 8.3.3 | Web | 1.5d | 2015-08-03 08:00 | 2015-08-04 12:00 |  | 0.5d |  | QAI - 2 | 12h | 12 |
| 223 | 8.4 | **Soporte de Pruebas / Bug Fixing** | 12d | 2015-07-16 08:00 | 2015-08-04 17:00 | 188SS | 0d |  |  | 144h | 144 |
| 224 | 8.4.1 | Móvil | 12d | 2015-07-16 08:00 | 2015-08-04 17:00 |  | 0d |  | Pier [75%] | 72h | 72 |
| 225 | 8.4.2 | Web | 12d | 2015-07-16 08:00 | 2015-08-04 17:00 |  | 0d |  | Lennin [75%] | 72h | 72 |
| 226 | 9 | **Documentación** | 12d | 2015-07-16 08:00 | 2015-08-04 17:00 | 223SS | 0d |  |  | 72h | 72 |
| 227 | 9.1 | **Web** | 12d | 2015-07-16 08:00 | 2015-08-04 17:00 |  | 0d |  |  | 36h | 36 |
| 228 | 9.1.1 | Manual de Instalación | 8d | 2015-07-16 08:00 | 2015-07-27 17:00 |  | 0d |  | Lennin [25%] | 16h | 16 |
| 229 | 9.1.2 | Manual de soporte | 2d | 2015-07-30 08:00 | 2015-07-31 17:00 | 228 | 0d |  | Lennin [25%] | 4h | 4 |
| 230 | 9.1.3 | Release notes | 2d | 2015-08-03 08:00 | 2015-08-04 17:00 | 229 | 0d |  | Lennin [25%] | 4h | 4 |
| 231 | 9.1.4 | Manual de usuario | 1.5d | 2015-07-24 08:00 | 2015-07-27 12:00 | 212 | 3d | 0d | QAI - 2 | 12h | 12 |

Notes:
- 204: Considerando 6 caracteristicas "no funcionales" y 3 flujos funcionales (sincronizacion manual, abrir archivo, guardar archivo). Cubriendo 80% de la aplicacion.
- 219: Estrategia de pruebas de regresion: (despues de bug fixing) / 1) Principal Web / 2) Principal Smartphone / 3) Principal Tablet / Cada uno con set minimos y consideradando pruebas funcionales y no funcionales. No se generan evidencias en video.

| ID | WBS | Task | Type | Duration | Start | Finish | Predecessors | Total slack | Free slack | Constraint | Resources | Work | Cost |
| --- | --- | --- | --- | --- | --- | --- | --- | --- | --- | --- | --- | --- | --- |
| 232 | 9.2 | **Móvil** |  | 12d | 2015-07-16 08:00 | 2015-08-04 17:00 |  | 0d |  |  |  | 36h | 36 |
| 233 | 9.2.1 | Guía de Construcción |  | 8d | 2015-07-16 08:00 | 2015-07-27 17:00 |  | 0d |  |  | Pier [25%] | 16h | 16 |
| 234 | 9.2.2 | Manual de soporte |  | 2d | 2015-07-30 08:00 | 2015-07-31 17:00 | 233 | 0d |  |  | Pier [25%] | 4h | 4 |
| 235 | 9.2.3 | Release notes |  | 2d | 2015-08-03 08:00 | 2015-08-04 17:00 | 234 | 0d |  |  | Pier [25%] | 4h | 4 |
| 236 | 9.2.4 | Manual de usuario |  | 1.5d | 2015-07-27 13:00 | 2015-07-30 17:00 | 231 | 3d |  |  | QAI - 2 | 12h | 12 |
| 237 | 10 | **Generación de Binarios** |  | 1d | 2015-08-05 08:00 | 2015-08-05 17:00 | 226, 180 | 0d |  |  |  | 16h | 16 |
| 238 | 10.1 | Portal Web / Web Services |  | 1d | 2015-08-05 08:00 | 2015-08-05 17:00 |  | 0d |  |  | Lennin | 8h | 8 |
| 239 | 10.2 | Aplicaciones Moviles (iOS, Android, Windows Phone) |  | 1d | 2015-08-05 08:00 | 2015-08-05 17:00 |  | 0d |  |  | Pier | 8h | 8 |
| 240 | 11 | Preparación de Entregables |  | 1d | 2015-08-06 08:00 | 2015-08-06 17:00 | 237 | 0d |  |  | Lennin; Pier | 16h | 16 |
| 241 | 12 | **Despliegue Ambientes Certificación (QA) / UAT en Yanbal** |  | 1.5d | 2015-08-07 08:00 | 2015-08-10 12:00 | 240 | 0d |  |  |  | 36h | 36 |
| 242 | 12.1 | Instalacion y Configuracion de solucion |  | 1.5d | 2015-08-07 08:00 | 2015-08-10 12:00 |  | 0d |  |  | Yanbal | 12h | 12 |
| 243 | 12.2 | Soporte Avantica |  | 1.5d | 2015-08-07 08:00 | 2015-08-10 12:00 | 242SS | 0d |  |  | Pier; Lennin | 24h | 24 |
| 244 | 13 | **Pruebas de Rendimiento** |  | 8.5d | 2015-08-03 13:00 | 2015-08-13 17:00 |  | 0d |  |  |  | 68h | 68 |
| 245 | 13.1 | Análisis y Notas Iniciales |  | 0.5d | 2015-08-03 13:00 | 2015-08-04 08:00 | 246SF | 8d |  |  | Ricardo Jauregui | 4h | 4 |
| 246 | 13.2 | Creación de Scripts (Flujo: 6WS) |  | 4.5d | 2015-08-04 08:00 | 2015-08-10 13:00 | 247SF | 3.5d | 0d |  | Ricardo Jauregui | 36h | 36 |
| 247 | 13.3 | **Ejecución de Pruebas** |  | 2.5d | 2015-08-10 13:00 | 2015-08-12 17:00 | 241 | 0d |  |  |  | 20h | 20 |
| 248 | 13.3.1 | Preparación del Ambiente |  | 0.88d | 2015-08-10 13:00 | 2015-08-11 11:00 |  | 0d |  |  | Ricardo Jauregui | 7h | 7 |
| 249 | 13.3.2 | Prueba de Ambiente |  | 0.12d | 2015-08-11 11:00 | 2015-08-11 12:00 | 248 | 0d |  |  | Ricardo Jauregui | 1h | 1 |
| 250 | 13.3.3 | Ejecución prueba de carga |  | 1.5d | 2015-08-11 13:00 | 2015-08-12 17:00 | 249 | 0d |  |  | Ricardo Jauregui | 12h | 12 |
| 251 | 13.4 | **Documentación** |  | 1d | 2015-08-13 08:00 | 2015-08-13 17:00 | 247 | 0d |  |  |  | 8h | 8 |
| 252 | 13.4.1 | Parsing Logs |  | 0.38d | 2015-08-13 08:00 | 2015-08-13 11:00 |  | 0d |  |  | Ricardo Jauregui | 3h | 3 |
| 253 | 13.4.2 | Creación de documento de resultados |  | 0.62d | 2015-08-13 11:00 | 2015-08-13 17:00 | 252 | 0d |  |  | Ricardo Jauregui | 5h | 5 |
| 254 | 14 | **Certificacion Yanbal** |  | 0d | 2015-08-13 17:00 | 2015-08-13 17:00 | 244 | 0d |  |  |  |  |  |
| 255 | 14.1 | Ejecucion de Pruebas Equipo Yanbal | milestone | 0d | 2015-08-13 17:00 | 2015-08-13 17:00 |  | 0d |  |  |  |  |  |
| 256 | 14.2 | Soporte Avantica | milestone | 0d | 2015-08-13 17:00 | 2015-08-13 17:00 | 255SS | 0d |  |  |  |  |  |
| 257 | 15 | Fin Analisis | milestone | 0d | 2015-05-14 08:00 | 2015-05-14 08:00 |  | 63d |  | start no earlier than 2015-05-14 08:00 |  |  |  |
| 258 | 16 | Fin Diseño Tecnico | milestone | 0d | 2015-06-12 08:00 | 2015-06-12 08:00 |  | 42d |  | start no earlier than 2015-06-12 08:00 |  |  |  |
| 259 | 17 | Disponibilidad UX | milestone | 0d | 2015-04-29 08:00 | 2015-04-29 08:00 |  | 73d |  | start no earlier than 2015-04-29 08:00 |  |  |  |
| 260 | 18 | Fin Diseño Gráfico | milestone | 0d | 2015-05-25 17:00 | 2015-05-25 17:00 | 26 | 55d |  |  |  |  |  |
| 261 | 19 | Disponibilidad QA | milestone | 0d | 2015-05-18 08:00 | 2015-05-18 08:00 |  | 61d |  | start no earlier than 2015-05-18 08:00 |  |  |  |
| 262 | 20 | Desarrollo - Sesion Demo 1 | milestone | 0d | 2015-07-01 15:00 | 2015-07-01 15:00 | 86 | 29.25d |  |  |  |  |  |
| 263 | 21 | Desarrollo - Sesion Demo 2 | milestone | 0d | 2015-07-15 17:00 | 2015-07-15 17:00 | 179 | 19d |  |  |  |  |  |
| 264 | 22 | Fin de Desarrollo | milestone | 0d | 2015-07-15 17:00 | 2015-07-15 17:00 | 49 | 19d |  |  |  |  |  |
| 265 | 23 | Fin de QA (Sin Pruebas de Rendimiento) | milestone | 0d | 2015-08-04 12:00 | 2015-08-04 12:00 | 219 | 7.5d |  |  |  |  |  |
| 266 | 24 | Presentacion de Entregables de Producto y Proyecto | milestone | 0d | 2015-08-06 17:00 | 2015-08-06 17:00 | 240 | 5d |  |  |  |  |  |
| 267 | 25 | Presentacion de Reporte de Pruebas de Rendimiento | milestone | 0d | 2015-08-13 17:00 | 2015-08-13 17:00 | 244 | 0d |  |  |  |  |  |
| 268 | 26 | Fin ejecucion del proyecto / Inicio de Garantia de Producto (Avantica) | milestone | 0d | 2015-08-13 17:00 | 2015-08-13 17:00 | 254 | 0d |  |  |  |  |  |
