# Yanbal PhoneGap - Web

Schedule from MS Project, 2015-04-06 to 2015-07-24, status date 2008-01-09, costs in $.
Avantica Technologies

## Calendars

- Standard: Mon-Fri 08:00-12:00, 13:00-17:00; Sat-Sun off. Exceptions (off unless hours are given): 2015-05-01 (Dia del Trabajo).

## Resources

| Resource | Rate |
| --- | --- |
| QAII - 1 | 1 |
| QAI - 1 | 1 |
| PM | 1 |
| Usability Specialist | 1 |
| SEII - PhoneGap | 1 |
| Cliente | 1 |
| SEII - Web | 1 |
| QAI - 2 | 1 |
| QAI - 3 | 1 |
| QAI- 4 | 1 |
| QAI - 5 | 1 |
| QAI - 6 | 1 |

## Schedule

| ID | WBS | Task | Type | Duration | Start | Finish | Predecessors | Total slack | Free slack | Resources | Work | Cost |
| --- | --- | --- | --- | --- | --- | --- | --- | --- | --- | --- | --- | --- |
| 1 | 1 | Gestión del Proyecto |  | 78.82d | 2015-04-06 | 2015-07-24 |  | 0d |  | PM [25%] | 157.64h | 157.64 |
| 2 | 2 | Sesión de Inicio de Proyecto (KickOff) |  | 2h | 2015-04-06 | 2015-04-06 |  | 11.57d | 0d | SEII - PhoneGap; Usability Specialist; SEII - Web; QAI - 1; QAII - 1 | 8h | 8 |
| 3 | 3 | **Análisis** |  | 7.5d? | 2015-04-06 | 2015-04-15 | 2 | 11.57d | 0d |  | 88h | 88 |
| 4 | 3.1 | Sesiones colectivas |  | 2d | 2015-04-06 | 2015-04-08 |  | 11.57d | 0d | SEII - PhoneGap; SEII - Web | 32h | 32 |
| 5 | 3.2 | Documento de especificación de Casos de Uso. |  | 1d? | 2015-04-08 | 2015-04-09 | 4 | 11.57d | 0d | SEII - PhoneGap; SEII - Web | 16h | 16 |
| 6 | 3.3 | Elaborar documentación |  | 2d? | 2015-04-09 | 2015-04-13 | 5 | 11.57d | 0d | SEII - Web | 16h | 16 |
| 7 | 3.4 | Requerimientos y Estrategia de pruebas aceptados por el cliente |  | 2d? | 2015-04-13 | 2015-04-15 | 6 | 11.57d | 0d | Cliente | 16h | 16 |
| 8 | 3.5 | Actualizar documentación |  | 0.5d? | 2015-04-15 | 2015-04-15 | 7 | 11.57d |  | SEII - PhoneGap; SEII - Web | 8h | 8 |
| 9 | 4 | **Diseño** |  | 21d? | 2015-04-15 | 2015-05-15 |  | 11.57d |  |  | 232h | 232 |
| 10 | 4.1 | **Diseño Técnico** |  | 4d | 2015-04-15 | 2015-04-21 | 3 | 11.57d | 0d |  | 64h | 64 |
| 11 | 4.1.1 | Definir estándares de desarrollo |  | 0.5d | 2015-04-15 | 2015-04-16 |  | 11.57d | 0d | SEII - PhoneGap; SEII - Web | 8h | 8 |
| 12 | 4.1.2 | Definicion de Arquitectura |  | 1d | 2015-04-16 | 2015-04-17 | 11 | 11.57d | 0d | SEII - PhoneGap; SEII - Web | 16h | 16 |
| 13 | 4.1.3 | Diseño de base de datos |  | 1d | 2015-04-17 | 2015-04-20 | 12 | 11.57d | 0d | SEII - PhoneGap; SEII - Web | 16h | 16 |
| 14 | 4.1.4 | Diagrama de clases |  | 1d | 2015-04-20 | 2015-04-21 | 13 | 11.57d | 0d | SEII - PhoneGap; SEII - Web | 16h | 16 |
| 15 | 4.1.5 | Creación de documento de diseño Técnico |  | 0.5d | 2015-04-21 | 2015-04-21 | 14 | 11.57d |  | SEII - PhoneGap; SEII - Web | 8h | 8 |
| 16 | 4.2 | **Diseño Gráfico** |  | 21d? | 2015-04-15 | 2015-05-15 | 3 | 50.07d | 0d |  | 168h | 168 |
| 17 | 4.2.1 | **Diseño y maquetación preliminar** |  | 7.25d | 2015-04-15 | 2015-04-24 |  | 50.07d | 0d |  | 58h | 58 |
| 18 | 4.2.1.1 | Reuniones con el cliente (información inicial) |  | 0.75d | 2015-04-15 | 2015-04-16 |  | 50.07d | 0d | Usability Specialist | 6h | 6 |
| 19 | 4.2.1.2 | Elaboración de propuesta grafica (2 Pág. Maestras) Móvil |  | 2.5d | 2015-04-16 | 2015-04-20 | 18 | 50.07d | 0d | Usability Specialist | 20h | 20 |
| 20 | 4.2.1.3 | Elaboración de propuesta grafica (2 Pág. Maestras) Web |  | 2.25d | 2015-04-21 | 2015-04-23 | 19 | 50.07d | 0d | Usability Specialist | 18h | 18 |
| 21 | 4.2.1.4 | Elaboración de assets y cortes de imágenes |  | 1.75d | 2015-04-23 | 2015-04-24 | 20 | 50.07d |  | Usability Specialist | 14h | 14 |
| 22 | 4.2.2 | **Diseño de Paginas** |  | 11d? | 2015-04-27 | 2015-05-12 |  | 50.07d |  |  | 88h | 88 |
| 23 | 4.2.2.1 | **BackOffice Administrador (Web)** |  | 8d? | 2015-04-27 | 2015-05-07 | 17 | 50.07d | 0d |  | 64h | 64 |
| 24 | 4.2.2.1.1 | UI Login |  | 1d? | 2015-04-27 | 2015-04-27 |  | 50.07d | 0d | Usability Specialist | 8h | 8 |
| 25 | 4.2.2.1.2 | UI - Mantenimiento de usuarios |  | 1d? | 2015-04-28 | 2015-04-28 | 24 | 50.07d | 0d | Usability Specialist | 8h | 8 |
| 26 | 4.2.2.1.3 | UI - Mantenimiento de roles |  | 1d? | 2015-04-29 | 2015-04-29 | 25 | 50.07d | 0d | Usability Specialist | 8h | 8 |
| 27 | 4.2.2.1.4 | Crear grupos de usuarios |  | 1d? | 2015-04-30 | 2015-04-30 | 26 | 50.07d | 0d | Usability Specialist | 8h | 8 |
| 28 | 4.2.2.1.5 | Asociar grupos a perfiles |  | 1d? | 2015-05-04 | 2015-05-04 | 27 | 50.07d | 0d | Usability Specialist | 8h | 8 |
| 29 | 4.2.2.1.6 | Administración de Colecciones |  | 0.75d? | 2015-05-05 | 2015-05-05 | 28 | 50.07d | 0d | Usability Specialist | 6h | 6 |
| 30 | 4.2.2.1.7 | Administraciòn de documentos |  | 0.75d? | 2015-05-05 | 2015-05-06 | 29 | 50.07d | 0d | Usability Specialist | 6h | 6 |
| 31 | 4.2.2.1.8 | Administrar acciones con Redes sociales | milestone | 0d? | 2015-05-06 | 2015-05-06 | 30 | 50.07d | 0d | Usability Specialist |  |  |
| 32 | 4.2.2.1.9 | Administrar contenido por perfil |  | 0.75d? | 2015-05-06 | 2015-05-07 | 31 | 50.07d | 0d | Usability Specialist | 6h | 6 |
| 33 | 4.2.2.1.10 | Publicar contenido por perfil |  | 0.75d? | 2015-05-07 | 2015-05-07 | 32 | 50.07d |  | Usability Specialist | 6h | 6 |

| ID | WBS | Task | Type | Duration | Start | Finish | Predecessors | Total slack | Free slack | Resources | Work | Cost |
| --- | --- | --- | --- | --- | --- | --- | --- | --- | --- | --- | --- | --- |
| 34 | 4.2.2.2 | **Frontoffice (App Mobile)** |  | 3d | 2015-05-08 | 2015-05-12 | 23 | 50.07d |  |  | 24h | 24 |
| 35 | 4.2.2.2.1 | Login |  | 0.75d | 2015-05-08 | 2015-05-08 |  | 50.07d | 0d | Usability Specialist | 6h | 6 |
| 36 | 4.2.2.2.2 | Lista contenido |  | 0.75d | 2015-05-08 | 2015-05-11 | 35 | 50.07d | 0d | Usability Specialist | 6h | 6 |
| 37 | 4.2.2.2.3 | Ver agrupaciones |  | 0.75d | 2015-05-11 | 2015-05-12 | 36 | 50.07d | 0d | Usability Specialist | 6h | 6 |
| 38 | 4.2.2.2.4 | Favoritos | milestone | 0d | 2015-05-12 | 2015-05-12 | 37 | 50.07d | 0d | Usability Specialist |  |  |
| 39 | 4.2.2.2.5 | Notificaciones |  | 0.75d | 2015-05-12 | 2015-05-12 | 38 | 50.07d | 0d | Usability Specialist | 6h | 6 |
| 40 | 4.2.2.2.6 | Compartir con redes sociales | milestone | 0d | 2015-05-12 | 2015-05-12 | 39 | 50.07d | 0d | Usability Specialist |  |  |
| 41 | 4.2.3 | Coordinación con el Equipo de desarrollo (reuniones internas) |  | 0.75d | 2015-05-13 | 2015-05-13 | 40 | 50.07d | 0d | Usability Specialist | 6h | 6 |
| 42 | 4.2.4 | Coordinaciones con el Cliente para revisión de Wireframes |  | 1d | 2015-05-13 | 2015-05-14 | 41 | 50.07d | 0d | Usability Specialist | 8h | 8 |
| 43 | 4.2.5 | Actualización y monitoreo de Diseño |  | 1d | 2015-05-14 | 2015-05-15 | 42 | 50.07d |  | Usability Specialist | 8h | 8 |
| 44 | 5 | **Configuración del Ambiente de Trabajo** |  | 1d | 2015-04-21 | 2015-04-22 |  | 11.57d | 0d |  | 16h | 16 |
| 45 | 5.1 | Configurar ambientes de desarrollo (personal y virtual) |  | 0.5d | 2015-04-21 | 2015-04-22 | 10 | 11.57d | 0d | SEII - Web; SEII - PhoneGap | 8h | 8 |
| 46 | 5.2 | Configurar integración continua |  | 0.5d | 2015-04-22 | 2015-04-22 | 45 | 11.57d |  | SEII - Web; SEII - PhoneGap | 8h | 8 |
| 47 | 6 | Reuniones Técnicas - Equipo YANBAL |  | 3d | 2015-04-22 | 2015-04-27 | 44 | 11.57d | 0d | SEII - Web; SEII - PhoneGap | 48h | 48 |
| 48 | 7 | **Desarrollo** |  | 38.25d? | 2015-04-27 | 2015-06-19 |  | 11.57d |  |  | 464h | 464 |
| 49 | 7.1 | **Web Services** |  | 19.25d? | 2015-04-27 | 2015-05-25 | 47 | 11.57d | 0d |  | 154h | 154 |
| 50 | 7.1.1 | Creación servicio web y estructura base |  | 2d | 2015-04-27 | 2015-04-29 |  | 11.57d | 0d | SEII - Web | 16h | 16 |
| 51 | 7.1.2 | Implementación log (bitácora) |  | 3d | 2015-04-29 | 2015-05-05 | 50 | 11.57d | 0d | SEII - Web | 24h | 24 |
| 52 | 7.1.3 | Implementación utilitarios base (parseo, conversión) |  | 1.5d | 2015-05-05 | 2015-05-07 | 51 | 11.57d | 0d | SEII - Web | 12h | 12 |
| 53 | 7.1.4 | Integración YANBAL - Active Directory |  | 0.5d? | 2015-05-07 | 2015-05-07 | 52 | 11.57d | 0d | SEII - Web | 4h | 4 |
| 54 | 7.1.5 | Autenticacion / login |  | 0.5d | 2015-05-07 | 2015-05-08 | 53 | 11.57d | 0d | SEII - Web | 4h | 4 |
| 55 | 7.1.6 | Descargar contenido (PDF,Imagenes,Video,Audio) |  | 0.5d | 2015-05-08 | 2015-05-08 | 54 | 11.57d | 0d | SEII - Web | 4h | 4 |
| 56 | 7.1.7 | Listar documentos descargados |  | 0.75d | 2015-05-08 | 2015-05-11 | 55 | 11.57d | 0d | SEII - Web | 6h | 6 |
| 57 | 7.1.8 | Eliminar documentos |  | 0.75d | 2015-05-11 | 2015-05-12 | 56 | 11.57d | 0d | SEII - Web | 6h | 6 |
| 58 | 7.1.9 | Envio Email |  | 1d | 2015-05-12 | 2015-05-13 | 57 | 11.57d | 0d | SEII - Web | 8h | 8 |
| 59 | 7.1.10 | Convertir PDF a Imagen |  | 0.75d | 2015-05-13 | 2015-05-13 | 58 | 11.57d | 0d | SEII - Web | 6h | 6 |
| 60 | 7.1.11 | Insertar Metricas Usabilidad |  | 2d | 2015-05-14 | 2015-05-15 | 59 | 11.57d | 0d | SEII - Web | 16h | 16 |
| 61 | 7.1.12 | Obtener idioma |  | 0.5d | 2015-05-18 | 2015-05-18 | 60 | 11.57d | 0d | SEII - Web | 4h | 4 |
| 62 | 7.1.13 | CRUD Usuarios |  | 1d | 2015-05-18 | 2015-05-19 | 61 | 11.57d | 0d | SEII - Web | 8h | 8 |
| 63 | 7.1.14 | CRUD Roles |  | 1d | 2015-05-19 | 2015-05-20 | 62 | 11.57d | 0d | SEII - Web | 8h | 8 |
| 64 | 7.1.15 | CRUD agrupaciones |  | 1d | 2015-05-20 | 2015-05-21 | 63 | 11.57d | 0d | SEII - Web | 8h | 8 |
| 65 | 7.1.16 | CRUD Contenidos |  | 1d | 2015-05-21 | 2015-05-22 | 64 | 11.57d | 0d | SEII - Web | 8h | 8 |
| 66 | 7.1.17 | Administrar parametros |  | 0.5d | 2015-05-22 | 2015-05-22 | 65 | 11.57d | 0d | SEII - Web | 4h | 4 |
| 67 | 7.1.18 | Actualización de servicios |  | 1d? | 2015-05-25 | 2015-05-25 | 66 | 11.57d |  | SEII - Web | 8h | 8 |

| ID | WBS | Task | Type | Duration | Start | Finish | Predecessors | Total slack | Free slack | Resources | Work | Cost |
| --- | --- | --- | --- | --- | --- | --- | --- | --- | --- | --- | --- | --- |
| 68 | 7.2 | **Portal Web** |  | 19d? | 2015-05-26 | 2015-06-19 |  | 11.57d | 0d |  | 152h | 152 |
| 69 | 7.2.1 | **Implementación Diseño Grafico** |  | 5d | 2015-05-26 | 2015-06-01 | 49 | 11.57d | 0d |  | 40h | 40 |
| 70 | 7.2.1.1 | Generar e implementar archivos CSS |  | 3d | 2015-05-26 | 2015-05-28 |  | 11.57d | 0d | SEII - Web | 24h | 24 |
| 71 | 7.2.1.2 | Aplicación y pruebas de estilo base |  | 2d | 2015-05-29 | 2015-06-01 | 70 | 11.57d |  | SEII - Web | 16h | 16 |
| 72 | 7.2.2 | **Modulo Administrador** |  | 14d? | 2015-06-02 | 2015-06-19 | 69 | 11.57d |  |  | 112h | 112 |
| 73 | 7.2.2.1 | UI Login |  | 0.5d | 2015-06-02 | 2015-06-02 |  | 11.57d | 0d | SEII - Web | 4h | 4 |
| 74 | 7.2.2.2 | UI - Mantenimiento de usuarios |  | 1d | 2015-06-02 | 2015-06-03 | 73 | 11.57d | 0d | SEII - Web | 8h | 8 |
| 75 | 7.2.2.3 | UI - Mantenimiento de roles |  | 1d | 2015-06-03 | 2015-06-04 | 74 | 11.57d | 0d | SEII - Web | 8h | 8 |
| 76 | 7.2.2.4 | Crear grupos de usuarios |  | 2d | 2015-06-04 | 2015-06-08 | 75 | 11.57d | 0d | SEII - Web | 16h | 16 |
| 77 | 7.2.2.5 | Asociar grupos a perfiles |  | 1d | 2015-06-08 | 2015-06-09 | 76 | 11.57d | 0d | SEII - Web | 8h | 8 |
| 78 | 7.2.2.6 | **Administración de Colecciones** |  | 2d | 2015-06-09 | 2015-06-11 | 77 | 11.57d |  |  | 16h | 16 |
| 79 | 7.2.2.6.1 | Crear colección |  | 0.5d | 2015-06-09 | 2015-06-09 |  | 11.57d | 0d | SEII - Web | 4h | 4 |
| 80 | 7.2.2.6.2 | Editar colección |  | 0.5d | 2015-06-10 | 2015-06-10 | 79 | 11.57d | 0d | SEII - Web | 4h | 4 |
| 81 | 7.2.2.6.3 | Eliminar colección |  | 0.5d | 2015-06-10 | 2015-06-10 | 80 | 11.57d | 0d | SEII - Web | 4h | 4 |
| 82 | 7.2.2.6.4 | Mover colección |  | 0.5d | 2015-06-11 | 2015-06-11 | 81 | 11.57d | 0d | SEII - Web | 4h | 4 |
| 83 | 7.2.2.7 | **Administraciòn de documentos** |  | 2.5d? | 2015-06-11 | 2015-06-15 | 82 | 11.57d |  |  | 20h | 20 |
| 84 | 7.2.2.7.1 | Agrerar documento |  | 1d? | 2015-06-11 | 2015-06-12 |  | 11.57d | 0d | SEII - Web | 8h | 8 |
| 85 | 7.2.2.7.2 | Editar atributos del documento |  | 0.5d? | 2015-06-12 | 2015-06-12 | 84 | 11.57d | 0d | SEII - Web | 4h | 4 |
| 86 | 7.2.2.7.3 | Eliminar documento |  | 0.5d? | 2015-06-15 | 2015-06-15 | 85 | 11.57d | 0d | SEII - Web | 4h | 4 |
| 87 | 7.2.2.7.4 | Mover documento |  | 0.5d? | 2015-06-15 | 2015-06-15 | 86 | 11.57d | 0d | SEII - Web | 4h | 4 |
| 88 | 7.2.2.8 | **Redes sociales** |  | 0d? | 2015-06-15 | 2015-06-15 | 87 | 11.57d |  |  |  |  |
| 89 | 7.2.2.8.1 | Compartir documentos Redes Sociales | milestone | 0d? | 2015-06-15 | 2015-06-15 |  | 11.57d | 0d | SEII - Web |  |  |
| 90 | 7.2.2.8.2 | UI compartir documentos Redes Sociales | milestone | 0d? | 2015-06-15 | 2015-06-15 | 89 | 11.57d | 0d | SEII - Web |  |  |
| 91 | 7.2.2.8.3 | Manejo de errores | milestone | 0d? | 2015-06-15 | 2015-06-15 | 90 | 11.57d | 0d | SEII - Web |  |  |

| ID | WBS | Task | Type | Duration | Start | Finish | Predecessors | Total slack | Free slack | Resources | Work | Cost |
| --- | --- | --- | --- | --- | --- | --- | --- | --- | --- | --- | --- | --- |
| 92 | 7.2.2.9 | **Perfiles** |  | 4d | 2015-06-16 | 2015-06-19 | 91 | 11.57d |  |  | 32h | 32 |
| 93 | 7.2.2.9.1 | Administrar contenido por perfil |  | 2d | 2015-06-16 | 2015-06-17 |  | 11.57d | 0d | SEII - Web | 16h | 16 |
| 94 | 7.2.2.9.2 | Publicar contenido por perfil |  | 2d | 2015-06-18 | 2015-06-19 | 93 | 11.57d |  | SEII - Web | 16h | 16 |
| 95 | 7.3 | **PhoneGap App (Usuario Final)** |  | 19.75d? | 2015-04-27 | 2015-05-26 | 47 | 26.32d | 0d |  | 158h | 158 |
| 96 | 7.3.1 | **Codificación** |  | 19d? | 2015-04-27 | 2015-05-25 |  | 26.32d |  |  | 152h | 152 |
| 97 | 7.3.1.1 | **Settings** |  | 0.25d? | 2015-04-27 | 2015-04-27 |  | 26.32d | 0d |  | 2h | 2 |
| 98 | 7.3.1.1.1 | Servicio Multilenguaje | milestone | 0d? | 2015-04-27 | 2015-04-27 |  | 26.32d | 0d | SEII - PhoneGap |  |  |
| 99 | 7.3.1.1.2 | Agregar listener para eventos Back |  | 0.25d? | 2015-04-27 | 2015-04-27 | 98 | 26.32d | 0d | SEII - PhoneGap | 2h | 2 |
| 100 | 7.3.1.1.3 | Seleccionar Idioma | milestone | 0d? | 2015-04-27 | 2015-04-27 | 99 | 26.32d |  | SEII - PhoneGap |  |  |
| 101 | 7.3.1.2 | **Login** |  | 3.5d? | 2015-04-28 | 2015-05-04 | 97 | 26.32d | 0d |  | 28h | 28 |
| 102 | 7.3.1.2.1 | UI |  | 0.75d? | 2015-04-28 | 2015-04-28 |  | 26.32d | 0d | SEII - PhoneGap | 6h | 6 |
| 103 | 7.3.1.2.2 | Servicios |  | 0.75d? | 2015-04-28 | 2015-04-29 | 102 | 26.32d | 0d | SEII - PhoneGap | 6h | 6 |
| 104 | 7.3.1.2.3 | Manejo de accesos y permisos |  | 2d? | 2015-04-29 | 2015-05-04 | 103 | 26.32d |  | SEII - PhoneGap | 16h | 16 |
| 105 | 7.3.1.3 | **Documentos** |  | 4.75d? | 2015-05-04 | 2015-05-11 | 101 | 26.32d | 0d |  | 38h | 38 |
| 106 | 7.3.1.3.1 | Visualizar lista de documentos |  | 0.75d? | 2015-05-04 | 2015-05-05 |  | 26.32d | 0d | SEII - PhoneGap | 6h | 6 |
| 107 | 7.3.1.3.2 | Descargar documentos |  | 1.75d? | 2015-05-05 | 2015-05-06 | 106 | 26.32d | 0d | SEII - PhoneGap | 14h | 14 |
| 108 | 7.3.1.3.3 | Llamada a visor - Android |  | 0.5d? | 2015-05-07 | 2015-05-07 | 107 | 26.32d | 0d | SEII - PhoneGap | 4h | 4 |
| 109 | 7.3.1.3.4 | Visualizar documentos - iOS |  | 0.12d? | 2015-05-07 | 2015-05-07 | 108 | 26.32d | 0d | SEII - PhoneGap | 1h | 1 |
| 110 | 7.3.1.3.5 | Visualizar documentos - Windows Phone |  | 0.12d? | 2015-05-07 | 2015-05-07 | 109 | 26.32d | 0d | SEII - PhoneGap | 1h | 1 |
| 111 | 7.3.1.3.6 | Enviar documento por email | milestone | 0d? | 2015-05-07 | 2015-05-07 | 110 | 26.32d | 0d | SEII - PhoneGap |  |  |
| 112 | 7.3.1.3.7 | Eliminar un documento |  | 0.75d? | 2015-05-07 | 2015-05-08 | 111 | 26.32d | 0d | SEII - PhoneGap | 6h | 6 |
| 113 | 7.3.1.3.8 | Editar atributos |  | 0.75d? | 2015-05-08 | 2015-05-11 | 112 | 26.32d |  | SEII - PhoneGap | 6h | 6 |
| 114 | 7.3.1.4 | **Agrupaciones** |  | 2.25d? | 2015-05-11 | 2015-05-13 | 105 | 26.32d | 0d |  | 18h | 18 |
| 115 | 7.3.1.4.1 | Ver agrupaciones |  | 1.25d? | 2015-05-11 | 2015-05-12 |  | 26.32d | 0d | SEII - PhoneGap | 10h | 10 |
| 116 | 7.3.1.4.2 | Servicios |  | 0.75d? | 2015-05-12 | 2015-05-13 | 115 | 26.32d | 0d | SEII - PhoneGap | 6h | 6 |
| 117 | 7.3.1.4.3 | Agregar a favoritos | milestone | 0d? | 2015-05-13 | 2015-05-13 | 116 | 26.32d | 0d | SEII - PhoneGap |  |  |
| 118 | 7.3.1.4.4 | Indicar que documentos se pueden descargar |  | 0.25d? | 2015-05-13 | 2015-05-13 | 117 | 26.32d |  | SEII - PhoneGap | 2h | 2 |

| ID | WBS | Task | Type | Duration | Start | Finish | Predecessors | Total slack | Free slack | Resources | Work | Cost |
| --- | --- | --- | --- | --- | --- | --- | --- | --- | --- | --- | --- | --- |
| 119 | 7.3.1.5 | **Notificaciones** |  | 5.25d? | 2015-05-13 | 2015-05-20 | 114 | 26.32d | 0d |  | 42h | 42 |
| 120 | 7.3.1.5.1 | Desplegar notificación genérica - Android |  | 1d? | 2015-05-13 | 2015-05-14 |  | 26.32d | 0d | SEII - PhoneGap | 8h | 8 |
| 121 | 7.3.1.5.2 | Desplegar notificación genérica - iOS |  | 1d? | 2015-05-14 | 2015-05-15 | 120 | 26.32d | 0d | SEII - PhoneGap | 8h | 8 |
| 122 | 7.3.1.5.3 | Desplegar notificación genérica - Windows Phone |  | 1d? | 2015-05-15 | 2015-05-18 | 121 | 26.32d | 0d | SEII - PhoneGap | 8h | 8 |
| 123 | 7.3.1.5.4 | Desplegar notificación con redirección a documentos - Android |  | 0.75d? | 2015-05-18 | 2015-05-19 | 122 | 26.32d | 0d | SEII - PhoneGap | 6h | 6 |
| 124 | 7.3.1.5.5 | Desplegar notificación con redirección a documentos - iOS |  | 0.75d? | 2015-05-19 | 2015-05-19 | 123 | 26.32d | 0d | SEII - PhoneGap | 6h | 6 |
| 125 | 7.3.1.5.6 | Desplegar notificación con redirección a documentos - Windows Phone |  | 0.75d? | 2015-05-20 | 2015-05-20 | 124 | 26.32d |  | SEII - PhoneGap | 6h | 6 |
| 126 | 7.3.1.6 | **Social** |  | 0d? | 2015-05-20 | 2015-05-20 | 119 | 26.32d | 0d |  |  |  |
| 127 | 7.3.1.6.1 | Compartir en FB un pdf | milestone | 0d? | 2015-05-20 | 2015-05-20 |  | 26.32d | 0d | SEII - PhoneGap |  |  |
| 128 | 7.3.1.6.2 | Compartir en FB un video público | milestone | 0d? | 2015-05-20 | 2015-05-20 | 127 | 26.32d | 0d | SEII - PhoneGap |  |  |
| 129 | 7.3.1.6.3 | Compartir en FB un video privado | milestone | 0d? | 2015-05-20 | 2015-05-20 | 128 | 26.32d |  | SEII - PhoneGap |  |  |
| 130 | 7.3.1.7 | **Analytics** |  | 2d? | 2015-05-20 | 2015-05-22 | 126 | 26.32d | 0d |  | 16h | 16 |
| 131 | 7.3.1.7.1 | integración con google analytics |  | 2d? | 2015-05-20 | 2015-05-22 |  | 26.32d |  | SEII - PhoneGap | 16h | 16 |
| 132 | 7.3.1.8 | **Sincronización** |  | 1d? | 2015-05-22 | 2015-05-25 | 130 | 26.32d |  |  | 8h | 8 |
| 133 | 7.3.1.8.1 | Por demanda del usuario |  | 1d? | 2015-05-22 | 2015-05-25 |  | 26.32d | 0d | SEII - PhoneGap | 8h | 8 |
| 134 | 7.3.1.8.2 | Por demanda del admin | milestone | 0d? | 2015-05-25 | 2015-05-25 | 133 | 26.32d | 0d | SEII - PhoneGap |  |  |
| 135 | 7.3.1.8.3 | Al iniciar el app | milestone | 0d | 2015-05-25 | 2015-05-25 | 134 | 26.32d | 0d | SEII - PhoneGap |  |  |
| 136 | 7.3.2 | **Revisión de Pares** |  | 0.75d | 2015-05-25 | 2015-05-26 | 135 | 26.32d |  |  | 6h | 6 |
| 137 | 7.3.2.1 | Soporte Ejecución Revisión de Pares |  | 0.25d | 2015-05-25 | 2015-05-25 |  | 26.32d | 0d | SEII - PhoneGap | 2h | 2 |
| 138 | 7.3.2.2 | Correcciones Revisión de Pares |  | 0.5d | 2015-05-26 | 2015-05-26 | 137 | 26.32d |  | SEII - PhoneGap | 4h | 4 |
| 139 | 8 | **Aseguramiento de la Calidad** |  | 59.5d? | 2015-04-15 | 2015-07-09 |  | 11.57d | 0d |  | 468h | 468 |
| 140 | 8.1 | Estimación y Creación de Casos de Prueba |  | 3.62d | 2015-04-15 | 2015-04-21 | 3 | 50.45d | 0d | QAI - 1; QAII - 1 | 58h | 58 |
| 141 | 8.2 | Configuración Ambientes de QA |  | 0.5d | 2015-04-21 | 2015-04-21 | 140 | 65.32d | 0d | QAI - 1; QAII - 1 | 8h | 8 |
| 142 | 8.3 | Plan de Pruebas - Pruebas de Rendimiento |  | 0.25d | 2015-04-21 | 2015-04-22 | 141 | 65.32d | 0d | QAI - 1; QAII - 1 | 4h | 4 |
| 143 | 8.4 | Pruebas de experiencia de usuario |  | 0.5d? | 2015-04-22 | 2015-04-22 | 142 | 65.32d | 0d | QAI - 1; QAII - 1 | 8h | 8 |
| 144 | 8.5 | Pruebas Multi-lenguaje |  | 0.88d? | 2015-04-22 | 2015-04-23 | 143 | 65.32d |  | QAI - 1; QAII - 1 | 14h | 14 |

| ID | WBS | Task | Duration | Start | Finish | Predecessors | Total slack | Free slack | Resources | Work | Cost |
| --- | --- | --- | --- | --- | --- | --- | --- | --- | --- | --- | --- |
| 145 | 8.6 | **Pruebas Funcionales** | 22.62d? | 2015-05-26 | 2015-06-26 |  | 11.57d |  |  | 303h | 303 |
| 146 | 8.6.1 | **Portal Web** | 4.12d? | 2015-06-22 | 2015-06-26 |  | 11.57d | 0d |  | 66h | 66 |
| 147 | 8.6.1.1 | **Ejecución en Web Browser - IE9 (Principal)** | 3.19d? | 2015-06-22 | 2015-06-25 |  | 11.57d |  |  | 51h | 51 |
| 148 | 8.6.1.1.1 | Ejecución de casos de prueba funcionales | 1.88d? | 2015-06-22 | 2015-06-23 | 140, 68 | 11.57d | 0d | QAI - 1; QAI- 4 | 30h | 30 |
| 149 | 8.6.1.1.2 | Reporte de errores | 0.44d? | 2015-06-23 | 2015-06-24 | 148 | 11.57d | 0d | QAI - 1; QAI- 4 | 7h | 7 |
| 150 | 8.6.1.1.3 | Verificación de errore | 0.44d? | 2015-06-24 | 2015-06-24 | 149 | 11.57d | 0d | QAI - 1; QAI- 4 | 7h | 7 |
| 151 | 8.6.1.1.4 | Pruebas exploratoria | 0.44d? | 2015-06-24 | 2015-06-25 | 150 | 11.57d | 0d | QAI - 1; QAI- 4 | 7h | 7 |
| 152 | 8.6.1.2 | Ejecución en Web Browser - Chrome 40 (Secundario) | 0.94d? | 2015-06-25 | 2015-06-26 | 151 | 11.57d |  | QAI - 1; QAI- 4 | 15h | 15 |
| 153 | 8.6.2 | **Tablet** | 6.94d? | 2015-05-26 | 2015-06-04 |  | 27.26d | 0d |  | 111h | 111 |
| 154 | 8.6.2.1 | Ejecución en Samsung de 10.1" /SO Android 4.1.2 (Principal | 3.19d? | 2015-05-26 | 2015-05-29 | 140, 95 | 27.26d | 0d | QAI - 2; QAI - 5 | 51h | 51 |
| 155 | 8.6.2.2 | Ejecución en Lenovo 7" / SO Android 4.2.2 (Secundario) | 0.94d? | 2015-05-29 | 2015-06-01 | 154 | 27.26d | 0d | QAI - 2; QAI - 5 | 15h | 15 |
| 156 | 8.6.2.3 | Tablet AOC / SO: Android 4.1.1 (Secundario) | 0.94d? | 2015-06-01 | 2015-06-02 | 155 | 27.26d | 0d | QAI - 2; QAI - 5 | 15h | 15 |
| 157 | 8.6.2.4 | Ejecución en Ipad SO 7 (Secundario) | 0.94d? | 2015-06-02 | 2015-06-03 | 156 | 27.26d | 0d | QAI - 2; QAI - 5 | 15h | 15 |
| 158 | 8.6.2.5 | Ejecución en Ipad SO 8 (Secundario) | 0.94d? | 2015-06-03 | 2015-06-04 | 157 | 27.26d |  | QAI - 2; QAI - 5 | 15h | 15 |
| 159 | 8.6.3 | **SmartPhone** | 7.88d? | 2015-05-26 | 2015-06-05 |  | 26.32d | 14.75d |  | 126h | 126 |
| 160 | 8.6.3.1 | Nokia Lumia 520 / SO: Windows Phone 8.0 (Principal | 3.19d? | 2015-05-26 | 2015-05-29 | 140, 95 | 26.32d | 0d | QAI - 3; QAI - 6 | 51h | 51 |
| 161 | 8.6.3.2 | Ejecución en Samsung Galaxy Chat/SO -SO Android 4.1.2 (secundario) | 0.94d? | 2015-05-29 | 2015-06-01 | 160 | 26.32d | 0d | QAI - 3; QAI - 6 | 15h | 15 |
| 162 | 8.6.3.3 | Samsung Galaxy S III Mini / SO: Android 4.1.2 (Principal | 0.94d? | 2015-06-01 | 2015-06-02 | 161 | 26.32d | 0d | QAI - 3; QAI - 6 | 15h | 15 |
| 163 | 8.6.3.4 | Ejecución en Iphone 4 / iSO 7 (Principal | 0.94d? | 2015-06-02 | 2015-06-03 | 162 | 26.32d | 0d | QAI - 3; QAI - 6 | 15h | 15 |
| 164 | 8.6.3.5 | Ejecución en Iphone 5 / iSO 7 (Secundario) | 0.94d? | 2015-06-03 | 2015-06-04 | 163 | 26.32d | 0d | QAI - 3; QAI - 6 | 15h | 15 |
| 165 | 8.6.3.6 | Ejecución en Iphone 6 / iSO 7 (Secundario) | 0.94d? | 2015-06-04 | 2015-06-05 | 164 | 26.32d |  | QAI - 3; QAI - 6 | 15h | 15 |
| 166 | 8.7 | **Pruebas de Rendimiento** | 9.12d? | 2015-06-26 | 2015-07-09 |  | 11.57d |  |  | 73h | 73 |
| 167 | 8.7.1 | **Creación de Scripts** | 4.5d? | 2015-06-26 | 2015-07-02 |  | 11.57d |  |  | 36h | 36 |
| 168 | 8.7.1.1 | Total Tiempo por Flujo (6 WS) | 4.5d? | 2015-06-26 | 2015-07-02 | 146, 153, 159 | 11.57d | 0d | QAII - 1 | 36h | 36 |

| ID | WBS | Task | Type | Duration | Start | Finish | Predecessors | Total slack | Free slack | Resources | Work | Cost |
| --- | --- | --- | --- | --- | --- | --- | --- | --- | --- | --- | --- | --- |
| 169 | 8.7.2 | **Ejecución de Pruebas** |  | 2.88d | 2015-07-02 | 2015-07-07 |  | 11.57d | 0d |  | 23h | 23 |
| 170 | 8.7.2.1 | Preparación del Ambiente |  | 1d | 2015-07-02 | 2015-07-03 | 168 | 11.57d | 0d | QAII - 1 | 8h | 8 |
| 171 | 8.7.2.2 | Prueba de Ambiente |  | 0.38d | 2015-07-03 | 2015-07-03 | 170 | 11.57d | 0d | QAII - 1 | 3h | 3 |
| 172 | 8.7.2.3 | Ejecución prueba de carga |  | 1.5d | 2015-07-06 | 2015-07-07 | 171 | 11.57d |  | QAII - 1 | 12h | 12 |
| 173 | 8.7.3 | **Documentación** |  | 1.75d | 2015-07-07 | 2015-07-09 | 169 | 11.57d |  |  | 14h | 14 |
| 174 | 8.7.3.1 | Parsing Logs |  | 0.5d | 2015-07-07 | 2015-07-07 |  | 11.57d | 0d | QAII - 1 | 4h | 4 |
| 175 | 8.7.3.2 | Análisis y Notas Iniciales |  | 0.5d | 2015-07-08 | 2015-07-08 | 174 | 11.57d | 0d | QAII - 1 | 4h | 4 |
| 176 | 8.7.3.3 | Creación de documento de resultados |  | 0.75d | 2015-07-08 | 2015-07-09 | 175 | 11.57d |  | QAII - 1 | 6h | 6 |
| 177 | 9 | **Soporte Desarrollo** |  | 31.82d | 2015-05-26 | 2015-07-09 |  | 0d |  |  | 118.56h | 118.56 |
| 178 | 9.1 | **Móviles** |  | 9.25d | 2015-05-26 | 2015-06-08 |  | 22.57d |  |  | 12h | 12 |
| 179 | 9.1.1 | Resolución Bugs |  | 9.25d | 2015-05-26 | 2015-06-08 | 153SS | 22.57d |  | SEII - PhoneGap | 12h | 12 |
| 180 | 9.2 | **Web / Pruebas de rendimiento** |  | 13.32d | 2015-06-22 | 2015-07-09 |  | 0d |  |  | 106.56h | 106.56 |
| 181 | 9.2.1 | Resolución Bugs |  | 13.32d | 2015-06-22 | 2015-07-09 | 146SS | 0d |  | SEII - Web | 106.56h | 106.56 |
| 182 | 10 | **Documentación** |  | 3d? | 2015-07-09 | 2015-07-14 |  | 0d |  |  | 48h | 48 |
| 183 | 10.1 | Manual de instalación y pase a producción |  | 1d | 2015-07-09 | 2015-07-10 | 177 | 0d |  | SEII - Web; SEII - PhoneGap | 16h | 16 |
| 184 | 10.2 | Manual de soporte |  | 2d? | 2015-07-10 | 2015-07-14 | 183 | 0d |  | SEII - Web; SEII - PhoneGap | 32h | 32 |
| 185 | 11 | **Generación de Binarios** |  | 0.5d | 2015-07-14 | 2015-07-14 |  | 0d |  |  | 6h | 6 |
| 186 | 11.1 | Portal Web /Web Services |  | 0.25d | 2015-07-14 | 2015-07-14 | 184 | 0.25d |  | SEII - Web | 2h | 2 |
| 187 | 11.2 | Aplicaciones Moviles |  | 0.5d | 2015-07-14 | 2015-07-14 | 184 | 0d |  | SEII - PhoneGap | 4h | 4 |
| 188 | 12 | **Despliegue** |  | 8d | 2015-07-14 | 2015-07-24 |  | 0d |  |  | 24h | 24 |
| 189 | 12.1 | Ejecución despliegue en Ambiente UAT YANBAL |  | 2d | 2015-07-14 | 2015-07-16 | 198 | 0d |  | SEII - Web | 16h | 16 |
| 190 | 12.2 | Publicación / Ejecución despliegue en Ambiente Producción YANBAL |  | 1d | 2015-07-23 | 2015-07-24 | 193 | 0d |  | SEII - Web | 8h | 8 |
| 191 | 12.3 | Publicación de Aplicación en markets | milestone | 0d | 2015-07-23 | 2015-07-23 | 193 | 1d |  | SEII - PhoneGap |  |  |
| 192 | 13 | **Certificación YANBAL** |  | 5d | 2015-07-16 | 2015-07-23 |  | 0d |  |  | 20h | 20 |
| 193 | 13.1 | Soporte Certificación UAT YANBAL |  | 5d | 2015-07-16 | 2015-07-23 | 189 | 0d |  | SEII - PhoneGap [50%] | 20h | 20 |
| 194 | 14 | Inicio del Proyecto | milestone | 0d | 2015-04-06 | 2015-04-06 |  | 78.82d |  |  |  |  |
| 195 | 15 | Documento de Requerimientos Actualizado | milestone | 0d | 2015-04-15 | 2015-04-15 | 3 | 71.07d |  |  |  |  |
| 196 | 16 | Finalización de Definiciones Diseño Grafico | milestone | 0d | 2015-05-15 | 2015-05-15 | 16 | 50.07d |  |  |  |  |
| 197 | 17 | Fin de Desarrollo/Implementación y Pruebas | milestone | 0d | 2015-07-09 | 2015-07-09 | 48, 139 | 11.57d |  |  |  |  |
| 198 | 18 | Presentación de Entregables Producto (Artefactos SW) | milestone | 0d | 2015-07-14 | 2015-07-14 | 185 | 0d |  |  |  |  |
| 199 | 19 | Producto Certificado por YANBAL | milestone | 0d | 2015-07-23 | 2015-07-23 | 193 | 1d |  |  |  |  |
| 200 | 20 | Producto Publicado en Ambiente Final para Cliente Piloto (Producción) | milestone | 0d | 2015-07-24 | 2015-07-24 | 190 | 0d |  |  |  |  |
| 201 | 21 | Presentación de Entregables Finales (Producto y Proyecto) | milestone | 0d | 2015-07-24 | 2015-07-24 | 200 | 0d |  |  |  |  |
| 202 | 22 | Aceptación de Proyecto / Inicio de Garantía (6 meses) | milestone | 0d | 2015-07-24 | 2015-07-24 | 201 | 0d |  |  |  |  |
